# CP09_Silversands - Landscape Works_Phase 1_Rev.01 Mit _UP_ 2026-05-24

How a schedule from Primavera P6 changed from version to version. A marks actual dates.

## Version 1 (data date 2026-05-24, saved 2026-05-23, file Silver Sand  - Land Scape - Update 24 - May - 2026.xer)

Note of the change: feat: Primavera Studio - XER import/export, validation/repair, workspace browsing, full persistence layer + UI (Phase 9)

| ID | WBS | Task | Duration | Start | Finish | Predecessors | Complete | Total float | Constraint |
| --- | --- | --- | --- | --- | --- | --- | --- | --- | --- |
|  | 1 | **Contract Sections & Milestones** |  | 2024-02-10 | 2026-11-04 |  |  |  |  |
| CP09-MS-1010 |  | Project Commencment Date | 0d | 2024-02-10 A | 2024-02-10 A |  | 100% |  | start on 2024-02-10 |
| CP09-CLD-1000 |  | Site Possession | 0d | 2024-02-10 A | 2024-02-10 A | CP09-MS-1010 SS | 100% |  |  |
| CP09-CLD-1010 |  | IFC Drwaings Issuance | 0d | 2024-02-10 A | 2024-02-10 A | CP09-MS-1010 | 100% |  |  |
| CP09-MS-1000 |  | Project Completion Date | 0d | 2026-11-04 | 2026-11-04 | SS.CSM.1090, SS.CSM.1100, SS.CSM.1110, SS.CSM.1120, SS.CSM.1130, SS.CSM.1140, SS.CSM.1150, CP09-MS1-1000, CP09-SE1-1010, CP09-MS2-1000, CP09-SE2-1010, CP09-MS3-1000, CP09-SE3-1010, CP09-MS4-1000, CP09-SE4-1010 |  | -237.06d |  |
|  | ADM | **Adminstratlve &Pre- Construction** |  | 2024-02-20 | 2026-06-16 |  |  |  |  |
|  | SUB | **Pre-Construction Submittals** |  | 2024-02-20 | 2026-06-03 |  |  |  |  |
| SS.CSM.1010 |  | HSE Plan Submittal | 7d | 2024-02-20 A | 2024-02-28 A | CP09-MS-1010 | 100% |  |  |
| SS.CSM.1020 |  | QC Plan Submittal | 7d | 2024-02-20 A | 2024-02-28 A | CP09-MS-1010 | 100% |  |  |
| SS.CSM.1030 |  | Baseline Schedule Submittal | 7d | 2024-03-20 A | 2024-03-27 A | CP09-MS-1010 | 100% |  |  |
| SS.CSM.1040 |  | Excution Plan Submittal | 7d | 2024-04-07 A | 2024-04-14 A | CP09-MS-1010 | 100% |  |  |
| SS.CSM.1050 |  | Method of Statement Submittal | 7d | 2024-04-15 A | 2024-04-21 A | CP09-MS-1010 | 100% |  |  |
| SS.CSM.1060 |  | Risk Mangement Plan Submittal | 7d | 2026-05-24 | 2026-05-31 | CP09-MS-1010 |  | -117d |  |
| SS.CSM.1070 |  | Logistic Plan Submittal | 7d | 2026-05-24 | 2026-05-31 | CP09-MS-1010 |  | -117d |  |
| SS.CSM.1080 |  | Performance Bond Insurance | 10d | 2026-05-24 | 2026-06-03 | CP09-MS-1010 |  | -106d |  |
|  | APP | **Pre-Construction Approvals** |  | 2024-03-06 | 2026-06-16 |  |  |  |  |
| SS.CSM.1090 |  | HSE Plan Approval | 14d | 2024-03-06 A | 2024-03-13 A | SS.CSM.1010 | 100% |  |  |
| SS.CSM.1100 |  | QC Plan Approval | 14d | 2024-04-02 A | 2024-04-09 A | SS.CSM.1020 | 100% |  |  |
| SS.CSM.1110 |  | Excution Plan Approval | 14d | 2024-04-14 A | 2024-04-28 A | SS.CSM.1040 | 100% |  |  |
| SS.CSM.1120 |  | Method of Statement Approval | 14d | 2024-05-01 A | 2024-05-13 A | SS.CSM.1050 | 100% |  |  |
| SS.CSM.1150 |  | Baseline Schedule Approval | 14d | 2024-07-02 A | 2024-07-17 A | SS.CSM.1030 | 100% |  |  |
| SS.CSM.1130 |  | Risk Mangement Plan Approval | 14d | 2026-06-01 | 2026-06-16 | SS.CSM.1060 |  | -117d |  |
| SS.CSM.1140 |  | Logistic Plan Approval | 14d | 2026-06-01 | 2026-06-16 | SS.CSM.1070 |  | -117d |  |
|  | 1 | **Key Dates & Milestones** |  | 2026-07-21 | 2026-11-04 |  |  |  |  |
| CP09-MS1-1000 |  | Completion of all Hardscape Works for Terraces 1,2 | 0d | 2026-07-21 | 2026-07-21 | CP09-HO-MS1-HD-1110 |  | -171d | finish on or before 2026-01-31 |
| CP09-SE1-1010 |  | Completion of all Softcape Works for Terraces 1,2 | 0d | 2026-07-30 | 2026-07-30 | CP09-HO-SE1-SF-1150 |  | -181d | finish on or before 2026-01-31 |
| CP09-MS2-1000 |  | Completion of all Hardscape Works for Terraces 3,4 | 0d | 2026-08-03 | 2026-08-03 | CP09-HO-MS2-SW-1030, CP09-HO-MS2-HD-1070 |  | -183.44d | finish on or before 2026-01-31 |
| CP09-MS3-1000 |  | Completion of all Hardscape Works for Terraces 5,6 | 0d | 2026-09-13 | 2026-09-13 | CP09-HO-MS3-SW-1070, CP09-HO-MS3-HD-1110 |  | -225.81d | finish on or before 2026-01-31 |
| CP09-SE2-1010 |  | Completion of all Softscape Works for Terraces 3,4 | 0d | 2026-09-13 | 2026-09-13 | CP09-HO-SE2-SF-1110 |  | -224.94d | finish on or before 2026-01-31 |
| CP09-SE3-1010 |  | Completion of all Softcape Works for Terraces 5.6 | 0d | 2026-09-23 | 2026-09-23 | CP09-HO-SE3-SF-1150 |  | -235.69d | finish on or before 2026-01-31 |
| CP09-MS4-1000 |  | Completion of all Hardscape Works for Terraces 7,8 | 0d | 2026-10-19 | 2026-10-19 | CP09-HO-MS4-SW-1110, CP09-HO-MS4-HD-1150 |  | -261.12d | finish on or before 2026-01-31 |
| CP09-SE4-1010 |  | Completion of all Softcape Works for Terraces 7,8 | 0d | 2026-11-04 | 2026-11-04 | CP09-HO-SE4-SF-1190 |  | -276.44d | finish on or before 2026-01-31 |
|  | 9 | **Moblization** |  | 2024-02-10 | 2024-02-20 |  |  |  |  |
| CP09-MB-1010 |  | Mobilization Facilities Finishes | 10d | 2024-02-10 A | 2024-02-20 A | CP09-MS-1010 | 100% |  |  |
|  | 3 | **Procurement** |  | 2024-02-07 | 2026-07-05 |  |  |  |  |
|  | 1 | **Material Submittal** |  | 2024-02-07 | 2026-01-16 |  |  |  |  |
|  | 1 | **Civil Materials** |  | 2024-02-26 | 2026-01-16 |  |  |  |  |
| CP09-PR-CV-S-1120 |  | Marble for Cheek & Retainig Walls -Material Submittal | 7d | 2024-02-26 A | 2024-05-22 A | CP09-PR-CV-S-1040 SS | 100% |  |  |
| CP09-PR-CV-S-1000 |  | Concrete Mix - Material Submittal | 7d | 2024-06-15 A | 2024-06-30 A | CP09-CLD-1010 | 100% |  |  |
| CP09-PR-CV-S-1130 |  | Rebars - Material Submittal | 7d | 2024-07-10 A | 2024-07-13 A | CP09-CLD-1010 | 100% |  |  |
| CP09-PR-CV-S-1010 |  | Waterproofing - Material Submittal | 7d | 2024-07-20 A | 2024-07-29 A | CP09-PR-CV-S-1000 SS | 100% |  |  |
| CP09-PR-CV-S-1020 |  | Block- Material Submittal | 7d | 2025-05-18 A | 2025-05-22 A | CP09-PR-CV-S-1000 | 100% |  |  |
| CP09-PR-CV-S-1030 |  | Mosaic - Material Submittal | 7d | 2025-05-18 A | 2025-05-22 A | CP09-PR-CV-S-1000 | 100% |  |  |
| CP09-PR-CV-S-1070 |  | Plaster Accessories -Material Submittal | 7d | 2025-05-18 A | 2025-05-22 A | CP09-PR-CV-S-1020 | 100% |  |  |
| CP09-PR-CV-S-1090 |  | Geotextile & Geocomposit for Machine Room - Material Submittal | 7d | 2025-05-18 A | 2025-05-22 A | CP09-PR-CV-S-1000 | 100% |  |  |
| CP09-PR-CV-S-1110 |  | Epoxy for Machine Room - Material Submittal | 7d | 2025-05-18 A | 2025-05-22 A | CP09-PR-CV-S-1080, CP09-PR-CV-S-1070 | 100% |  |  |
| CP09-PR-CV-S-1040 |  | Granite for Swimming Pool - Material Submittal | 7d | 2025-08-18 A | 2025-08-22 A | CP09-PR-CV-S-1030 | 100% |  |  |
| CP09-PR-CV-S-1050 |  | Stanless Steel Ladders for Swimming Pool - Material Submittal | 7d | 2025-08-18 A | 2025-08-22 A | CP09-PR-CV-S-1030, CP09-PR-CV-S-1040 | 100% |  |  |
| CP09-PR-CV-S-1060 |  | Stanless Steel Handrial for Swimming Pool - Material Submittal | 7d | 2025-08-18 A | 2025-08-22 A | CP09-PR-CV-S-1030, CP09-PR-CV-S-1040 | 100% |  |  |
| CP09-PR-CV-S-1100 |  | Drainage Gravel for Machine Room - Material Submittal | 7d | 2025-08-18 A | 2025-08-22 A | CP09-PR-CV-S-1000 | 100% |  |  |
| CP09-PR-CV-S-1080 |  | Emulsion Paint - Material Submittal | 7d | 2026-01-12 A | 2026-01-16 A | CP09-PR-CV-S-1070 | 100% |  |  |
|  | 2 | **Hardscape Materials** |  | 2024-02-10 | 2025-08-22 |  |  |  |  |
| CP09-PR-HD-S-1010 |  | Marble Paving - Material Submittal | 7d | 2024-02-10 A | 2024-05-22 A | CP09-CLD-1010 | 100% |  |  |
| CP09-PR-HD-S-1080 |  | Flush Curb -Material Submittal | 3d | 2024-02-10 A | 2024-05-12 A | CP09-CLD-1010 | 100% |  |  |
| CP09-PR-HD-S-1180 |  | Interlocks -Material Submittal | 7d | 2024-02-10 A | 2024-05-08 A | CP09-CLD-1010 | 100% |  |  |
| CP09-PR-HD-S-1100 |  | Marble for Steps -Material Submittal | 7d | 2024-02-18 A | 2024-05-22 A | CP09-CLD-1010, CP09-PR-HD-S-1090 | 100% |  |  |
| CP09-PR-HD-S-1110 |  | Marble for Seat - Material Submittal | 7d | 2024-02-18 A | 2024-05-22 A | CP09-CLD-1010, CP09-PR-HD-S-1100 SS | 100% |  |  |
| CP09-PR-HD-S-1000 |  | Concrete Exposed Aggeregate - Material Submittal | 7d | 2025-05-18 A | 2025-05-22 A | CP09-CLD-1010 | 100% |  |  |
| CP09-PR-HD-S-1020 |  | WPC -Material Submittal | 7d | 2025-05-18 A | 2025-08-22 A | CP09-CLD-1010 | 100% |  |  |
| CP09-PR-HD-S-1030 |  | Gravel Layer - Material Submittal | 7d | 2025-05-18 A | 2025-08-22 A | CP09-CLD-1010 | 100% |  |  |
| CP09-PR-HD-S-1040 |  | Crushed Dolomite stone -Material Submittal | 7d | 2025-05-18 A | 2025-08-22 A | CP09-CLD-1010 | 100% |  |  |
| CP09-PR-HD-S-1050 |  | Loose gravel - Material Submittal | 7d | 2025-05-18 A | 2025-08-22 A | CP09-CLD-1010 | 100% |  |  |
| CP09-PR-HD-S-1060 |  | Geotextile Sheets -Material Submittal | 7d | 2025-05-18 A | 2025-05-22 A | CP09-CLD-1010 | 100% |  |  |
| CP09-PR-HD-S-1070 |  | Clean sand layer - Material Submittal | 7d | 2025-05-18 A | 2025-05-22 A | CP09-CLD-1010 | 100% |  |  |
| CP09-PR-HD-S-1090 |  | Crush Stone below Interlock - Material Submittal | 7d | 2025-05-18 A | 2025-08-22 A | CP09-CLD-1010 | 100% |  |  |
| CP09-PR-HD-S-1120 |  | Mica -Material Submittal | 7d | 2025-05-18 A | 2025-08-22 A | CP09-CLD-1010, CP09-PR-HD-S-1100 | 100% |  |  |
| CP09-PR-HD-S-1130 |  | Blast stone blocks - Material Submittal | 7d | 2025-05-18 A | 2025-08-22 A | CP09-CLD-1010, CP09-PR-HD-S-1120 SS | 100% |  |  |
| CP09-PR-HD-S-1140 |  | Loose Rounded Pebbles - Material Submittal | 7d | 2025-05-18 A | 2025-08-22 A | CP09-CLD-1010, CP09-PR-HD-S-1130 SS | 100% |  |  |
| CP09-PR-HD-S-1150 |  | Shower Head -Material Submittal | 7d | 2025-05-18 A | 2025-08-22 A | CP09-CLD-1010, CP09-PR-HD-S-1130 SS | 100% |  |  |
| CP09-PR-HD-S-1160 |  | Stainless Handrail - Material Submittal | 7d | 2025-05-18 A | 2025-08-22 A | CP09-CLD-1010, CP09-PR-HD-S-1100, CP09-PR-HD-S-1110 | 100% |  |  |

| ID | WBS | Task | Duration | Start | Finish | Predecessors | Complete |
| --- | --- | --- | --- | --- | --- | --- | --- |
| CP09-PR-HD-S-1170 |  | Glass Handrail -Material Submittal | 7d | 2025-05-18 A | 2025-08-22 A | CP09-CLD-1010, CP09-PR-HD-S-1150 SS | 100% |
|  | 8 | **Sinage** |  | 2024-05-19 | 2025-05-22 |  |  |
| CP09-PR-SN-S-1000 |  | STREET DIRECTIONAL SIGN -Material Submittal | 5d | 2024-05-19 A | 2025-05-22 A | CP09-CLD-1010, CP09-PR-SN-S-1040 SS | 100% |
| CP09-PR-SN-S-1010 |  | DIRECTIONAL SIGN - Material Submittal | 7d | 2024-05-19 A | 2025-05-22 A | CP09-CLD-1010, CP09-PR-SN-S-1000 SS | 100% |
| CP09-PR-SN-S-1020 |  | UNIT ID SIGN -Material Submittal | 5d | 2024-05-19 A | 2025-05-22 A | CP09-PR-FN-S-1000 | 100% |
| CP09-PR-SN-S-1030 |  | RULES SIGN - Material Submittal | 5d | 2024-05-19 A | 2025-05-22 A | CP09-PR-SN-S-1020 SS | 100% |
| CP09-PR-SN-S-1040 |  | IDENTIFICATION SIGN -Material Submittal | 5d | 2024-05-19 A | 2025-05-22 A | CP09-PR-SN-S-1030 SS | 100% |
|  | 4 | **Electrical Materials** |  | 2024-02-10 | 2025-08-22 |  |  |
|  | 1 | **Swimming pool & MR** |  | 2025-05-18 | 2025-08-22 |  |  |
| CP09-PR-EL-S-1000 |  | Conduits - Material Submittal | 7d | 2025-05-18 A | 2025-05-22 A | CP09-CLD-1010 | 100% |
| CP09-PR-EL-S-1010 |  | Cable tray - Material Submittal | 7d | 2025-05-18 A | 2025-05-22 A | CP09-CLD-1010 | 100% |
| CP09-PR-EL-S-1030 |  | Power Cables & Wires - Material Submittal | 7d | 2025-05-18 A | 2025-05-22 A | CP09-PR-EL-S-1020 SS | 100% |
| CP09-PR-EL-S-1040 |  | Earthing System -Material Submittal | 7d | 2025-05-18 A | 2025-05-22 A | CP09-PR-EL-S-1030 SS | 100% |
| CP09-PR-EL-S-1050 |  | Lighting Outlets , Switches Fixture - Material Submittal | 7d | 2025-05-18 A | 2025-05-22 A | CP09-PR-EL-S-1040 | 100% |
| CP09-PR-EL-S-1140 |  | Underwater Recessed Spotlight Material Submittal | 7d | 2025-05-18 A | 2025-05-22 A | CP09-PR-EL-S-1050 SS | 100% |
| CP09-PR-EL-S-1020 |  | Panel boards - Material Submittal | 7d | 2025-08-18 A | 2025-08-22 A | CP09-PR-EL-S-1010 SS | 100% |
|  | 2 | **Landscape** |  | 2024-02-10 | 2024-05-05 |  |  |
| CP09-PR-EL-S-1060 |  | Power Cables for Landscape Lighting - Material Submittal | 7d | 2024-02-10 A | 2024-05-05 A | CP09-CLD-1010 | 100% |
| CP09-PR-EL-S-1080 |  | Lighting Pole - Material Submittal | 7d | 2024-02-10 A | 2024-05-05 A | CP09-CLD-1010 | 100% |
|  | 3 | **Mechnical Materials** |  | 2025-05-18 | 2025-05-22 |  |  |
|  | 1 | **Swimmimng Pool & MR** |  | 2025-05-18 | 2025-05-22 |  |  |
| CP09-PR-ME-S-1000 |  | UPVC pipes,Fitting -Material Submittal | 7d | 2025-05-18 A | 2025-05-22 A | CP09-CLD-1010, CP09-CLD-1010 SS | 100% |
|  | 6 | **Irrigation Materials** |  | 2024-02-07 | 2024-04-29 |  |  |
| CP09-PR-IR-S-1020 |  | Rings -Material Submittal | 5d | 2024-02-07 A | 2024-02-29 A | CP09-PR-IR-S-1000 SS | 100% |
| CP09-PR-IR-S-1030 |  | Valves -Material Submittal | 5d | 2024-02-07 A | 2024-02-29 A | CP09-PR-IR-S-1000 SS | 100% |
| CP09-PR-IR-S-1040 |  | Pop up Multi ray sprinkler-Material Submittal | 5d | 2024-02-07 A | 2024-04-29 A | CP09-PR-IR-S-1000 SS | 100% |
| CP09-PR-IR-S-1070 |  | Direct Cables -Material Submittal | 5d | 2024-02-07 A | 2024-02-17 A | CP09-PR-IR-S-1050 SS | 100% |
| CP09-PR-IR-S-1000 |  | UPVC pipes for Sub-main Line & Lateral -Material Submittal | 5d | 2024-02-10 A | 2024-04-28 A | CP09-CLD-1010 | 100% |
| CP09-PR-IR-S-1010 |  | Drip line-Material Submittal | 5d | 2024-02-10 A | 2024-02-28 A | CP09-PR-IR-S-1000 SS | 100% |
| CP09-PR-IR-S-1050 |  | Electrical Solenoid Valve -Material Submittal | 5d | 2024-02-12 A | 2024-02-17 A | CP09-PR-IR-S-1030 SS | 100% |
| CP09-PR-IR-S-1060 |  | Test Controller -Material Submittal | 5d | 2024-02-12 A | 2024-02-17 A | CP09-PR-IR-S-1050 SS | 100% |
| CP09-PR-IR-S-1080 |  | Decoder one station - Material Submittal | 5d | 2024-02-12 A | 2024-02-13 A | CP09-PR-IR-S-1070 SS | 100% |
|  | 5 | **Plantings Materials** |  | 2024-02-27 | 2025-10-24 |  |  |
| CP09-PR-PN-S-1010 |  | Organic Manure - Material Submittal | 5d | 2024-02-27 A | 2024-04-03 A | CP09-PR-PN-S-1000 SS | 100% |
| CP09-PR-PN-S-1000 |  | Sweet Sand for all plants - Material Submittal | 5d | 2025-07-06 A | 2025-07-10 A | CP09-CLD-1010 FS+15d | 100% |
| CP09-PR-PN-S-1020 |  | Large Trees - Material Submittal | 5d | 2025-07-06 A | 2025-07-10 A | CP09-PR-PN-S-1010 | 100% |
| CP09-PR-PN-S-1050 |  | Ornamental grass - Material Submittal | 5d | 2025-07-06 A | 2025-07-10 A | CP09-PR-PN-S-1000, CP09-PR-PN-S-1010 | 100% |
| CP09-PR-PN-S-1060 |  | Shrubs - Material Submittal | 5d | 2025-07-06 A | 2025-07-10 A | CP09-PR-PN-S-1000, CP09-PR-PN-S-1010 | 100% |
| CP09-PR-PN-S-1070 |  | Ground Covers - Material Submittal | 5d | 2025-07-06 A | 2025-07-10 A | CP09-PR-PN-S-1000, CP09-PR-PN-S-1010 | 100% |
| CP09-PR-PN-S-1080 |  | Succulents - Material Submittal | 5d | 2025-07-06 A | 2025-07-10 A | CP09-PR-PN-S-1000, CP09-PR-PN-S-1010 | 100% |
| CP09-PR-PN-S-1030 |  | Vines & Climbers - Material Submittal | 5d | 2025-10-20 A | 2025-10-24 A | CP09-PR-PN-S-1000, CP09-PR-PN-S-1010 | 100% |
| CP09-PR-PN-S-1040 |  | Lawn - Material Submittal | 5d | 2025-10-20 A | 2025-10-24 A | CP09-PR-PN-S-1000, CP09-PR-PN-S-1010 | 100% |
|  | 10 | **Long Lead Item** |  | 2024-02-18 | 2026-01-16 |  |  |
|  | 1 | **Electrical Material** |  | 2024-02-18 | 2025-05-22 |  |  |
| CP09-PR-EL-S-1090 |  | Bollard for Walkways - Material Submittal | 7d | 2024-02-18 A | 2024-05-05 A | CP09-PR-EL-S-1080 | 100% |
| CP09-PR-EL-S-1100 |  | Surface Mountaed Down Light for Pool Cabans - Material Submittal | 7d | 2024-02-18 A | 2024-05-05 A | CP09-PR-EL-S-1090 SS | 100% |
| CP09-PR-EL-S-1110 |  | Diffused Wall Recessed Step - Material Submittal | 7d | 2024-02-18 A | 2024-05-05 A | CP09-PR-EL-S-1100 SS | 100% |
| CP09-PR-EL-S-1120 |  | Inground Uplight For Palms - Material Submittal | 7d | 2024-02-18 A | 2024-05-05 A | CP09-PR-EL-S-1110 SS | 100% |
| CP09-PR-EL-S-1130 |  | Projectors for Trees - Material Submittal | 7d | 2024-02-18 A | 2024-05-05 A | CP09-PR-EL-S-1120 SS | 100% |
| CP09-PR-EL-S-1150 |  | Outlet lighting fixtures - Material Submittal | 7d | 2024-02-18 A | 2024-05-05 A | CP09-PR-EL-S-1080 | 100% |
| CP09-PR-EL-S-1070 |  | Connecting Pillars -Material Submittal | 7d | 2025-05-18 A | 2025-05-22 A | CP09-CLD-1010 | 100% |
|  | 2 | **Mechanical Material** |  | 2025-05-18 | 2025-05-22 |  |  |
| CP09-PR-ME-S-1010 |  | Valves -Material Submittal | 7d | 2025-05-18 A | 2025-05-22 A | CP09-CLD-1010 | 100% |
| CP09-PR-ME-S-1020 |  | Sand Filter - Material Submittal | 7d | 2025-05-18 A | 2025-05-22 A | CP09-PR-ME-S-1010 | 100% |
| CP09-PR-ME-S-1030 |  | Filtration pump - Material Submittal | 7d | 2025-05-18 A | 2025-05-22 A | CP09-CLD-1010 | 100% |
| CP09-PR-ME-S-1040 |  | Chemical dosing system -Material Submittal | 7d | 2025-05-18 A | 2025-05-22 A | CP09-CLD-1010 | 100% |
| CP09-PR-ME-S-1050 |  | Chlorinator tablets - Material Submittal | 7d | 2025-05-18 A | 2025-05-22 A | CP09-PR-ME-S-1010 | 100% |
| CP09-PR-ME-S-1060 |  | GUTTER DRAIN -Material Submittal | 7d | 2025-05-18 A | 2025-05-22 A | CP09-PR-ME-S-1050 SS | 100% |
| CP09-PR-ME-S-1070 |  | Submersible pump - Material Submittal | 7d | 2025-05-18 A | 2025-05-22 A | CP09-CLD-1010 | 100% |
| CP09-PR-ME-S-1080 |  | Ventilation Exahust Fan - Material Submittal | 7d | 2025-05-18 A | 2025-05-22 A | CP09-PR-ME-S-1070 | 100% |
|  | 9 | **Play Field Equipment** |  | 2024-05-18 | 2026-01-16 |  |  |
|  | 1 | **Fitness Equipment** |  | 2026-01-12 | 2026-01-16 |  |  |
| CP09-PR-PE-S-1000 |  | OUTDOOR FITNESS-BALANCE BOARD - Material Submittal | 7d | 2026-01-12 A | 2026-01-16 A | CP09-CLD-1010, CP09-PR-FN-S-1000 SS | 100% |
| CP09-PR-PE-S-1010 |  | OUTDOOR FITNESS-DOUBLE CHEST PRESS - Material Submittal | 7d | 2026-01-12 A | 2026-01-16 A | CP09-PR-PE-S-1000 SS | 100% |
| CP09-PR-PE-S-1020 |  | OUTDOOR FITNESS-LEG LIFT & PULL UP - Material Submittal | 7d | 2026-01-12 A | 2026-01-16 A | CP09-PR-PE-S-1010 SS | 100% |
| CP09-PR-PE-S-1030 |  | OUTDOOR FITNESS-STRETCH STATION - Material Submittal | 7d | 2026-01-12 A | 2026-01-16 A | CP09-PR-PE-S-1020 SS | 100% |
|  | 2 | **Kids playground equipment** |  | 2024-05-18 | 2025-05-22 |  |  |
| CP09-PR-PE-S-1040 |  | Log Pile - Material Submittal | 7d | 2024-05-18 A | 2025-05-22 A | CP09-PR-PE-S-1030 | 100% |
| CP09-PR-PE-S-1050 |  | Log Tangle - Material Submittal | 7d | 2024-05-18 A | 2025-05-22 A | CP09-PR-PE-S-1040 FF, CP09-PR-PE-S-1040 SS | 100% |
| CP09-PR-PE-S-1060 |  | Offset Ladder Grid - Material Submittal | 7d | 2024-05-18 A | 2025-05-22 A | CP09-PR-PE-S-1050 FF, CP09-PR-PE-S-1050 SS | 100% |

| ID | WBS | Task | Duration | Start | Finish | Predecessors | Complete |
| --- | --- | --- | --- | --- | --- | --- | --- |
| CP09-PR-PE-S-1070 |  | Single Bay Belt Swing - Material Submittal | 7d | 2024-05-18 A | 2025-05-22 A | CP09-PR-PE-S-1060 FF, CP09-PR-PE-S-1060 SS | 100% |
| CP09-PR-PE-S-1080 |  | Stepper Cluster -Material Submittal | 7d | 2024-05-18 A | 2025-05-22 A | CP09-PR-PE-S-1070 FF, CP09-PR-PE-S-1070 SS | 100% |
| CP09-PR-PE-S-1090 |  | Wobble Board /Small -Material Submittal | 7d | 2024-05-18 A | 2025-05-22 A | CP09-PR-PE-S-1080 FF, CP09-PR-PE-S-1080 SS | 100% |
| CP09-PR-PE-S-1100 |  | Wobble Board /Large - Material Submittal | 7d | 2024-05-18 A | 2025-05-22 A | CP09-PR-PE-S-1090 FF, CP09-PR-PE-S-1090 SS | 100% |
|  | 7 | **Landscape Furntiure** |  | 2025-05-18 | 2025-05-22 |  |  |
| CP09-PR-FN-S-1000 |  | Pitch Pine Picnic Table - Material Submittal | 5d | 2025-05-18 A | 2025-05-22 A | CP09-CLD-1010, CP09-PR-FN-S-1070 | 100% |
| CP09-PR-FN-S-1010 |  | Crcular Cast-iron tree grate - Material Submittal | 7d | 2025-05-18 A | 2025-05-22 A | CP09-PR-HD-S-1080, CP09-PR-HD-S-1100, CP09-PR-HD-S-1110, CP09-PR-HD-S-1180 | 100% |
| CP09-PR-FN-S-1020 |  | Aluminium Cabana for Pool Shading - Material Submittal | 7d | 2025-05-18 A | 2025-05-22 A | CP09-PR-FN-S-1010 SS+3d | 100% |
| CP09-PR-FN-S-1030 |  | Pitch Pine Benchs - Material Submittal | 7d | 2025-05-18 A | 2025-05-22 A | CP09-PR-FN-S-1020 SS | 100% |
| CP09-PR-FN-S-1040 |  | Polyester Hammocks - Material Submittal | 7d | 2025-05-18 A | 2025-05-22 A | CP09-PR-FN-S-1030 | 100% |
| CP09-PR-FN-S-1050 |  | Adult Play Swing - Material Submittall | 7d | 2025-05-18 A | 2025-05-22 A | CP09-PR-FN-S-1040 SS | 100% |
| CP09-PR-FN-S-1060 |  | Aluminum Trash Bin - Material Submittal | 7d | 2025-05-18 A | 2025-05-22 A | CP09-PR-FN-S-1050 SS | 100% |
| CP09-PR-FN-S-1070 |  | Tensile Teflon Tent - Material Submittal | 7d | 2025-05-18 A | 2025-05-22 A | CP09-PR-FN-S-1060 SS | 100% |
| CP09-PR-FN-S-1080 |  | Lanscape Edging ( Rubber) - Material Submittal | 7d | 2025-05-18 A | 2025-05-22 A | CP09-PR-FN-S-1070 SS | 100% |
|  | 2 | **Material Approval** |  | 2024-02-13 | 2026-01-16 |  |  |
|  | 1 | **Civil Materials** |  | 2024-03-05 | 2026-01-16 |  |  |
| CP09-PR-CV-A-1120 |  | Marble for Cheek & Retainig Walls | 14d | 2024-03-05 A | 2024-05-30 A | CP09-PR-CV-S-1120 FF+7d, CP09-PR-CV-S-1120 SS+7d | 100% |
| CP09-PR-CV-A-1000 |  | Concrete Mix - Material Approval | 14d | 2024-07-01 A | 2024-07-04 A | CP09-PR-CV-S-1000 FF+7d, CP09-PR-CV-S-1000 SS+7d | 100% |
| CP09-PR-CV-A-1130 |  | Rebars - Material Approval | 14d | 2024-07-14 A | 2024-07-22 A | CP09-PR-CV-S-1130 FF+7d, CP09-PR-CV-S-1130 SS+7d | 100% |
| CP09-PR-CV-A-1010 |  | Waterproofing - Material Approval | 14d | 2024-07-30 A | 2024-08-15 A | CP09-PR-CV-S-1010 FF+7d, CP09-PR-CV-S-1010 SS+7d | 100% |
| CP09-PR-CV-A-1020 |  | Block - Material Approval | 14d | 2025-05-18 A | 2025-05-22 A | CP09-PR-CV-S-1020 FF+7d, CP09-PR-CV-S-1020 SS+7d | 100% |
| CP09-PR-CV-A-1070 |  | Plaster Accessories -Material Approval | 14d | 2025-05-18 A | 2025-05-22 A | CP09-PR-CV-S-1070 FF+7d, CP09-PR-CV-S-1070 SS+7d | 100% |
| CP09-PR-CV-A-1090 |  | Geotextile & Geocomposit for Machine Room - Material Approval | 14d | 2025-05-18 A | 2025-05-22 A | CP09-PR-CV-S-1090 FF+7d, CP09-PR-CV-S-1090 SS+7d | 100% |
| CP09-PR-CV-A-1110 |  | Epoxy for Machine Room - Material Approval | 14d | 2025-05-18 A | 2025-05-22 A | CP09-PR-CV-S-1110 FF+7d, CP09-PR-CV-S-1110 SS+7d | 100% |
| CP09-PR-CV-A-1030 |  | Mosaic - Material Approval | 14d | 2025-08-18 A | 2025-08-22 A | CP09-PR-CV-S-1030 FF+7d, CP09-PR-CV-S-1030 SS+7d | 100% |
| CP09-PR-CV-A-1040 |  | Granite for Swimming Pool - Material Approval | 14d | 2025-08-18 A | 2025-08-22 A | CP09-PR-CV-S-1040 FF+7d, CP09-PR-CV-S-1040 SS+7d | 100% |
| CP09-PR-CV-A-1050 |  | Stanless Steel Ladders for Swimming Pool - Material Approval | 14d | 2025-08-18 A | 2025-08-22 A | CP09-PR-CV-S-1050 FF+7d, CP09-PR-CV-S-1050 SS+7d | 100% |
| CP09-PR-CV-A-1060 |  | Stanless Steel Handrial for Swimming Pool - Material Approval | 14d | 2025-08-18 A | 2025-08-22 A | CP09-PR-CV-S-1060 FF+7d, CP09-PR-CV-S-1060 SS+7d | 100% |
| CP09-PR-CV-A-1100 |  | Drainage Gravel for Machine Room - Material Approval | 14d | 2025-08-18 A | 2025-08-22 A | CP09-PR-CV-S-1100 FF+7d, CP09-PR-CV-S-1100 SS+7d | 100% |
| CP09-PR-CV-A-1080 |  | Emulsion Paint - Materials Approval | 14d | 2026-01-12 A | 2026-01-16 A | CP09-PR-CV-S-1080 FF+7d, CP09-PR-CV-S-1080 SS+7d | 100% |
|  | 2 | **Hardscape Materials** |  | 2024-02-13 | 2026-01-16 |  |  |
| CP09-PR-HD-A-1080 |  | Flush Curb - Material Approval | 14d | 2024-02-13 A | 2024-05-16 A | CP09-PR-HD-S-1080 FF+3d, CP09-PR-HD-S-1080 SS+3d | 100% |
| CP09-PR-HD-A-1010 |  | Marble Paving - - Material Approval | 14d | 2024-02-18 A | 2024-05-30 A | CP09-PR-HD-S-1010 FF+7d, CP09-PR-HD-S-1010 SS+7d | 100% |
| CP09-PR-HD-A-1180 |  | Interlocks -Material Approval | 14d | 2024-02-18 A | 2024-05-30 A | CP09-PR-HD-S-1180 FF+7d, CP09-PR-HD-S-1180 SS+7d | 100% |
| CP09-PR-HD-A-1100 |  | Marble for Steps - Material Approval | 14d | 2024-02-26 A | 2024-05-30 A | CP09-PR-HD-S-1100 FF+7d, CP09-PR-HD-S-1100 SS+7d | 100% |
| CP09-PR-HD-A-1110 |  | Marble for Seat - Material Approval | 14d | 2024-02-26 A | 2024-05-30 A | CP09-PR-HD-S-1110 FF+7d, CP09-PR-HD-S-1110 SS+7d | 100% |
| CP09-PR-HD-A-1000 |  | Concrete Exposed Aggeregate - Material Approval | 14d | 2025-05-18 A | 2025-05-22 A | CP09-PR-HD-S-1000 FF+7d, CP09-PR-HD-S-1000 SS+7d | 100% |
| CP09-PR-HD-A-1030 |  | Gravel Layer - Material Approval | 14d | 2025-05-18 A | 2025-08-22 A | CP09-PR-HD-S-1030 FF+7d, CP09-PR-HD-S-1030 SS+7d | 100% |
| CP09-PR-HD-A-1040 |  | Crushed Dolomite stone - Material Approval | 14d | 2025-05-18 A | 2025-08-22 A | CP09-PR-HD-S-1040 FF+7d, CP09-PR-HD-S-1040 SS+7d | 100% |
| CP09-PR-HD-A-1050 |  | Loose gravel - Material Approval | 14d | 2025-05-18 A | 2025-08-22 A | CP09-PR-HD-S-1050 FF+7d, CP09-PR-HD-S-1050 SS+7d | 100% |
| CP09-PR-HD-A-1060 |  | Geotextile Sheets - Materials Approval | 14d | 2025-05-18 A | 2025-05-22 A | CP09-PR-HD-S-1060 FF+7d, CP09-PR-HD-S-1060 SS+7d | 100% |
| CP09-PR-HD-A-1070 |  | Clean sand layer - Materials Approval | 14d | 2025-05-18 A | 2025-05-22 A | CP09-PR-HD-S-1070 FF+7d, CP09-PR-HD-S-1070 SS+7d | 100% |
| CP09-PR-HD-A-1090 |  | Crush Stone below Interlock - Material Approval | 14d | 2025-05-18 A | 2025-08-22 A | CP09-PR-HD-S-1090 FF+7d, CP09-PR-HD-S-1090 SS+7d | 100% |
| CP09-PR-HD-A-1120 |  | Mica - Material Approval | 14d | 2025-05-18 A | 2025-08-22 A | CP09-PR-HD-S-1120 FF+7d, CP09-PR-HD-S-1120 SS+7d | 100% |
| CP09-PR-HD-A-1130 |  | Blast stone blocks - Material Approval | 14d | 2025-05-18 A | 2025-08-22 A | CP09-PR-HD-S-1130 FF+7d, CP09-PR-HD-S-1130 SS+7d | 100% |
| CP09-PR-HD-A-1140 |  | Loose Rounded Pebbles - Material Approval | 14d | 2025-05-18 A | 2025-08-22 A | CP09-PR-HD-S-1050 FF+7d, CP09-PR-HD-S-1140 FF+7d, CP09-PR-HD-S-1050 SS+7d, CP09-PR-HD-S-1140 SS+7d | 100% |
| CP09-PR-HD-A-1150 |  | Shower Head - Material Approval | 14d | 2025-05-18 A | 2025-08-22 A | CP09-PR-HD-S-1150 FF+7d, CP09-PR-HD-S-1150 SS+7d | 100% |
| CP09-PR-HD-A-1160 |  | Stainless Handrail - Material Approval | 14d | 2025-05-18 A | 2025-08-22 A | CP09-PR-HD-S-1160 FF+7d, CP09-PR-HD-S-1160 SS+7d | 100% |
| CP09-PR-HD-A-1170 |  | Glass Handrail - Material Approval | 14d | 2025-05-18 A | 2025-08-22 A | CP09-PR-HD-S-1170 FF+7d, CP09-PR-HD-S-1170 SS+7d | 100% |
| CP09-PR-HD-A-1020 |  | WPC - Material Approval | 14d | 2026-01-12 A | 2026-01-16 A | CP09-PR-HD-S-1020 FF+7d, CP09-PR-HD-S-1020 SS+7d | 100% |
|  | 8 | **Sinage** |  | 2025-05-18 | 2025-05-22 |  |  |
| CP09-PR-SN-A-1000 |  | STREET DIRECTIONAL SIGN - Material Approval | 7d | 2025-05-18 A | 2025-05-22 A | CP09-PR-SN-S-1000 FF+7d, CP09-PR-SN-S-1000 SS+7d | 100% |
| CP09-PR-SN-A-1010 |  | DIRECTIONAL SIGN - Material Approval | 14d | 2025-05-18 A | 2025-05-22 A | CP09-PR-SN-S-1010 FF+7d, CP09-PR-SN-S-1010 SS+7d | 100% |
| CP09-PR-SN-A-1020 |  | UNIT ID SIGN - Material Approval | 14d | 2025-05-18 A | 2025-05-22 A | CP09-PR-SN-S-1020 FF+7d, CP09-PR-SN-S-1020 SS+7d | 100% |
| CP09-PR-SN-A-1030 |  | RULES SIGN - Material Approval | 14d | 2025-05-18 A | 2025-05-22 A | CP09-PR-SN-S-1030 FF+7d, CP09-PR-SN-S-1030 SS+7d | 100% |
| CP09-PR-SN-A-1040 |  | IDENTIFICATION SIGN - Material Approval | 14d | 2025-05-18 A | 2025-05-22 A | CP09-PR-SN-S-1040 FF+7d, CP09-PR-SN-S-1040 SS+7d | 100% |
|  | 4 | **Electrical Materials** |  | 2024-02-18 | 2025-08-22 |  |  |
|  | 1 | **Swimming pool & MR** |  | 2025-05-18 | 2025-08-22 |  |  |
| CP09-PR-EL-A-1000 |  | Conduits - Material Approval | 14d | 2025-05-18 A | 2025-05-22 A | CP09-PR-EL-S-1000 FF+7d, CP09-PR-EL-S-1000 SS+7d | 100% |
| CP09-PR-EL-A-1010 |  | Cable tray - Material Approval | 14d | 2025-05-18 A | 2025-05-22 A | CP09-PR-EL-S-1010 FF+7d, CP09-PR-EL-S-1010 SS+7d | 100% |
| CP09-PR-EL-A-1030 |  | Power Cables & Wires - Material Approval | 14d | 2025-05-18 A | 2025-05-22 A | CP09-PR-EL-S-1030 FF+7d, CP09-PR-EL-S-1030 SS+7d | 100% |
| CP09-PR-EL-A-1040 |  | Earthing System - - Material Approval | 14d | 2025-05-18 A | 2025-05-22 A | CP09-PR-EL-S-1040 FF+7d, CP09-PR-EL-S-1040 SS+7d | 100% |
| CP09-PR-EL-A-1050 |  | Lighting Outlets , Switches Fixture - Material Approval | 14d | 2025-05-18 A | 2025-05-22 A | CP09-PR-EL-S-1050 FF+7d, CP09-PR-EL-S-1050 SS+7d | 100% |
| CP09-PR-EL-A-1140 |  | Underwater Recessed Spotlight | 14d | 2025-05-18 A | 2025-05-22 A | CP09-PR-EL-S-1140 FF+7d, CP09-PR-EL-S-1140 SS+7d | 100% |
| CP09-PR-EL-A-1020 |  | Panel boards - Material Approval | 14d | 2025-08-18 A | 2025-08-22 A | CP09-PR-EL-S-1020 FF+7d, CP09-PR-EL-S-1020 SS+7d | 100% |
|  | 2 | **Landscape** |  | 2024-02-18 | 2024-05-08 |  |  |
| CP09-PR-EL-A-1060 |  | Power Cables for Landscape Lighting - Material Approval | 14d | 2024-02-18 A | 2024-05-08 A | CP09-PR-EL-S-1060 FF+7d, CP09-PR-EL-S-1060 SS+7d | 100% |
| CP09-PR-EL-A-1080 |  | Lighting Pole - Material Approval | 14d | 2024-02-18 A | 2024-05-08 A | CP09-PR-EL-S-1080 FF+7d, CP09-PR-EL-S-1080 SS+7d | 100% |
|  | 3 | **Mechnical Materials** |  | 2025-05-18 | 2025-05-22 |  |  |
|  | 1 | **Swimmimng Pool & MR** |  | 2025-05-18 | 2025-05-22 |  |  |

| ID | WBS | Task | Duration | Start | Finish | Predecessors | Complete |
| --- | --- | --- | --- | --- | --- | --- | --- |
| CP09-PR-ME-A-1000 |  | UPVC pipes,Fitting - Material Approval | 14d | 2025-05-18 A | 2025-05-22 A | CP09-PR-ME-S-1000 FF+7d, CP09-PR-ME-S-1000 SS+7d | 100% |
|  | 6 | **Irrigation Materials** |  | 2024-02-13 | 2024-05-28 |  |  |
| CP09-PR-IR-A-1080 |  | Decoder one station - Material Approval | 7d | 2024-02-13 A | 2024-02-15 A | CP09-PR-IR-S-1080 FF+7d, CP09-PR-IR-S-1080 SS+7d | 100% |
| CP09-PR-IR-A-1050 |  | Electrical Solenoid Valve -Material Approval | 7d | 2024-02-17 A | 2024-02-20 A | CP09-PR-IR-S-1050 FF+7d, CP09-PR-IR-S-1050 SS+7d | 100% |
| CP09-PR-IR-A-1060 |  | Test Controller -Material Approval | 7d | 2024-02-17 A | 2024-02-20 A | CP09-PR-IR-S-1060 FF+7d, CP09-PR-IR-S-1060 SS+7d | 100% |
| CP09-PR-IR-A-1070 |  | Direct Cables -Material Approval | 7d | 2024-02-17 A | 2024-02-20 A | CP09-PR-IR-S-1070 FF+7d, CP09-PR-IR-S-1070 SS+7d | 100% |
| CP09-PR-IR-A-1000 |  | UPVC pipes for Sub-main Line & Lateral - Material Approval | 7d | 2024-02-18 A | 2024-05-08 A | CP09-PR-IR-S-1000 FF+7d, CP09-PR-IR-S-1000 SS+7d | 100% |
| CP09-PR-IR-A-1010 |  | Drip line-Material Approval | 7d | 2024-02-18 A | 2024-03-10 A | CP09-PR-IR-S-1010 FF+7d, CP09-PR-IR-S-1010 SS+7d | 100% |
| CP09-PR-IR-A-1020 |  | Rings -Material Approval | 7d | 2024-02-18 A | 2024-03-03 A | CP09-PR-IR-S-1020 FF+7d, CP09-PR-IR-S-1020 SS+7d | 100% |
| CP09-PR-IR-A-1030 |  | Valves -Material Approval | 7d | 2024-02-18 A | 2024-03-03 A | CP09-PR-IR-S-1030 FF+7d, CP09-PR-IR-S-1030 SS+7d | 100% |
| CP09-PR-IR-A-1040 |  | Pop up Multi ray sprinkler-Material Approval | 7d | 2024-02-18 A | 2024-05-28 A | CP09-PR-IR-S-1040 FF+7d, CP09-PR-IR-S-1040 SS+7d | 100% |
|  | 5 | **Plantings Materials** |  | 2024-03-06 | 2025-10-24 |  |  |
| CP09-PR-PN-A-1010 |  | Organic Manure - Material Approval | 14d | 2024-03-06 A | 2024-04-04 A | CP09-PR-PN-S-1010 FF+7d, CP09-PR-PN-S-1010 SS+7d | 100% |
| CP09-PR-PN-A-1000 |  | Sweet Sand for all plants - Material Approval | 14d | 2025-07-06 A | 2025-07-10 A | CP09-PR-PN-S-1000 FF+7d, CP09-PR-PN-S-1000 SS+7d | 100% |
| CP09-PR-PN-A-1020 |  | Large Trees - Material Approval | 14d | 2025-07-06 A | 2025-07-10 A | CP09-PR-PN-S-1020 FF+7d, CP09-PR-PN-S-1020 SS+7d | 100% |
| CP09-PR-PN-A-1050 |  | Ornamental grass - Material Approval | 14d | 2025-07-06 A | 2025-07-10 A | CP09-PR-PN-S-1050 FF+7d, CP09-PR-PN-S-1050 SS+7d | 100% |
| CP09-PR-PN-A-1060 |  | Shrubs - Material Approval | 14d | 2025-07-06 A | 2025-07-10 A | CP09-PR-PN-S-1060 FF+7d, CP09-PR-PN-S-1060 SS+7d | 100% |
| CP09-PR-PN-A-1070 |  | Ground Covers - Material Approval | 14d | 2025-07-06 A | 2025-07-10 A | CP09-PR-PN-S-1070 FF+7d, CP09-PR-PN-S-1070 SS+7d | 100% |
| CP09-PR-PN-A-1080 |  | Succulents - Material Approval | 14d | 2025-07-06 A | 2025-07-10 A | CP09-PR-PN-S-1080 FF+7d, CP09-PR-PN-S-1080 SS+7d | 100% |
| CP09-PR-PN-A-1030 |  | Vines & Climbers - Material Approval | 14d | 2025-10-20 A | 2025-10-24 A | CP09-PR-PN-S-1030 FF+7d, CP09-PR-PN-S-1030 SS+7d | 100% |
| CP09-PR-PN-A-1040 |  | Lawn - Material Approval | 14d | 2025-10-20 A | 2025-10-24 A | CP09-PR-PN-S-1040 FF+7d, CP09-PR-PN-S-1040 SS+7d | 100% |
|  | 10 | **Long Lead Item** |  | 2024-02-26 | 2026-01-16 |  |  |
|  | 1 | **Electrical Material** |  | 2024-02-26 | 2026-01-16 |  |  |
| CP09-PR-EL-A-1100 |  | Surface Mountaed Down Light for Pool Cabans - Material Approval | 14d | 2024-02-26 A | 2024-05-08 A | CP09-PR-EL-S-1100 FF+7d, CP09-PR-EL-S-1100 SS+7d | 100% |
| CP09-PR-EL-A-1110 |  | Diffused Wall Recessed Step - Material Approval | 14d | 2024-02-26 A | 2024-05-08 A | CP09-PR-EL-S-1110 FF+7d, CP09-PR-EL-S-1110 SS+7d | 100% |
| CP09-PR-EL-A-1120 |  | Inground Uplight For Palms - Material Approval | 14d | 2024-02-26 A | 2024-05-08 A | CP09-PR-EL-S-1120 FF+7d, CP09-PR-EL-S-1120 SS+7d | 100% |
| CP09-PR-EL-A-1130 |  | Projectors for Trees - Material Approval | 14d | 2024-02-26 A | 2024-05-08 A | CP09-PR-EL-S-1130 FF+7d, CP09-PR-EL-S-1130 SS+7d | 100% |
| CP09-PR-EL-A-1150 |  | Outlet lighting fixtures - Material Approval | 14d | 2024-02-26 A | 2024-05-08 A | CP09-PR-EL-S-1150 FF+7d, CP09-PR-EL-S-1150 SS+7d | 100% |
| CP09-PR-EL-A-1070 |  | Connecting Pillars - Material Approval | 14d | 2025-05-18 A | 2025-05-22 A | CP09-PR-EL-S-1070 FF+7d, CP09-PR-EL-S-1070 SS+7d | 100% |
| CP09-PR-EL-A-1090 |  | Bollard for Walkways - Material Approval | 14d | 2026-01-12 A | 2026-01-16 A | CP09-PR-EL-S-1090 FF+7d, CP09-PR-EL-S-1090 SS+7d | 100% |
|  | 2 | **Mechnical Material** |  | 2025-05-18 | 2025-05-22 |  |  |
| CP09-PR-ME-A-1010 |  | Valves - Material Approval | 14d | 2025-05-18 A | 2025-05-22 A | CP09-PR-ME-S-1010 FF+7d, CP09-PR-ME-S-1010 SS+7d | 100% |
| CP09-PR-ME-A-1020 |  | Sand Filter - Material Approval | 14d | 2025-05-18 A | 2025-05-22 A | CP09-PR-ME-S-1020 FF+7d, CP09-PR-ME-S-1020 SS+7d | 100% |
| CP09-PR-ME-A-1030 |  | Filtration pump - Material Approval | 14d | 2025-05-18 A | 2025-05-22 A | CP09-PR-ME-S-1030 FF+7d, CP09-PR-ME-S-1030 SS+7d | 100% |
| CP09-PR-ME-A-1040 |  | Chemical dosing system - Material Approval | 14d | 2025-05-18 A | 2025-05-22 A | CP09-PR-ME-S-1040 FF+7d, CP09-PR-ME-S-1040 SS+7d | 100% |
| CP09-PR-ME-A-1050 |  | Chlorinator tablets - Material Approval | 14d | 2025-05-18 A | 2025-05-22 A | CP09-PR-ME-S-1050 FF+7d, CP09-PR-ME-S-1050 SS+7d | 100% |
| CP09-PR-ME-A-1060 |  | GUTTER DRAIN -Material Approval | 14d | 2025-05-18 A | 2025-05-22 A | CP09-PR-ME-S-1060 FF+7d, CP09-PR-ME-S-1060 SS+7d | 100% |
| CP09-PR-ME-A-1070 |  | Submersible pump - Material Approval | 14d | 2025-05-18 A | 2025-05-22 A | CP09-PR-ME-S-1070 FF+7d, CP09-PR-ME-S-1070 SS+7d | 100% |
| CP09-PR-ME-A-1080 |  | Ventilation Exahust Fan - Material Approval | 14d | 2025-05-18 A | 2025-05-22 A | CP09-PR-ME-S-1080 FF+7d, CP09-PR-ME-S-1080 SS+7d | 100% |
|  | 9 | **Play Field Equipment** |  | 2025-05-18 | 2026-01-16 |  |  |
|  | 1 | **Fitness Equipment** |  | 2026-01-12 | 2026-01-16 |  |  |
| CP09-PR-PE-A-1000 |  | OUTDOOR FITNESS-BALANCE BOARD - Material Approval | 14d | 2026-01-12 A | 2026-01-16 A | CP09-PR-PE-S-1000 FF+7d, CP09-PR-PE-S-1000 SS+7d | 100% |
| CP09-PR-PE-A-1010 |  | OUTDOOR FITNESS-DOUBLE CHEST PRESS - Material Approval | 14d | 2026-01-12 A | 2026-01-16 A | CP09-PR-PE-S-1010 FF+7d, CP09-PR-PE-S-1010 SS+7d | 100% |
| CP09-PR-PE-A-1020 |  | OUTDOOR FITNESS-LEG LIFT & PULL UP - Material Approval | 14d | 2026-01-12 A | 2026-01-16 A | CP09-PR-PE-S-1020 FF+7d, CP09-PR-PE-S-1020 SS+7d | 100% |
| CP09-PR-PE-A-1030 |  | OUTDOOR FITNESS-STRETCH STATION - Material Approval | 14d | 2026-01-12 A | 2026-01-16 A | CP09-PR-PE-S-1030 FF+7d, CP09-PR-PE-S-1030 SS+7d | 100% |
|  | 2 | **Kids playground equipment** |  | 2025-05-18 | 2025-05-22 |  |  |
| CP09-PR-PE-A-1040 |  | Log Pile - Material Approval | 14d | 2025-05-18 A | 2025-05-22 A | CP09-PR-PE-S-1040 FF+7d, CP09-PR-PE-S-1040 SS+7d | 100% |
| CP09-PR-PE-A-1050 |  | Log Tangle - Material Approval | 14d | 2025-05-18 A | 2025-05-22 A | CP09-PR-PE-S-1050 FF+7d, CP09-PR-PE-S-1050 SS+7d | 100% |
| CP09-PR-PE-A-1060 |  | Offset Ladder Grid - Material Approval | 14d | 2025-05-18 A | 2025-05-22 A | CP09-PR-PE-S-1060 FF+7d, CP09-PR-PE-S-1060 SS+7d | 100% |
| CP09-PR-PE-A-1070 |  | Single Bay Belt Swing - Material Approval | 14d | 2025-05-18 A | 2025-05-22 A | CP09-PR-PE-S-1070 FF+7d, CP09-PR-PE-S-1070 SS+7d | 100% |
| CP09-PR-PE-A-1080 |  | Stepper Cluster - Material Approval | 14d | 2025-05-18 A | 2025-05-22 A | CP09-PR-PE-S-1080 FF+7d, CP09-PR-PE-S-1080 SS+7d | 100% |
| CP09-PR-PE-A-1090 |  | Wobble Board /Small - Material Approval | 14d | 2025-05-18 A | 2025-05-22 A | CP09-PR-PE-S-1090 FF+7d, CP09-PR-PE-S-1090 SS+7d | 100% |
| CP09-PR-PE-A-1100 |  | Wobble Board /Large - Material Approval | 14d | 2025-05-18 A | 2025-05-22 A | CP09-PR-PE-S-1100 FF+7d, CP09-PR-PE-S-1100 SS+7d | 100% |
|  | 7 | **Landscape Furntiure** |  | 2025-05-18 | 2025-05-22 |  |  |
| CP09-PR-FN-A-1000 |  | Pitch Pine Picnic Table - Material Approval | 14d | 2025-05-18 A | 2025-05-22 A | CP09-PR-FN-S-1000 FF+7d, CP09-PR-FN-S-1000 SS+7d | 100% |
| CP09-PR-FN-A-1010 |  | Crcular Cast-iron tree grate - Material Approval | 14d | 2025-05-18 A | 2025-05-22 A | CP09-PR-FN-S-1010 FF+7d, CP09-PR-FN-S-1010 SS+7d | 100% |
| CP09-PR-FN-A-1020 |  | Aluminium Cabana for Pool Shading - Material Approval | 14d | 2025-05-18 A | 2025-05-22 A | CP09-PR-FN-S-1020 FF+7d, CP09-PR-FN-S-1020 SS+7d | 100% |
| CP09-PR-FN-A-1030 |  | Pitch Pine Benchs - Material Approval | 14d | 2025-05-18 A | 2025-05-22 A | CP09-PR-FN-S-1000 FF+7d, CP09-PR-FN-S-1030 FF+7d, CP09-PR-FN-S-1030 SS+7d, CP09-PR-FN-S-1000 SS+7d | 100% |
| CP09-PR-FN-A-1040 |  | Polyester Hammocks - Material Approval | 14d | 2025-05-18 A | 2025-05-22 A | CP09-PR-FN-S-1040 FF+7d, CP09-PR-FN-S-1040 SS+7d | 100% |
| CP09-PR-FN-A-1050 |  | Adult Play Swing - Material Approval | 14d | 2025-05-18 A | 2025-05-22 A | CP09-PR-FN-S-1050 FF+7d, CP09-PR-FN-S-1050 SS+7d | 100% |
| CP09-PR-FN-A-1060 |  | Aluminum Trash Bin - Material Approval | 14d | 2025-05-18 A | 2025-05-22 A | CP09-PR-FN-S-1060 FF+7d, CP09-PR-FN-S-1060 SS+7d | 100% |
| CP09-PR-FN-A-1070 |  | Tensile Teflon Tent - Material Approval | 14d | 2025-05-18 A | 2025-05-22 A | CP09-PR-FN-S-1070 FF+7d, CP09-PR-FN-S-1070 SS+7d | 100% |
| CP09-PR-FN-A-1080 |  | Lanscape Edging ( Rubber) - Material Approval | 14d | 2025-05-18 A | 2025-05-22 A | CP09-PR-FN-S-1080 FF+7d, CP09-PR-FN-S-1080 SS+7d | 100% |
|  | 3 | **Material PO Issued** |  | 2024-08-08 | 2026-05-28 |  |  |
|  | 1 | **Civil Materials** |  | 2024-08-08 | 2026-05-26 |  |  |
| CP09-PR-CV-PO-1000 |  | Concrete Mix - Material PO-Issued | 2d | 2024-08-08 A | 2024-08-11 A | CP09-PR-CV-A-1000 | 100% |
| CP09-PR-CV-PO-1010 |  | Waterproofing - Material PO-Issued | 2d | 2024-08-16 A | 2024-08-18 A | CP09-PR-CV-A-1010 | 100% |
| CP09-PR-CV-PO-1020 |  | Block - Material PO-Issued | 3d | 2025-05-18 A | 2025-05-22 A | CP09-PR-CV-A-1020 | 100% |
| CP09-PR-CV-PO-1070 |  | Plaster Accessories -Material PO-Issued | 3d | 2025-08-22 A | 2025-08-26 A | CP09-PR-CV-A-1070 | 100% |
| CP09-PR-CV-PO-1130 |  | Rebars - Material PO-Issued | 3d | 2025-08-22 A | 2025-08-26 A | CP09-PR-CV-A-1130 | 100% |

| ID | WBS | Task | Duration | Start | Finish | Predecessors | Complete | Total float |
| --- | --- | --- | --- | --- | --- | --- | --- | --- |
| CP09-PR-CV-PO-1110 |  | Epoxy for Machine Room - Material PO-Issued | 3d | 2025-10-20 A | 2025-10-24 A | CP09-PR-CV-A-1110 | 100% |  |
| CP09-PR-CV-PO-1120 |  | Marble for Cheek & Retainig Walls Material PO-Issued | 3d | 2025-10-20 A | 2025-10-24 A | CP09-PR-CV-A-1120 | 100% |  |
| CP09-PR-CV-PO-1080 |  | Emulsion Paint - Material PO-Issued | 3d | 2026-01-12 A | 2026-01-16 A | CP09-PR-CV-A-1080 | 100% |  |
| CP09-PR-CV-PO-1030 |  | Mosaic - Material PO-Issued | 3d | 2026-05-24 | 2026-05-26 | CP09-PR-CV-A-1030 |  | -175.56d |
| CP09-PR-CV-PO-1040 |  | Granite for Swimming Pool - Material PO-Issued | 3d | 2026-05-24 | 2026-05-26 | CP09-PR-CV-A-1040 |  | -164.31d |
| CP09-PR-CV-PO-1050 |  | Stanless Steel Ladders for Swimming Pool - Material PO-Issued | 3d | 2026-05-24 | 2026-05-26 | CP09-PR-CV-A-1050 |  | -156.81d |
| CP09-PR-CV-PO-1060 |  | Stanless Steel Handrial for Swimming Pool - Material PO-Issued | 3d | 2026-05-24 | 2026-05-26 | CP09-PR-CV-A-1060 |  | -154d |
| CP09-PR-CV-PO-1090 |  | Geotextile & Geocomposit for Machine Room - Material PO-Issued | 3d | 2026-05-24 | 2026-05-26 | CP09-PR-CV-A-1090 |  | -152d |
| CP09-PR-CV-PO-1100 |  | Drainage Gravel for Machine Room - Material PO-Issued | 3d | 2026-05-24 | 2026-05-26 | CP09-PR-CV-A-1100 |  | -152d |
|  | 2 | **Hardscape Materials** |  | 2025-05-18 | 2026-05-26 |  |  |  |
| CP09-PR-HD-PO-1080 |  | Flush Curb - Material PO-Issued | 5d | 2025-05-18 A | 2025-05-22 A | CP09-PR-HD-A-1080 | 100% |  |
| CP09-PR-HD-PO-1180 |  | Interlocks -Material PO-Issued | 3d | 2025-05-18 A | 2025-05-22 A | CP09-PR-HD-A-1180 | 100% |  |
| CP09-PR-HD-PO-1000 |  | Concrete Exposed Aggeregate - Material PO-Issued | 3d | 2025-08-22 A | 2025-08-26 A | CP09-PR-HD-A-1000 | 100% |  |
| CP09-PR-HD-PO-1010 |  | Marble Paving - - Material PO-Issued | 3d | 2025-08-22 A | 2025-08-26 A | CP09-PR-HD-A-1010 | 100% |  |
| CP09-PR-HD-PO-1060 |  | Geotextile Sheets - Material PO-Issued | 3d | 2025-08-22 A | 2025-08-26 A | CP09-PR-HD-A-1060 | 100% |  |
| CP09-PR-HD-PO-1070 |  | Clean sand layer - Material PO-Issued | 3d | 2025-08-22 A | 2025-08-26 A | CP09-PR-HD-A-1070 | 100% |  |
| CP09-PR-HD-PO-1090 |  | Crush Stone below Interlock - Material PO-Issued | 3d | 2025-08-22 A | 2025-08-26 A | CP09-PR-HD-A-1090 | 100% |  |
| CP09-PR-HD-PO-1100 |  | Marble for Steps - Material PO-Issued | 3d | 2025-10-20 A | 2025-10-24 A | CP09-PR-HD-A-1100 | 100% |  |
| CP09-PR-HD-PO-1020 |  | WPC - Material PO-Issued | 3d | 2026-01-12 A | 2026-01-16 A | CP09-PR-HD-A-1020 | 100% |  |
| CP09-PR-HD-PO-1030 |  | Gravel Layer - Material PO-Issued | 3d | 2026-05-24 | 2026-05-26 | CP09-PR-HD-A-1030 |  | -184.38d |
| CP09-PR-HD-PO-1040 |  | Crushed Dolomite stone - Material PO-Issued | 3d | 2026-05-24 | 2026-05-26 | CP09-PR-HD-A-1040 |  | -176.56d |
| CP09-PR-HD-PO-1050 |  | Loose gravel - Material PO-Issued | 3d | 2026-05-24 | 2026-05-26 | CP09-PR-HD-A-1050 |  | -183.38d |
| CP09-PR-HD-PO-1110 |  | Marble for Seat - Material PO-Issued | 3d | 2026-05-24 | 2026-05-26 | CP09-PR-HD-A-1110 |  | -194d |
| CP09-PR-HD-PO-1120 |  | Mica - Material PO-Issued | 3d | 2026-05-24 | 2026-05-26 | CP09-PR-HD-A-1120 |  | -171.75d |
| CP09-PR-HD-PO-1130 |  | Blast stone blocks - Material PO-Issued | 3d | 2026-05-24 | 2026-05-26 | CP09-PR-HD-A-1130 |  | -155.81d |
| CP09-PR-HD-PO-1140 |  | Loose Rounded Pebbles - Material PO-Issued | 3d | 2026-05-24 | 2026-05-26 | CP09-PR-HD-A-1140 |  | -144d |
| CP09-PR-HD-PO-1150 |  | Shower Head - Material PO-Issued | 3d | 2026-05-24 | 2026-05-26 | CP09-PR-HD-A-1150 |  | -138d |
| CP09-PR-HD-PO-1160 |  | Stainless Handrail - Material PO-Issued | 3d | 2026-05-24 | 2026-05-26 | CP09-PR-HD-A-1160 |  | -175.62d |
| CP09-PR-HD-PO-1170 |  | Glass Handrail - Material PO-Issued | 3d | 2026-05-24 | 2026-05-26 | CP09-PR-HD-A-1170 |  | -175.62d |
|  | 8 | **Sinage** |  | 2025-08-22 | 2025-08-26 |  |  |  |
| CP09-PR-SN-PO-1000 |  | STREET DIRECTIONAL SIGN - Material PO-Issued | 5d | 2025-08-22 A | 2025-08-26 A | CP09-PR-SN-A-1000 | 100% |  |
| CP09-PR-SN-PO-1010 |  | DIRECTIONAL SIGN - Material PO-Issued | 5d | 2025-08-22 A | 2025-08-26 A | CP09-PR-SN-A-1010 | 100% |  |
| CP09-PR-SN-PO-1020 |  | UNIT ID SIGN - Material PO-Issued | 5d | 2025-08-22 A | 2025-08-26 A | CP09-PR-SN-A-1020 | 100% |  |
| CP09-PR-SN-PO-1030 |  | RULES SIGN - Material PO-Issued | 5d | 2025-08-22 A | 2025-08-26 A | CP09-PR-SN-A-1030 | 100% |  |
| CP09-PR-SN-PO-1040 |  | IDENTIFICATION SIGN - Material PO-Issued | 5d | 2025-08-22 A | 2025-08-26 A | CP09-PR-SN-A-1040 | 100% |  |
|  | 4 | **Electrical Materials** |  | 2025-05-18 | 2026-05-26 |  |  |  |
|  | 1 | **Swimming pool & MR** |  | 2025-05-18 | 2026-05-26 |  |  |  |
| CP09-PR-EL-PO-1030 |  | Power Cables & Wires - Material PO-Issued | 3d | 2025-05-18 A | 2025-05-22 A | CP09-PR-EL-A-1030 | 100% |  |
| CP09-PR-EL-PO-1000 |  | Conduits - Material PO-Issued | 3d | 2026-05-24 | 2026-05-26 | CP09-PR-EL-A-1000 |  | -207d |
| CP09-PR-EL-PO-1010 |  | Cable tray - Material PO-Issued | 3d | 2026-05-24 | 2026-05-26 | CP09-PR-EL-A-1010 |  | -207d |
| CP09-PR-EL-PO-1020 |  | Panel boards - Material PO-Issued | 3d | 2026-05-24 | 2026-05-26 | CP09-PR-EL-A-1020 |  | -193.06d |
| CP09-PR-EL-PO-1040 |  | Earthing System - - Material PO-Issued | 3d | 2026-05-24 | 2026-05-26 | CP09-PR-EL-A-1040 |  | -164.06d |
| CP09-PR-EL-PO-1050 |  | Lighting Outlets , Switches Fixture - Material PO-Issued | 3d | 2026-05-24 | 2026-05-26 | CP09-PR-EL-A-1050 |  | -169.06d |
| CP09-PR-EL-PO-1140 |  | Underwater Recessed Spotlight - Material PO-Issued | 3d | 2026-05-24 | 2026-05-26 | CP09-PR-EL-A-1140 |  | -169.06d |
|  | 2 | **Landscape** |  | 2025-08-22 | 2026-01-16 |  |  |  |
| CP09-PR-EL-PO-1060 |  | Power Cables for Landscape Lighting - Material PO-Issued | 5d | 2025-08-22 A | 2025-08-26 A | CP09-PR-EL-A-1060 | 100% |  |
| CP09-PR-EL-PO-1080 |  | Lighting Pole - Material PO-Issued | 5d | 2026-01-12 A | 2026-01-16 A | CP09-PR-EL-A-1080 | 100% |  |
|  | 3 | **Mechnical Materials** |  | 2025-05-18 | 2025-05-22 |  |  |  |
|  | 1 | **Swimmimng Pool & MR** |  | 2025-05-18 | 2025-05-22 |  |  |  |
| CP09-PR-ME-PO-1000 |  | UPVC pipes,Fitting -- Material PO-Issued | 5d | 2025-05-18 A | 2025-05-22 A | CP09-PR-ME-A-1000 | 100% |  |
|  | 6 | **Irrigation Materials** |  | 2024-08-13 | 2024-08-16 |  |  |  |
| CP09-PR-IR-PO-1000 |  | UPVC pipes for Sub-main Line & Lateral - Material PO-Issued | 3d | 2024-08-13 A | 2024-08-16 A | CP09-PR-IR-A-1000 | 100% |  |
| CP09-PR-IR-PO-1010 |  | Drip line-Material PO-Issued | 3d | 2024-08-13 A | 2024-08-16 A | CP09-PR-IR-A-1010 | 100% |  |
| CP09-PR-IR-PO-1020 |  | Rings -Material PO-Issued | 3d | 2024-08-13 A | 2024-08-16 A | CP09-PR-IR-A-1020 | 100% |  |
| CP09-PR-IR-PO-1030 |  | Valves -Material PO-Issued | 3d | 2024-08-13 A | 2024-08-16 A | CP09-PR-IR-A-1030 | 100% |  |
| CP09-PR-IR-PO-1040 |  | Pop up Multi ray sprinkler-Material PO-Issued | 3d | 2024-08-13 A | 2024-08-16 A | CP09-PR-IR-A-1040 | 100% |  |
| CP09-PR-IR-PO-1050 |  | Electrical Solenoid Valve -Material PO-Issued | 3d | 2024-08-13 A | 2024-08-16 A | CP09-PR-IR-A-1050 | 100% |  |
| CP09-PR-IR-PO-1060 |  | Test Controller -Material PO-Issued | 3d | 2024-08-13 A | 2024-08-16 A | CP09-PR-IR-A-1060 | 100% |  |
| CP09-PR-IR-PO-1070 |  | Direct Cables -Material PO-Issued | 3d | 2024-08-13 A | 2024-08-16 A | CP09-PR-IR-A-1070 | 100% |  |
| CP09-PR-IR-PO-1080 |  | Decoder one station - Material PO-Issued | 3d | 2024-08-13 A | 2024-08-16 A | CP09-PR-IR-A-1080 | 100% |  |
|  | 5 | **Plantings Materials** |  | 2025-07-06 | 2025-10-24 |  |  |  |
| CP09-PR-PN-PO-1000 |  | Sweet Sand for all plants - Material PO-Issued | 5d | 2025-07-06 A | 2025-07-10 A | CP09-PR-PN-A-1000 | 100% |  |
| CP09-PR-PN-PO-1010 |  | Organic Manure - Material PO-Issued | 5d | 2025-07-06 A | 2025-07-10 A | CP09-PR-PN-A-1010 | 100% |  |
| CP09-PR-PN-PO-1020 |  | Large Trees - Material PO-Issued | 5d | 2025-07-06 A | 2025-07-10 A | CP09-PR-PN-A-1020 | 100% |  |
| CP09-PR-PN-PO-1050 |  | Ornamental grass - Material PO-Issued | 5d | 2025-07-06 A | 2025-07-10 A | CP09-PR-PN-A-1050 | 100% |  |
| CP09-PR-PN-PO-1060 |  | Shrubs - Material PO-Issued | 5d | 2025-07-06 A | 2025-07-10 A | CP09-PR-PN-A-1060 | 100% |  |
| CP09-PR-PN-PO-1070 |  | Ground Covers - Material PO-Issued | 5d | 2025-07-06 A | 2025-07-10 A | CP09-PR-PN-A-1070 | 100% |  |
| CP09-PR-PN-PO-1080 |  | Succulents - Material PO-Issued | 5d | 2025-07-06 A | 2025-07-10 A | CP09-PR-PN-A-1080 | 100% |  |
| CP09-PR-PN-PO-1030 |  | Vines & Climbers - Material PO-Issued | 5d | 2025-10-20 A | 2025-10-24 A | CP09-PR-PN-A-1030 | 100% |  |
| CP09-PR-PN-PO-1040 |  | Lawn - Material PO-Issued | 5d | 2025-10-20 A | 2025-10-24 A | CP09-PR-PN-A-1040 | 100% |  |

| ID | WBS | Task | Duration | Start | Finish | Predecessors | Complete | Total float |
| --- | --- | --- | --- | --- | --- | --- | --- | --- |
|  | 10 | **Long Lead Item** |  | 2025-05-18 | 2026-05-28 |  |  |  |
|  | 1 | **Electrical Material** |  | 2026-01-12 | 2026-05-28 |  |  |  |
| CP09-PR-EL-PO-1090 |  | Bollard for Walkways - Material PO-Issued | 5d | 2026-01-12 A | 2026-01-16 A | CP09-PR-EL-A-1090 | 100% |  |
| CP09-PR-EL-PO-1070 |  | Connecting Pillars - Material PO-Issued | 5d | 2026-05-24 | 2026-05-28 | CP09-PR-EL-A-1070 |  | -169d |
| CP09-PR-EL-PO-1100 |  | Surface Mountaed Down Light for Pool Cabans - Material PO-Issued | 5d | 2026-05-24 | 2026-05-28 | CP09-PR-EL-A-1100 |  | -168d |
| CP09-PR-EL-PO-1110 |  | Diffused Wall Recessed Step - Material PO-Issued | 5d | 2026-05-24 | 2026-05-28 | CP09-PR-EL-A-1110 |  | -168d |
| CP09-PR-EL-PO-1120 |  | Inground Uplight For Palms - Material PO-Issued | 5d | 2026-05-24 | 2026-05-28 | CP09-PR-EL-A-1120 |  | -168d |
| CP09-PR-EL-PO-1130 |  | Projectors for Trees - Material PO-Issued | 5d | 2026-05-24 | 2026-05-28 | CP09-PR-EL-A-1130 |  | -168d |
| CP09-PR-EL-PO-1150 |  | Outlet lighting fixtures - Material PO-Issued | 5d | 2026-05-24 | 2026-05-28 | CP09-PR-EL-A-1150 |  | -162.38d |
|  | 2 | **Mechnical Material** |  | 2025-05-18 | 2025-05-22 |  |  |  |
| CP09-PR-ME-PO-1010 |  | Valves - Material PO-Issued | 5d | 2025-05-18 A | 2025-05-22 A | CP09-PR-ME-A-1010 | 100% |  |
| CP09-PR-ME-PO-1020 |  | Sand Filter - Material PO-Issued | 5d | 2025-05-18 A | 2025-05-22 A | CP09-PR-ME-A-1020 | 100% |  |
| CP09-PR-ME-PO-1030 |  | Filtration pump - Material PO-Issued | 5d | 2025-05-18 A | 2025-05-22 A | CP09-PR-ME-A-1030 | 100% |  |
| CP09-PR-ME-PO-1040 |  | Chemical dosing system -- Material PO-Issued | 5d | 2025-05-18 A | 2025-05-22 A | CP09-PR-ME-A-1040 | 100% |  |
| CP09-PR-ME-PO-1050 |  | Chlorinator tablets - Material PO-Issued | 5d | 2025-05-18 A | 2025-05-22 A | CP09-PR-ME-A-1050 | 100% |  |
| CP09-PR-ME-PO-1060 |  | GUTTER DRAIN -Material PO-Issued | 5d | 2025-05-18 A | 2025-05-22 A | CP09-PR-ME-A-1060 | 100% |  |
| CP09-PR-ME-PO-1070 |  | Submersible pump - Material PO-Issued | 5d | 2025-05-18 A | 2025-05-22 A | CP09-PR-ME-A-1070 | 100% |  |
| CP09-PR-ME-PO-1080 |  | Ventilation Exahust Fan - Material PO-Issued | 5d | 2025-05-18 A | 2025-05-22 A | CP09-PR-ME-A-1080 | 100% |  |
|  | 9 | **Play Field Equipment** |  | 2025-05-18 | 2026-01-16 |  |  |  |
|  | 1 | **Fitness Equipment** |  | 2026-01-12 | 2026-01-16 |  |  |  |
| CP09-PR-PE-PO-1000 |  | OUTDOOR FITNESS-BALANCE BOARD - Material PO-Issued | 5d | 2026-01-12 A | 2026-01-16 A | CP09-PR-PE-A-1000 | 100% |  |
| CP09-PR-PE-PO-1010 |  | OUTDOOR FITNESS-DOUBLE CHEST PRESS - Material PO-Issued | 5d | 2026-01-12 A | 2026-01-16 A | CP09-PR-PE-A-1010 | 100% |  |
| CP09-PR-PE-PO-1020 |  | OUTDOOR FITNESS-LEG LIFT & PULL UP - Material PO-Issued | 5d | 2026-01-12 A | 2026-01-16 A | CP09-PR-PE-A-1020 | 100% |  |
| CP09-PR-PE-PO-1030 |  | OUTDOOR FITNESS-STRETCH STATION - Material PO-Issued | 5d | 2026-01-12 A | 2026-01-16 A | CP09-PR-PE-A-1030 | 100% |  |
|  | 2 | **Kids playground equipment** |  | 2025-05-18 | 2025-05-22 |  |  |  |
| CP09-PR-PE-PO-1040 |  | Log Pile - Material PO-Issued | 5d | 2025-05-18 A | 2025-05-22 A | CP09-PR-PE-A-1040 | 100% |  |
| CP09-PR-PE-PO-1050 |  | Log Tangle - Material PO-Issued | 5d | 2025-05-18 A | 2025-05-22 A | CP09-PR-PE-A-1050 | 100% |  |
| CP09-PR-PE-PO-1060 |  | Offset Ladder Grid - Material PO-Issued | 5d | 2025-05-18 A | 2025-05-22 A | CP09-PR-PE-A-1060 | 100% |  |
| CP09-PR-PE-PO-1070 |  | Single Bay Belt Swing - Material PO-Issued | 5d | 2025-05-18 A | 2025-05-22 A | CP09-PR-PE-A-1070 | 100% |  |
| CP09-PR-PE-PO-1080 |  | Stepper Cluster - Material PO-Issued | 5d | 2025-05-18 A | 2025-05-22 A | CP09-PR-PE-A-1080 | 100% |  |
| CP09-PR-PE-PO-1090 |  | Wobble Board /Small - Material PO-Issued | 5d | 2025-05-18 A | 2025-05-22 A | CP09-PR-PE-A-1090 | 100% |  |
| CP09-PR-PE-PO-1100 |  | Wobble Board /Large - Material PO-Issued | 5d | 2025-05-18 A | 2025-05-22 A | CP09-PR-PE-A-1100 | 100% |  |
|  | 7 | **Landscape Furntiure** |  | 2025-05-18 | 2025-05-22 |  |  |  |
| CP09-PR-FN-PO-1000 |  | Pitch Pine Picnic Table - Material PO-Issued | 5d | 2025-05-18 A | 2025-05-22 A | CP09-PR-FN-A-1000 | 100% |  |
| CP09-PR-FN-PO-1010 |  | Crcular Cast-iron tree grate - Material PO-Issued | 5d | 2025-05-18 A | 2025-05-22 A | CP09-PR-FN-A-1010 | 100% |  |
| CP09-PR-FN-PO-1020 |  | Aluminium Cabana for Pool Shading - Material PO-Issued | 5d | 2025-05-18 A | 2025-05-22 A | CP09-PR-FN-A-1020 | 100% |  |
| CP09-PR-FN-PO-1030 |  | Pitch Pine Benchs - Material PO-Issued | 5d | 2025-05-18 A | 2025-05-22 A | CP09-PR-FN-A-1030 | 100% |  |
| CP09-PR-FN-PO-1040 |  | Polyester Hammocks - Material PO-Issued | 5d | 2025-05-18 A | 2025-05-22 A | CP09-PR-FN-A-1040 | 100% |  |
| CP09-PR-FN-PO-1050 |  | Adult Play Swing - Material PO-Issued | 5d | 2025-05-18 A | 2025-05-22 A | CP09-PR-FN-A-1050 | 100% |  |
| CP09-PR-FN-PO-1060 |  | Aluminum Trash Bin - Material PO-Issued | 5d | 2025-05-18 A | 2025-05-22 A | CP09-PR-FN-A-1060 | 100% |  |
| CP09-PR-FN-PO-1070 |  | Tensile Teflon Tent - Material PO-Issued | 5d | 2025-05-18 A | 2025-05-22 A | CP09-PR-FN-A-1070 | 100% |  |
| CP09-PR-FN-PO-1080 |  | Lanscape Edging ( Rubber) - Material PO-Issued | 5d | 2025-05-18 A | 2025-05-22 A | CP09-PR-FN-A-1080 | 100% |  |
|  | 4 | **Material Delivery** |  | 2024-08-12 | 2026-07-05 |  |  |  |
|  | 1 | **Civil Materials** |  | 2024-08-12 | 2026-06-09 |  |  |  |
| CP09-PR-CV-DY-1000 |  | Concrete - Material Delivery | 14d | 2024-08-12 A | 2024-08-21 A | CP09-PR-CV-PO-1000 | 100% |  |
| CP09-PR-CV-DY-1010 |  | Waterproofing - Material Delivery | 14d | 2024-08-19 A | 2024-08-28 A | CP09-PR-CV-PO-1010 | 100% |  |
| CP09-PR-CV-DY-1020 |  | Block - Material Delivery | 14d | 2025-05-18 A | 2025-05-22 A | CP09-PR-CV-PO-1020 | 100% |  |
| CP09-PR-CV-DY-1070 |  | Plaster Accessories -Material Delivery | 14d | 2025-08-22 A | 2025-08-26 A | CP09-PR-CV-PO-1070 | 100% |  |
| CP09-PR-CV-DY-1130 |  | Rebars - Material Delivery | 15d | 2025-08-22 A | 2025-08-26 A | CP09-PR-CV-PO-1130 | 100% |  |
| CP09-PR-CV-DY-1110 |  | Epoxy for Machine Room - Material Delivery | 14d | 2025-10-20 A | 2025-10-24 A | CP09-PR-CV-PO-1110 | 100% |  |
| CP09-PR-CV-DY-1080 |  | Emulsion Paint - Material Delivery | 14d | 2026-01-12 A | 2026-01-16 A | CP09-PR-CV-PO-1080 | 100% |  |
| CP09-PR-CV-DY-1120 |  | Marble for Cheek & Retainig Walls Material Delivery | 14d | 2026-05-24 | 2026-06-06 | CP09-PR-CV-PO-1120 |  | -236.25d |
| CP09-PR-CV-DY-1030 |  | Mosaic - Material Delivery | 14d | 2026-05-27 | 2026-06-09 | CP09-PR-CV-PO-1030 |  | -204.56d |
| CP09-PR-CV-DY-1040 |  | Granite for Swimming Pool - Material Delivery | 14d | 2026-05-27 | 2026-06-09 | CP09-PR-CV-PO-1040 |  | -191.31d |
| CP09-PR-CV-DY-1050 |  | Stanless Steel Ladders for Swimming Pool - Material Delivery | 14d | 2026-05-27 | 2026-06-09 | CP09-PR-CV-PO-1050 |  | -182.81d |
| CP09-PR-CV-DY-1060 |  | Stanless Steel Handrial for Swimming Pool - Material Delivery | 14d | 2026-05-27 | 2026-06-09 | CP09-PR-CV-PO-1060 |  | -179d |
| CP09-PR-CV-DY-1090 |  | Geotextile & Geocomposit for Machine Room - Material Delivery | 14d | 2026-05-27 | 2026-06-09 | CP09-PR-CV-PO-1090 |  | -177d |
| CP09-PR-CV-DY-1100 |  | Drainage Gravel for Machine Room - Material Delivery | 14d | 2026-05-27 | 2026-06-09 | CP09-PR-CV-PO-1100 |  | -177d |
|  | 2 | **Hardscape Materials** |  | 2025-05-18 | 2026-06-09 |  |  |  |
| CP09-PR-HD-DY-1080 |  | Flush Curb - Material Delivery | 9.38d | 2025-05-18 A | 2025-05-22 A | CP09-PR-HD-PO-1080 | 100% |  |
| CP09-PR-HD-DY-1180 |  | Interlocks -Material Delivery | 9.38d | 2025-05-18 A | 2025-05-22 A | CP09-PR-HD-PO-1180 | 100% |  |
| CP09-PR-HD-DY-1000 |  | Concrete Exposed Aggeregate - Material Delivery | 14d | 2025-08-22 A | 2025-08-26 A | CP09-PR-HD-PO-1000 | 100% |  |
| CP09-PR-HD-DY-1010 |  | Marble Paving - - Material Delivery | 14d | 2025-08-22 A | 2025-08-26 A | CP09-PR-HD-PO-1010 | 100% |  |
| CP09-PR-HD-DY-1060 |  | Geotextile Sheets - Material Delivery | 14d | 2025-08-22 A | 2025-08-26 A | CP09-PR-HD-PO-1060 | 100% |  |
| CP09-PR-HD-DY-1070 |  | Clean sand layer - Material Delivery | 14d | 2025-08-22 A | 2025-08-26 A | CP09-PR-HD-PO-1070 | 100% |  |
| CP09-PR-HD-DY-1090 |  | Crush Stone below Interlock - Material Delivery | 14d | 2025-08-22 A | 2025-08-26 A | CP09-PR-HD-PO-1090 | 100% |  |
| CP09-PR-HD-DY-1100 |  | Marble for Steps - Material Delivery | 14d | 2025-08-22 A | 2025-08-26 A | CP09-PR-HD-PO-1100 | 100% |  |
| CP09-PR-HD-DY-1020 |  | WPC - Material Delivery | 14d | 2026-01-12 A | 2026-01-16 A | CP09-PR-HD-PO-1020 | 100% |  |
| CP09-PR-HD-DY-1030 |  | Gravel Layer - Material Delivery | 14d | 2026-05-27 | 2026-06-09 | CP09-PR-HD-PO-1030 |  | -215.38d |
| CP09-PR-HD-DY-1040 |  | Crushed Dolomite stone - Material Delivery | 14d | 2026-05-27 | 2026-06-09 | CP09-PR-HD-PO-1040 |  | -205.56d |

| ID | WBS | Task | Duration | Start | Finish | Predecessors | Complete | Total float |
| --- | --- | --- | --- | --- | --- | --- | --- | --- |
| CP09-PR-HD-DY-1050 |  | Loose gravel - Material Delivery | 14d | 2026-05-27 | 2026-06-09 | CP09-PR-HD-PO-1050 |  | -213.38d |
| CP09-PR-HD-DY-1110 |  | Marble for Seat - Material Delivery | 14d | 2026-05-27 | 2026-06-09 | CP09-PR-HD-PO-1110 |  | -226d |
| CP09-PR-HD-DY-1120 |  | Mica - Material Delivery | 14d | 2026-05-27 | 2026-06-09 | CP09-PR-HD-PO-1120 |  | -199.75d |
| CP09-PR-HD-DY-1130 |  | Blast stone blocks - Material Delivery | 14d | 2026-05-27 | 2026-06-09 | CP09-PR-HD-PO-1130 |  | -181.81d |
| CP09-PR-HD-DY-1140 |  | Loose Rounded Pebbles - Material Delivery | 14d | 2026-05-27 | 2026-06-09 | CP09-PR-HD-PO-1140 |  | -168d |
| CP09-PR-HD-DY-1150 |  | Shower Head - Material Delivery | 14d | 2026-05-27 | 2026-06-09 | CP09-PR-HD-PO-1150 |  | -161d |
| CP09-PR-HD-DY-1160 |  | Stainless Handrail - Material Delivery | 14d | 2026-05-27 | 2026-06-09 | CP09-PR-HD-PO-1160 |  | -204.62d |
| CP09-PR-HD-DY-1170 |  | Glass Handrail - Material Delivery | 14d | 2026-05-27 | 2026-06-09 | CP09-PR-HD-PO-1170 |  | -204.62d |
|  | 8 | **Sinage** |  | 2025-08-22 | 2025-08-26 |  |  |  |
| CP09-PR-SN-DY-1000 |  | STREET DIRECTIONAL SIGN - Material Delivery | 19.69d | 2025-08-22 A | 2025-08-26 A | CP09-PR-SN-PO-1000 | 100% |  |
| CP09-PR-SN-DY-1010 |  | DIRECTIONAL SIGN - Material Delivery | 19.69d | 2025-08-22 A | 2025-08-26 A | CP09-PR-SN-PO-1010 | 100% |  |
| CP09-PR-SN-DY-1020 |  | UNIT ID SIGN - Material Delivery | 19.69d | 2025-08-22 A | 2025-08-26 A | CP09-PR-SN-PO-1020 | 100% |  |
| CP09-PR-SN-DY-1030 |  | RULES SIGN - Material Delivery | 19.69d | 2025-08-22 A | 2025-08-26 A | CP09-PR-SN-PO-1030 | 100% |  |
| CP09-PR-SN-DY-1040 |  | IDENTIFICATION SIGN - Material Delivery | 19.69d | 2025-08-22 A | 2025-08-26 A | CP09-PR-SN-PO-1040 | 100% |  |
|  | 4 | **Electrical Materials** |  | 2025-05-18 | 2026-06-10 |  |  |  |
|  | 1 | **Swimming pool & MR** |  | 2025-05-18 | 2026-06-10 |  |  |  |
| CP09-PR-EL-DY-1030 |  | Power Cables & Wires - Material Delivery | 28.12d | 2025-05-18 A | 2025-05-22 A | CP09-PR-EL-PO-1030 | 100% |  |
| CP09-PR-EL-DY-1000 |  | Conduits - Material Delivery | 14.06d | 2026-05-27 | 2026-06-10 | CP09-PR-EL-PO-1000 |  | -242.06d |
| CP09-PR-EL-DY-1010 |  | Cable tray - Material Delivery | 14.06d | 2026-05-27 | 2026-06-10 | CP09-PR-EL-PO-1010 |  | -242.06d |
| CP09-PR-EL-DY-1020 |  | Panel boards - Material Delivery | 14.06d | 2026-05-27 | 2026-06-10 | CP09-PR-EL-PO-1020 |  | -225.06d |
| CP09-PR-EL-DY-1040 |  | Earthing System - - Material Delivery | 14.06d | 2026-05-27 | 2026-06-10 | CP09-PR-EL-PO-1040 |  | -191.06d |
| CP09-PR-EL-DY-1050 |  | Lighting Outlets , Switches Fixture - Material Delivery | 14.06d | 2026-05-27 | 2026-06-10 | CP09-PR-EL-PO-1050 |  | -197.06d |
| CP09-PR-EL-DY-1140 |  | Underwater Recessed Spotlight | 14.06d | 2026-05-27 | 2026-06-10 | CP09-PR-EL-PO-1140 |  | -197.06d |
|  | 2 | **Landscape** |  | 2025-07-01 | 2026-01-16 |  |  |  |
| CP09-PR-EL-DY-1060 |  | Power Cables for Landscape Lighting - Material Delivery | 45d | 2025-07-01 A | 2025-09-05 A | CP09-PR-EL-PO-1060 | 100% |  |
| CP09-PR-EL-DY-1080 |  | Lighting Pole - Material Delivery | 30d | 2026-01-12 A | 2026-01-16 A | CP09-PR-EL-PO-1080 | 100% |  |
|  | 3 | **Mechnical Materials** |  | 2025-05-18 | 2025-05-22 |  |  |  |
|  | 1 | **Swimmimng Pool & MR** |  | 2025-05-18 | 2025-05-22 |  |  |  |
| CP09-PR-ME-DY-1000 |  | UPVC pipes,Fitting -Material Delivery | 19.69d | 2025-05-18 A | 2025-05-22 A | CP09-PR-ME-PO-1000 | 100% |  |
|  | 6 | **Irrigation Materials** |  | 2025-05-18 | 2025-08-26 |  |  |  |
| CP09-PR-IR-DY-1000 |  | UPVC pipes for Sub-main Line & Lateral - Material Delivery | 15d | 2025-05-18 A | 2025-05-22 A | CP09-PR-IR-PO-1000 | 100% |  |
| CP09-PR-IR-DY-1010 |  | Drip line-Material Delivery | 15d | 2025-08-22 A | 2025-08-26 A | CP09-PR-IR-PO-1010 | 100% |  |
| CP09-PR-IR-DY-1020 |  | Rings -Material Delivery | 60d | 2025-08-22 A | 2025-08-26 A | CP09-PR-IR-PO-1020 | 100% |  |
| CP09-PR-IR-DY-1030 |  | Valves -Material Delivery | 60d | 2025-08-22 A | 2025-08-26 A | CP09-PR-IR-PO-1030 | 100% |  |
| CP09-PR-IR-DY-1040 |  | Pop up Multi ray sprinkler-Material Delivery | 60d | 2025-08-22 A | 2025-08-26 A | CP09-PR-IR-PO-1040 | 100% |  |
| CP09-PR-IR-DY-1050 |  | Electrical Solenoid Valve -Material Delivery | 60d | 2025-08-22 A | 2025-08-26 A | CP09-PR-IR-PO-1050 | 100% |  |
| CP09-PR-IR-DY-1060 |  | Test Controller -Material Delivery | 60d | 2025-08-22 A | 2025-08-26 A | CP09-PR-IR-PO-1060 | 100% |  |
| CP09-PR-IR-DY-1070 |  | Direct Cables -Material Delivery | 60d | 2025-08-22 A | 2025-08-26 A | CP09-PR-IR-PO-1070 | 100% |  |
| CP09-PR-IR-DY-1080 |  | Decoder one station - Material Delivery | 60d | 2025-08-22 A | 2025-08-26 A | CP09-PR-IR-PO-1080 | 100% |  |
|  | 5 | **Plantings Materials** |  | 2025-07-06 | 2026-06-22 |  |  |  |
| CP09-PR-PN-DY-1000 |  | Sweet Sand for all plants - Material Delivery | 30d | 2025-07-06 A | 2025-07-10 A | CP09-PR-PN-PO-1000 | 100% |  |
| CP09-PR-PN-DY-1010 |  | Organic Manure - Material Delivery | 30d | 2025-07-06 A | 2025-07-10 A | CP09-PR-PN-PO-1010 FS+7d | 100% |  |
| CP09-PR-PN-DY-1020 |  | Large Trees - Material Delivery | 30d | 2025-07-06 A | 2025-07-10 A | CP09-PR-PN-PO-1020 FS+7d | 100% |  |
| CP09-PR-PN-DY-1060 |  | Shrubs - Material Delivery | 30d | 2025-07-06 A | 2025-07-10 A | CP09-PR-PN-PO-1060 FS+7d | 100% |  |
| CP09-PR-PN-DY-1070 |  | Ground Covers - Material Delivery | 30d | 2025-07-06 A | 2025-07-10 A | CP09-PR-PN-PO-1070 FS+7d | 100% |  |
| CP09-PR-PN-DY-1080 |  | Succulents - Material Delivery | 30d | 2025-07-06 A | 2025-07-10 A | CP09-PR-PN-PO-1080 FS+7d | 100% |  |
| CP09-PR-PN-DY-1030 |  | Vines & Climbers - Material Delivery | 30d | 2025-10-20 A | 2025-10-24 A | CP09-PR-PN-PO-1030 FS+7d | 100% |  |
| CP09-PR-PN-DY-1040 |  | Lawn - Material Delivery | 30d | 2025-10-20 A | 2025-10-24 A | CP09-PR-PN-PO-1040 FS+7d | 100% |  |
| CP09-PR-PN-DY-1050 |  | Ornamental grass - Material Delivery | 30d | 2026-05-24 | 2026-06-22 | CP09-PR-PN-PO-1050 FS+7d |  | -202.38d |
|  | 10 | **Long Lead Item** |  | 2025-05-18 | 2026-07-05 |  |  |  |
|  | 2 | **Mechnical Material** |  | 2025-05-18 | 2025-05-22 |  |  |  |
| CP09-PR-ME-DY-1010 |  | Valves - Material Delivery | 28.12d | 2025-05-18 A | 2025-05-22 A | CP09-PR-ME-PO-1010 | 100% |  |
| CP09-PR-ME-DY-1020 |  | Sand Filter - Material Delivery | 56.25d | 2025-05-18 A | 2025-05-22 A | CP09-PR-ME-PO-1020 | 100% |  |
| CP09-PR-ME-DY-1030 |  | Filtration pump - Material Delivery | 56.25d | 2025-05-18 A | 2025-05-22 A | CP09-PR-ME-PO-1030 | 100% |  |
| CP09-PR-ME-DY-1040 |  | Chemical dosing system -- Material Delivery | 56.25d | 2025-05-18 A | 2025-05-22 A | CP09-PR-ME-PO-1040 | 100% |  |
| CP09-PR-ME-DY-1050 |  | Chlorinator tablets - Material Delivery | 56.25d | 2025-05-18 A | 2025-05-22 A | CP09-PR-ME-PO-1050 | 100% |  |
| CP09-PR-ME-DY-1060 |  | GUTTER DRAIN -Material Delivery | 56.25d | 2025-05-18 A | 2025-05-22 A | CP09-PR-ME-PO-1060 | 100% |  |
| CP09-PR-ME-DY-1070 |  | Submersible pump - Material Delivery | 56.25d | 2025-05-18 A | 2025-05-22 A | CP09-PR-ME-PO-1070 | 100% |  |
| CP09-PR-ME-DY-1080 |  | Ventilation Exahust Fan - Material Delivery | 42.19d | 2025-05-18 A | 2025-05-22 A | CP09-PR-ME-PO-1080 | 100% |  |
|  | 1 | **Electrical Material** |  | 2026-01-12 | 2026-06-27 |  |  |  |
| CP09-PR-EL-DY-1090 |  | Bollard for Walkways - Material Delivery | 30d | 2026-01-12 A | 2026-01-16 A | CP09-PR-EL-PO-1090 | 100% |  |
| CP09-PR-EL-DY-1070 |  | Connecting Pillars - Material Delivery | 30d | 2026-05-29 | 2026-06-27 | CP09-PR-EL-PO-1070 |  | -197d |
| CP09-PR-EL-DY-1100 |  | Surface Mountaed Down Light for Pool Cabans - Material Delivery | 30d | 2026-05-29 | 2026-06-27 | CP09-PR-EL-PO-1100 |  | -195.38d |
| CP09-PR-EL-DY-1110 |  | Diffused Wall Recessed Step - Material Delivery | 30d | 2026-05-29 | 2026-06-27 | CP09-PR-EL-PO-1110 |  | -195.38d |
| CP09-PR-EL-DY-1120 |  | Inground Uplight For Palms - Material Delivery | 30d | 2026-05-29 | 2026-06-27 | CP09-PR-EL-PO-1120 |  | -195.38d |
| CP09-PR-EL-DY-1130 |  | Projectors for Trees - Material Delivery | 30d | 2026-05-29 | 2026-06-27 | CP09-PR-EL-PO-1130 |  | -195.38d |
| CP09-PR-EL-DY-1150 |  | Outlet lighting fixtures - Material Delivery | 30d | 2026-05-29 | 2026-06-27 | CP09-PR-EL-PO-1150 |  | -189.38d |
|  | 9 | **Play Field Equipment** |  | 2026-01-12 | 2026-07-05 |  |  |  |
|  | 1 | **Fitness Equipment** |  | 2026-01-12 | 2026-01-16 |  |  |  |
| CP09-PR-PE-DY-1000 |  | OUTDOOR FITNESS-BALANCE BOARD - Material Delivery | 42.19d | 2026-01-12 A | 2026-01-16 A | CP09-PR-PE-PO-1000 | 100% |  |

| ID | WBS | Task | Duration | Start | Finish | Predecessors | Complete | Total float |
| --- | --- | --- | --- | --- | --- | --- | --- | --- |
| CP09-PR-PE-DY-1010 |  | OUTDOOR FITNESS-DOUBLE CHEST PRESS - Material Delivery | 42.19d | 2026-01-12 A | 2026-01-16 A | CP09-PR-PE-PO-1010 | 100% |  |
| CP09-PR-PE-DY-1020 |  | OUTDOOR FITNESS-LEG LIFT & PULL UP - Material Delivery | 42.19d | 2026-01-12 A | 2026-01-16 A | CP09-PR-PE-PO-1020 | 100% |  |
| CP09-PR-PE-DY-1030 |  | OUTDOOR FITNESS-STRETCH STATION - Material Delivery | 42.19d | 2026-01-12 A | 2026-01-16 A | CP09-PR-PE-PO-1030 | 100% |  |
|  | 2 | **Kids playground equipment** |  | 2026-05-24 | 2026-07-05 |  |  |  |
| CP09-PR-PE-DY-1040 |  | Log Pile - Material Delivery | 42.19d | 2026-05-24 | 2026-07-05 | CP09-PR-PE-PO-1040 |  | -206.19d |
| CP09-PR-PE-DY-1050 |  | Log Tangle - Material Delivery | 42.19d | 2026-05-24 | 2026-07-05 | CP09-PR-PE-PO-1050 |  | -206.19d |
| CP09-PR-PE-DY-1060 |  | Offset Ladder Grid - Material Delivery | 42.19d | 2026-05-24 | 2026-07-05 | CP09-PR-PE-PO-1060 |  | -206.19d |
| CP09-PR-PE-DY-1070 |  | Single Bay Belt Swing - Material Delivery | 42.19d | 2026-05-24 | 2026-07-05 | CP09-PR-PE-PO-1070 |  | -206.19d |
| CP09-PR-PE-DY-1080 |  | Stepper Cluster - Material Delivery | 42.19d | 2026-05-24 | 2026-07-05 | CP09-PR-PE-PO-1080 |  | -206.19d |
| CP09-PR-PE-DY-1090 |  | Wobble Board /Small - Material Delivery | 42.19d | 2026-05-24 | 2026-07-05 | CP09-PR-PE-PO-1090 |  | -206.19d |
| CP09-PR-PE-DY-1100 |  | Wobble Board /Large - Material Delivery | 42.19d | 2026-05-24 | 2026-07-05 | CP09-PR-PE-PO-1100 |  | -206.19d |
|  | 7 | **Landscape Furntiure** |  | 2025-05-18 | 2026-06-21 |  |  |  |
| CP09-PR-FN-DY-1000 |  | Pitch Pine Picnic Table - Material Delivery | 28.12d | 2025-05-18 A | 2025-05-22 A | CP09-PR-FN-PO-1000 | 100% |  |
| CP09-PR-FN-DY-1030 |  | Pitch Pine Benchs - Material Delivery | 28.12d | 2025-05-18 A | 2025-05-22 A | CP09-PR-FN-PO-1030 | 100% |  |
| CP09-PR-FN-DY-1060 |  | Aluminum Trash Bin - Material Delivery | 28.12d | 2025-05-18 A | 2025-05-22 A | CP09-PR-FN-PO-1060 | 100% |  |
| CP09-PR-FN-DY-1040 |  | Polyester Hammocks - Material Delivery | 28.12d | 2025-08-22 A | 2025-08-26 A | CP09-PR-FN-PO-1040 | 100% |  |
| CP09-PR-FN-DY-1050 |  | Adult Play Swing - Material Delivery | 28.12d | 2025-08-22 A | 2025-08-26 A | CP09-PR-FN-PO-1050 | 100% |  |
| CP09-PR-FN-DY-1070 |  | Tensile Teflon Tent - Material Delivery | 28.12d | 2025-08-22 A | 2025-08-26 A | CP09-PR-FN-PO-1070 | 100% |  |
| CP09-PR-FN-DY-1010 |  | Crcular Cast-iron tree grate - Material Delivery | 28.12d | 2026-05-24 | 2026-06-21 | CP09-PR-FN-PO-1010 |  | -194.5d |
| CP09-PR-FN-DY-1020 |  | Aluminium Cabana for Pool Shading - Material Delivery | 28.12d | 2026-05-24 | 2026-06-21 | CP09-PR-FN-PO-1020 |  | -199.12d |
| CP09-PR-FN-DY-1080 |  | Lanscape Edging ( Rubber) - Material Delivery | 28.12d | 2026-05-24 | 2026-06-21 | CP09-PR-FN-PO-1080 |  | -194.5d |
|  | 2 | **Engineering** |  | 2023-03-05 | 2026-01-16 |  |  |  |
|  | 14 | **Terrace # 01** |  | 2023-03-05 | 2025-08-22 |  |  |  |
|  | 2 | **Shopdrwaings Submittal** |  | 2023-03-05 | 2025-08-22 |  |  |  |
|  | 2 | **Earth Work** |  | 2024-02-10 | 2024-05-20 |  |  |  |
| CP09-EN-TR1-S-1470 |  | Sub Garde shop drawing Submittal | 3d | 2024-02-10 A | 2024-05-20 A | CP09-CLD-1010 | 100% |  |
|  | 3 | **Cheek & Retaning Wall** |  | 2024-05-18 | 2024-11-10 |  |  |  |
| CP09-EN-TR1-S-1480 |  | Cheek & Retaning Wall Concrete dimension shop drawing Submittal | 3d | 2024-05-18 A | 2024-11-10 A | CP09-CLD-1010 | 100% |  |
| CP09-EN-TR1-S-1490 |  | Cheek & Retaning Wall Steel reinforcement shop drawing Submittal | 6.56d | 2024-05-18 A | 2024-11-10 A | CP09-EN-TR1-S-1480 | 100% |  |
| CP09-EN-TR1-S-1500 |  | Cheek & Retaning Wall Water Proofing Works shop drawing Submittal | 6.56d | 2024-05-18 A | 2024-07-02 A | CP09-EN-TR1-S-1490 | 100% |  |
| CP09-EN-TR1-S-1510 |  | Cheek & Retaning Wall Masonary Works shop drawing Submittal | 6.56d | 2024-05-18 A | 2024-07-02 A | CP09-EN-TR1-S-1500 | 100% |  |
| CP09-EN-TR1-S-1520 |  | Cheek & Retaning Wall Marble Works shop drawing Submittal | 6.56d | 2024-05-18 A | 2024-07-02 A | CP09-EN-TR1-S-1510 | 100% |  |
|  | 4 | **Hardscape Works** |  | 2023-03-05 | 2025-08-22 |  |  |  |
| CP09-EN-TR1-S-1600 |  | Curb Works Shop Drawing Submittal | 5d | 2023-03-05 A | 2024-04-29 A | CP09-EN-TR1-S-1470 | 100% |  |
| CP09-EN-TR1-S-1610 |  | Interlocking Paving Works Shop Drawing Submittal | 6.56d | 2024-03-05 A | 2024-04-29 A | CP09-PR-HD-A-1090, CP09-PR-HD-A-1180 | 100% |  |
| CP09-EN-TR1-S-1530 |  | Concrete Exposed Aggregate - Side Walks Shop Drawing Submittal | 6.56d | 2024-04-30 A | 2024-09-12 A | CP09-PR-HD-A-1000 | 100% |  |
| CP09-EN-TR1-S-1540 |  | Marble Paving - Side Walks Works Shop Drawing Submittal | 6.56d | 2024-04-30 A | 2024-09-28 A | CP09-PR-HD-A-1010 | 100% |  |
| CP09-EN-TR1-S-1560 |  | Gravel - Side Walks Works Shop Drawing Submittal | 6.56d | 2024-04-30 A | 2024-09-28 A | CP09-PR-HD-A-1030 | 100% |  |
| CP09-EN-TR1-S-1570 |  | Crushed Stone - Side Walks Works Shop Drawing Submittal | 6.56d | 2024-04-30 A | 2024-09-28 A | CP09-PR-HD-A-1040 | 100% |  |
| CP09-EN-TR1-S-1580 |  | Loose Gravel - Side Walks Works Shop Drawing Submittal | 6.56d | 2024-04-30 A | 2024-09-28 A | CP09-PR-HD-A-1050 | 100% |  |
| CP09-EN-TR1-S-1590 |  | Clean sand layer - Side Walks Works Shop Drawing Submittal | 7d | 2024-04-30 A | 2024-09-28 A | CP09-PR-HD-A-1060, CP09-PR-HD-A-1070 | 100% |  |
| CP09-EN-TR1-S-1620 |  | Steps Works shop Shop Drawing Submittal | 6.56d | 2024-05-12 A | 2024-10-02 A | CP09-PR-HD-A-1100 | 100% |  |
| CP09-EN-TR1-S-1630 |  | Seats Works Shop Shop Drawing Submittal | 6.56d | 2024-05-18 A | 2024-07-02 A | CP09-PR-HD-A-1110 | 100% |  |
| CP09-EN-TR1-S-1660 |  | Landscape Furntiure Shop Drawing Submittal | 6.56d | 2024-08-11 A | 2025-08-22 A | CP09-PR-FN-A-1000, CP09-PR-FN-A-1010, CP09-PR-FN-A-1020, CP09-PR-FN-A-1030, CP09-PR-FN-A-1040, CP09-PR-FN-A-1050, CP09-PR-FN-A-1060, CP09-PR-FN-A-1070, CP09-PR-FN-A-1080 | 100% |  |
| CP09-EN-TR1-S-1640 |  | Pool Shower Works Shop Drawing Submittal | 6.56d | 2025-08-18 A | 2025-08-22 A | CP09-PR-HD-A-1120, CP09-PR-HD-A-1130, CP09-PR-HD-A-1140, CP09-PR-HD-A-1150 | 100% |  |
| CP09-EN-TR1-S-1650 |  | Handrails Works Shop Drawing Submittal | 6.56d | 2025-08-18 A | 2025-08-22 A | CP09-PR-HD-A-1160, CP09-PR-HD-A-1170 | 100% |  |
|  | 5 | **Electrical Works** |  | 2024-08-24 | 2024-09-18 |  |  |  |
| CP09-EN-TR1-S-1670 |  | Power Cables Shop Drawing Submittal | 6.56d | 2024-08-24 A | 2024-09-18 A | CP09-PR-EL-A-1060 | 100% |  |
| CP09-EN-TR1-S-1680 |  | Connecting Pillars Shop Drawing Submittal | 6.56d | 2024-08-24 A | 2024-09-18 A | CP09-PR-EL-A-1070 | 100% |  |
|  | 6 | **Sinage** |  | 2024-07-29 | 2025-07-10 |  |  |  |
| CP09-EN-TR1-S-1690 |  | Sinage Shop Drawing Submittal | 5d | 2024-07-29 A | 2025-07-10 A | CP09-PR-SN-S-1010, CP09-PR-SN-A-1000 FF, CP09-PR-SN-A-1010 FF, CP09-PR-SN-A-1020 FF, CP09-PR-SN-A-1030 FF, CP09-PR-SN-A-1040 FF | 100% |  |
|  | 7 | **Play Field Equipment** |  | 2024-07-07 | 2025-08-22 |  |  |  |
| CP09-EN-TR1-S-1700 |  | Play Field Equipment Shop Drawing Submittal | 6.56d | 2024-07-07 A | 2025-08-22 A | CP09-PR-PE-A-1000, CP09-PR-PE-A-1010, CP09-PR-PE-A-1020, CP09-PR-PE-A-1030, CP09-PR-PE-A-1040, CP09-PR-PE-A-1050, CP09-PR-PE-A-1060, CP09-PR-PE-A-1070, CP09-PR-PE-A-1080, CP09-PR-PE-A-1090, CP09-PR-PE-A-1100 | 100% |  |
|  | 8 | **Irrigation Networks** |  | 2024-02-17 | 2024-02-22 |  |  |  |
| CP09-EN-TR1-S-1710 |  | Irrigation Networks Layout Shop Drawing Submittal | 5d | 2024-02-17 A | 2024-02-22 A | CP09-PR-IR-A-1000, CP09-PR-IR-A-1010, CP09-PR-IR-A-1020, CP09-PR-IR-A-1030, CP09-PR-IR-A-1040, CP09-PR-IR-A-1050, CP09-PR-IR-A-1060, CP09-PR-IR-A-1070, CP09-PR-IR-A-1080 | 100% |  |
|  | 9 | **Planting** |  | 2024-02-10 | 2024-09-29 |  |  |  |
| CP09-EN-TR1-S-1720 |  | Plantings Shop Drawing Submittal | 5d | 2024-02-10 A | 2024-09-29 A | CP09-PR-PN-A-1000, CP09-PR-PN-A-1010, CP09-PR-PN-A-1020, CP09-PR-PN-A-1030, CP09-PR-PN-A-1040, CP09-PR-PN-A-1050, CP09-PR-PN-A-1060, CP09-PR-PN-A-1070, CP09-PR-PN-A-1080 | 100% |  |
|  | 10 | **Lighting** |  | 2024-06-29 | 2024-08-07 |  |  |  |
| CP09-EN-TR1-S-1730 |  | Exterior Lighting for Softlandscape Shop Drawing Submittal | 6.56d | 2024-06-29 A | 2024-08-07 A | CP09-PR-EL-A-1080, CP09-PR-EL-A-1090, CP09-PR-EL-A-1100, CP09-PR-EL-A-1110, CP09-PR-EL-A-1120, CP09-PR-EL-A-1130 | 100% |  |
|  | 1 | **Shopdrwaings Approval** |  | 2024-02-13 | 2025-08-22 |  |  |  |
|  | 2 | **Earth Work** |  | 2024-02-13 | 2024-06-03 |  |  |  |
| CP09-EN-TR1-A-1470 |  | Sub Garde Shopdrwaings-Shop Drawing Approval | 7d | 2024-02-13 A | 2024-06-03 A | CP09-EN-TR1-S-1470 FF+3d, CP09-EN-TR1-S-1470 SS+3d | 100% |  |
|  | 3 | **Cheek & Retaning Wall** |  | 2024-07-02 | 2024-11-19 |  |  |  |
| CP09-EN-TR1-A-1500 |  | Cheek & Retaning Wall Water Proofing Works-Shop Drawing Approval | 14d | 2024-07-02 A | 2024-08-05 A | CP09-EN-TR1-S-1500 FF+7d, CP09-EN-TR1-S-1500 SS+7d | 100% |  |
| CP09-EN-TR1-A-1510 |  | Cheek & Retaning Wall Masonary Works-Shop Drawing Approval | 14d | 2024-07-02 A | 2024-08-05 A | CP09-EN-TR1-S-1510 FF+7d, CP09-EN-TR1-S-1510 SS+7d | 100% |  |
| CP09-EN-TR1-A-1520 |  | Cheek & Retaning Wall Marble Works-Shop Drawing Approval | 14d | 2024-07-02 A | 2024-08-05 A | CP09-EN-TR1-S-1520 FF+7d, CP09-EN-TR1-S-1520 SS+7d | 100% |  |
| CP09-EN-TR1-A-1480 |  | Cheek & Retaning Wall Concrete dimension-ShopDrawing Approval | 14d | 2024-11-10 A | 2024-11-19 A | CP09-EN-TR1-S-1480 FF+7d, CP09-EN-TR1-S-1480 SS+7d | 100% |  |
| CP09-EN-TR1-A-1490 |  | Cheek & Retaning Wall Steel reinforcement-Shop Drawing Approval | 14d | 2024-11-10 A | 2024-11-19 A | CP09-EN-TR1-S-1490 FF+7d, CP09-EN-TR1-S-1490 SS+7d | 100% |  |
|  | 4 | **Hardscape Works** |  | 2024-03-14 | 2025-08-22 |  |  |  |
| CP09-EN-TR1-A-1600 |  | Curb Works-Shop Drawing Approval | 7d | 2024-03-14 A | 2024-05-13 A | CP09-EN-TR1-S-1600 FF+7d, CP09-EN-TR1-S-1600 SS+7d | 100% |  |

| ID | WBS | Task | Duration | Start | Finish | Predecessors | Complete |
| --- | --- | --- | --- | --- | --- | --- | --- |
| CP09-EN-TR1-A-1610 |  | Interlocking Paving Works-Shop Drawing Approval | 14d | 2024-03-14 A | 2024-05-13 A | CP09-EN-TR1-S-1610 FF+7d, CP09-EN-TR1-S-1610 SS+7d | 100% |
| CP09-EN-TR1-A-1630 |  | Seats Works-Shop Drawing Approval | 14d | 2024-07-02 A | 2024-08-05 A | CP09-EN-TR1-S-1630 FF+7d, CP09-EN-TR1-S-1630 SS+7d | 100% |
| CP09-EN-TR1-A-1530 |  | Concrete Exposed Aggregate - Side Walks-Shop Drawing Approval | 14d | 2024-09-12 A | 2024-09-19 A | CP09-EN-TR1-S-1530 FF+7d, CP09-EN-TR1-S-1530 SS+7d | 100% |
| CP09-EN-TR1-A-1590 |  | Clean sand layer - Side Walks Works-Shop Drawing Approval | 14d | 2024-09-28 A | 2024-10-02 A | CP09-EN-TR1-S-1590 FF+7d, CP09-EN-TR1-S-1590 SS+7d | 100% |
| CP09-EN-TR1-A-1540 |  | Marble Paving - Side Walks Works-Shop Drawing Approval | 5d | 2024-09-28 A | 2024-10-02 A | CP09-EN-TR1-S-1540 FF+7d, CP09-EN-TR1-S-1540 SS+7d | 100% |
| CP09-EN-TR1-A-1560 |  | Gravel - Side Walks Works-Shop Drawing Approval | 5d | 2024-09-28 A | 2024-10-02 A | CP09-EN-TR1-S-1560 FF+7d, CP09-EN-TR1-S-1560 SS+7d | 100% |
| CP09-EN-TR1-A-1570 |  | Crushed Stone - Side Walks Works-Shop Drawing Approval | 5d | 2024-09-28 A | 2024-10-02 A | CP09-EN-TR1-S-1570 FF+7d, CP09-EN-TR1-S-1570 SS+7d | 100% |
| CP09-EN-TR1-A-1580 |  | Loose Gravel - Side Walks Works-Shop Drawing Approval | 5d | 2024-09-28 A | 2024-10-02 A | CP09-EN-TR1-S-1580 FF+7d, CP09-EN-TR1-S-1580 SS+7d | 100% |
| CP09-EN-TR1-A-1620 |  | Steps Works-Shop Drawing Approval | 14d | 2024-10-02 A | 2024-10-09 A | CP09-EN-TR1-S-1620 FF+7d, CP09-EN-TR1-S-1620 SS+7d | 100% |
| CP09-EN-TR1-A-1640 |  | Pool Shower Works-Shop Drawing Approval | 14d | 2025-08-18 A | 2025-08-22 A | CP09-EN-TR1-S-1640 FF+7d, CP09-EN-TR1-S-1640 SS+7d | 100% |
| CP09-EN-TR1-A-1650 |  | Handrails Works-Shop Drawing Approval | 14d | 2025-08-18 A | 2025-08-22 A | CP09-EN-TR1-S-1650 FF+7d, CP09-EN-TR1-S-1650 SS+7d | 100% |
| CP09-EN-TR1-A-1660 |  | Landscape Furntiure-Shop Drawing Approval | 14d | 2025-08-18 A | 2025-08-22 A | CP09-EN-TR1-S-1660 FF+7d, CP09-EN-TR1-S-1660 SS+7d | 100% |
|  | 5 | **Electrical Works** |  | 2024-09-18 | 2024-09-22 |  |  |
| CP09-EN-TR1-A-1670 |  | Power Cables-Shop Drawing Approval | 14d | 2024-09-18 A | 2024-09-22 A | CP09-EN-TR1-S-1670 FF+7d, CP09-EN-TR1-S-1670 SS+7d | 100% |
| CP09-EN-TR1-A-1680 |  | Connecting Pillars-Shop Drawing Approval | 14d | 2024-09-18 A | 2024-09-22 A | CP09-EN-TR1-S-1680 FF+7d, CP09-EN-TR1-S-1680 SS+7d | 100% |
|  | 6 | **Sinage** |  | 2025-07-06 | 2025-07-10 |  |  |
| CP09-EN-TR1-A-1690 |  | Sinage-Shop Drawing Approval | 7d | 2025-07-06 A | 2025-07-10 A | CP09-EN-TR1-S-1690 FF+7d, CP09-EN-TR1-S-1690 SS+7d | 100% |
|  | 7 | **Play Field Equipment** |  | 2025-08-18 | 2025-08-22 |  |  |
| CP09-EN-TR1-A-1700 |  | Play Field Equipment-Shop Drawing Approval | 14d | 2025-08-18 A | 2025-08-22 A | CP09-EN-TR1-S-1700 FF+7d, CP09-EN-TR1-S-1700 SS+7d | 100% |
|  | 8 | **Irrigation Networks** |  | 2024-06-14 | 2024-06-29 |  |  |
| CP09-EN-TR1-A-1710 |  | Irrigation Networks Layout -Shop Drawing Approval | 7d | 2024-06-14 A | 2024-06-29 A | CP09-EN-TR1-S-1710 FF+7d, CP09-EN-TR1-S-1710 SS+7d | 100% |
|  | 9 | **Planting** |  | 2024-09-29 | 2024-10-02 |  |  |
| CP09-EN-TR1-A-1720 |  | Plantings -Shop Drawing Approval | 10d | 2024-09-29 A | 2024-10-02 A | CP09-EN-TR1-S-1720 FF+7d, CP09-EN-TR1-S-1720 SS+7d | 100% |
|  | 10 | **Lighting** |  | 2024-08-07 | 2024-08-14 |  |  |
| CP09-EN-TR1-A-1730 |  | Exterior Lighting for Softlandscape-Shop Drawing Approval | 14d | 2024-08-07 A | 2024-08-14 A | CP09-EN-TR1-S-1730 FF+7d, CP09-EN-TR1-S-1730 SS+7d | 100% |
|  | 16 | **Terrace # 02** |  | 2024-02-17 | 2025-08-22 |  |  |
|  | 2 | **Shopdrwaings Submittal** |  | 2024-02-17 | 2025-08-22 |  |  |
|  | 2 | **Earth Work** |  | 2024-03-16 | 2025-07-10 |  |  |
| CP09-EN-TR2-S-1740 |  | Sub Garde shop drawing Submittal | 3d | 2024-03-16 A | 2025-07-10 A | CP09-CLD-1010 | 100% |
|  | 3 | **Cheek & Retaning Wall** |  | 2024-09-17 | 2024-11-10 |  |  |
| CP09-EN-TR2-S-1770 |  | Cheek & Retaning Wall Water Proofing Works shop drawing Submittal | 6.56d | 2024-09-17 A | 2024-09-23 A | CP09-EN-TR2-S-1760 | 100% |
| CP09-EN-TR2-S-1780 |  | Cheek & Retaning Wall Masonary Works shop drawing Submittal | 6.56d | 2024-09-17 A | 2024-09-23 A | CP09-EN-TR2-S-1770 | 100% |
| CP09-EN-TR2-S-1790 |  | Cheek & Retaning Wall Marble Works shop drawing Submittal | 6.56d | 2024-09-17 A | 2024-09-23 A | CP09-EN-TR2-S-1780 | 100% |
| CP09-EN-TR2-S-1750 |  | Cheek & Retaning Wall Concrete dimension shop drawing Submittal | 3d | 2024-11-03 A | 2024-11-10 A | CP09-CLD-1010 | 100% |
| CP09-EN-TR2-S-1760 |  | Cheek & Retaning Wall Steel reinforcement shop drawing Submittal | 6.56d | 2024-11-03 A | 2024-11-10 A | CP09-EN-TR2-S-1750 | 100% |
|  | 4 | **Hardscape Works** |  | 2024-03-05 | 2025-08-22 |  |  |
| CP09-EN-TR2-S-1870 |  | Curb Works Shop Drawing Submittal | 5d | 2024-03-05 A | 2024-05-13 A | CP09-EN-TR2-S-1740 | 100% |
| CP09-EN-TR2-S-1880 |  | Interlocking Paving Works Shop Drawing Submittal | 6.56d | 2024-03-05 A | 2024-05-13 A | CP09-PR-HD-A-1090, CP09-PR-HD-A-1180 | 100% |
| CP09-EN-TR2-S-1800 |  | Concrete Exposed Aggregate - Side Walks Shop Drawing Submittal | 6.56d | 2024-05-26 A | 2024-09-21 A | CP09-PR-HD-A-1000 | 100% |
| CP09-EN-TR2-S-1810 |  | q | 6.56d | 2024-05-26 A | 2024-09-26 A | CP09-PR-HD-A-1010 | 100% |
| CP09-EN-TR2-S-1830 |  | Gravel - Side Walks Works Shop Drawing Submittal | 6.56d | 2024-05-26 A | 2024-09-26 A | CP09-PR-HD-A-1030 | 100% |
| CP09-EN-TR2-S-1840 |  | Crushed Stone - Side Walks Works Shop Drawing Submittal | 6.56d | 2024-05-26 A | 2024-09-26 A | CP09-PR-HD-A-1040 | 100% |
| CP09-EN-TR2-S-1850 |  | Loose Gravel - Side Walks Works Shop Drawing Submittal | 6.56d | 2024-05-26 A | 2024-09-26 A | CP09-PR-HD-A-1050 | 100% |
| CP09-EN-TR2-S-1860 |  | Clean sand layer - Side Walks Works Shop Drawing Submittal | 7d | 2024-05-26 A | 2024-09-26 A | CP09-PR-HD-A-1060, CP09-PR-HD-A-1070 | 100% |
| CP09-EN-TR2-S-1890 |  | Steps Works shop Shop Drawing Submittal | 6.56d | 2024-06-19 A | 2024-06-26 A | CP09-PR-HD-A-1100 | 100% |
| CP09-EN-TR2-S-1900 |  | Seats Works Shop Shop Drawing Submittal | 6.56d | 2024-09-17 A | 2024-09-23 A | CP09-PR-HD-A-1110 | 100% |
| CP09-EN-TR2-S-1910 |  | Pool Shower Works Shop Drawing Submittal | 6.56d | 2025-08-18 A | 2025-08-22 A | CP09-PR-HD-A-1120, CP09-PR-HD-A-1130, CP09-PR-HD-A-1140, CP09-PR-HD-A-1150 | 100% |
| CP09-EN-TR2-S-1920 |  | Handrails Works Shop Drawing Submittal | 6.56d | 2025-08-18 A | 2025-08-22 A | CP09-PR-HD-A-1160, CP09-PR-HD-A-1170 | 100% |
| CP09-EN-TR2-S-1930 |  | Landscape Furntiure Shop Drawing Submittal | 6.56d | 2025-08-18 A | 2025-08-22 A | CP09-PR-FN-A-1000, CP09-PR-FN-A-1010, CP09-PR-FN-A-1020, CP09-PR-FN-A-1030, CP09-PR-FN-A-1040, CP09-PR-FN-A-1050, CP09-PR-FN-A-1060, CP09-PR-FN-A-1070, CP09-PR-FN-A-1080 | 100% |
|  | 5 | **Electrical Works** |  | 2024-10-02 | 2025-05-22 |  |  |
| CP09-EN-TR2-S-1940 |  | Power Cables Shop Drawing Submittal | 6.56d | 2024-10-02 A | 2025-05-22 A | CP09-PR-EL-A-1060 | 100% |
| CP09-EN-TR2-S-1950 |  | Connecting Pillars Shop Drawing Submittal | 6.56d | 2024-10-02 A | 2025-05-22 A | CP09-PR-EL-A-1070 | 100% |
|  | 6 | **Sinage** |  | 2025-07-06 | 2025-07-10 |  |  |
| CP09-EN-TR2-S-1960 |  | Sinage Shop Drawing Submittal | 5d | 2025-07-06 A | 2025-07-10 A | CP09-PR-SN-A-1000 FF, CP09-PR-SN-A-1010 FF, CP09-PR-SN-A-1020 FF, CP09-PR-SN-A-1030 FF, CP09-PR-SN-A-1040 FF, CP09-PR-SN-S-1010 | 100% |
|  | 7 | **Play Field Equipment** |  | 2025-08-18 | 2025-08-22 |  |  |
| CP09-EN-TR2-S-1970 |  | Play Field Equipment Shop Drawing Submittal | 6.56d | 2025-08-18 A | 2025-08-22 A | CP09-PR-PE-A-1000, CP09-PR-PE-A-1010, CP09-PR-PE-A-1020, CP09-PR-PE-A-1030, CP09-PR-PE-A-1040, CP09-PR-PE-A-1050, CP09-PR-PE-A-1060, CP09-PR-PE-A-1070, CP09-PR-PE-A-1080, CP09-PR-PE-A-1090, CP09-PR-PE-A-1100 | 100% |
|  | 8 | **Irrigation Networks** |  | 2024-04-24 | 2024-08-19 |  |  |
| CP09-EN-TR2-S-1980 |  | Irrigation Networks Layout Shop Drawing Submittal | 5d | 2024-04-24 A | 2024-08-19 A | CP09-PR-IR-A-1000, CP09-PR-IR-A-1010, CP09-PR-IR-A-1020, CP09-PR-IR-A-1030, CP09-PR-IR-A-1040, CP09-PR-IR-A-1050, CP09-PR-IR-A-1060, CP09-PR-IR-A-1070, CP09-PR-IR-A-1080 | 100% |
|  | 9 | **Planting** |  | 2024-02-17 | 2024-10-01 |  |  |
| CP09-EN-TR2-S-1990 |  | Plantings Shop Drawing Submittal | 5d | 2024-02-17 A | 2024-10-01 A | CP09-PR-PN-A-1000, CP09-PR-PN-A-1010, CP09-PR-PN-A-1020, CP09-PR-PN-A-1030, CP09-PR-PN-A-1040, CP09-PR-PN-A-1050, CP09-PR-PN-A-1060, CP09-PR-PN-A-1070, CP09-PR-PN-A-1080 | 100% |
|  | 10 | **Lighting** |  | 2024-08-10 | 2024-08-10 |  |  |
| CP09-EN-TR2-S-2000 |  | Exterior Lighting for Softlandscape Shop Drawing Submittal | 6.56d | 2024-08-10 A | 2024-08-10 A | CP09-PR-EL-A-1080, CP09-PR-EL-A-1090, CP09-PR-EL-A-1100, CP09-PR-EL-A-1110, CP09-PR-EL-A-1120, CP09-PR-EL-A-1130 | 100% |
|  | 1 | **Shopdrwaings Approval** |  | 2024-03-14 | 2025-08-22 |  |  |
|  | 2 | **Earth Work** |  | 2025-07-06 | 2025-07-10 |  |  |
| CP09-EN-TR2-A-1740 |  | Sub Garde Shopdrwaings-Shop Drawing Approval | 7d | 2025-07-06 A | 2025-07-10 A | CP09-EN-TR2-S-1740 SS+3d, CP09-EN-TR2-S-1740 FF+3d | 100% |
|  | 3 | **Cheek & Retaning Wall** |  | 2024-10-27 | 2024-11-27 |  |  |
| CP09-EN-TR2-A-1770 |  | Cheek & Retaning Wall Water Proofing Works-Shop Drawing Approval | 14d | 2024-10-27 A | 2024-11-03 A | CP09-EN-TR2-S-1770 SS+7d, CP09-EN-TR2-S-1770 FF+7d | 100% |
| CP09-EN-TR2-A-1780 |  | Cheek & Retaning Wall Masonary Works-Shop Drawing Approval | 14d | 2024-10-27 A | 2024-11-03 A | CP09-EN-TR2-S-1780 SS+7d, CP09-EN-TR2-S-1780 FF+7d | 100% |
| CP09-EN-TR2-A-1790 |  | Cheek & Retaning Wall Marble Works-Shop Drawing Approval | 14d | 2024-10-27 A | 2024-11-03 A | CP09-EN-TR2-S-1790 SS+7d, CP09-EN-TR2-S-1790 FF+7d | 100% |
| CP09-EN-TR2-A-1750 |  | Cheek & Retaning Wall Concrete dimension-ShopDrawing Approval | 14d | 2024-11-10 A | 2024-11-27 A | CP09-EN-TR2-S-1750 SS+7d, CP09-EN-TR2-S-1750 FF+7d | 100% |

| ID | WBS | Task | Duration | Start | Finish | Predecessors | Complete |
| --- | --- | --- | --- | --- | --- | --- | --- |
| CP09-EN-TR2-A-1760 |  | Cheek & Retaning Wall Steel reinforcement-Shop Drawing Approval | 14d | 2024-11-10 A | 2024-11-27 A | CP09-EN-TR2-S-1760 SS+7d, CP09-EN-TR2-S-1760 FF+7d | 100% |
|  | 4 | **Hardscape Works** |  | 2024-03-14 | 2025-08-22 |  |  |
| CP09-EN-TR2-A-1870 |  | Curb Works-Shop Drawing Approval | 7d | 2024-03-14 A | 2024-05-14 A | CP09-EN-TR2-S-1870 SS+7d, CP09-EN-TR2-S-1870 FF+7d | 100% |
| CP09-EN-TR2-A-1880 |  | Interlocking Paving Works-Shop Drawing Approval | 14d | 2024-03-14 A | 2024-05-14 A | CP09-EN-TR2-S-1880 SS+7d, CP09-EN-TR2-S-1880 FF+7d | 100% |
| CP09-EN-TR2-A-1890 |  | Steps Works-Shop Drawing Approval | 14d | 2024-06-26 A | 2024-09-16 A | CP09-EN-TR2-S-1890 SS+7d, CP09-EN-TR2-S-1890 FF+7d | 100% |
| CP09-EN-TR2-A-1800 |  | Concrete Exposed Aggregate - Side Walks-Shop Drawing Approval | 14d | 2024-09-21 A | 2024-10-01 A | CP09-EN-TR2-S-1800 SS+7d, CP09-EN-TR2-S-1800 FF+7d | 100% |
| CP09-EN-TR2-A-1810 |  | Marble Paving - Side Walks Works-Shop Drawing Approval | 14d | 2024-09-26 A | 2024-10-06 A | CP09-EN-TR2-S-1810 SS+7d, CP09-EN-TR2-S-1810 FF+7d | 100% |
| CP09-EN-TR2-A-1830 |  | Gravel - Side Walks Works-Shop Drawing Approval | 14d | 2024-09-26 A | 2024-10-06 A | CP09-EN-TR2-S-1830 SS+7d, CP09-EN-TR2-S-1830 FF+7d | 100% |
| CP09-EN-TR2-A-1840 |  | Crushed Stone - Side Walks Works-Shop Drawing Approval | 14d | 2024-09-26 A | 2024-10-06 A | CP09-EN-TR2-S-1840 SS+7d, CP09-EN-TR2-S-1840 FF+7d | 100% |
| CP09-EN-TR2-A-1850 |  | Loose Gravel - Side Walks Works-Shop Drawing Approval | 14d | 2024-09-26 A | 2024-10-06 A | CP09-EN-TR2-S-1850 SS+7d, CP09-EN-TR2-S-1850 FF+7d | 100% |
| CP09-EN-TR2-A-1860 |  | Clean sand layer - Side Walks Works-Shop Drawing Approval | 14d | 2024-09-26 A | 2024-10-06 A | CP09-EN-TR2-S-1860 SS+7d, CP09-EN-TR2-S-1860 FF+7d | 100% |
| CP09-EN-TR2-A-1900 |  | Seats Works-Shop Drawing Approval | 14d | 2024-10-27 A | 2024-11-03 A | CP09-EN-TR2-S-1900 SS+7d, CP09-EN-TR2-S-1900 FF+7d | 100% |
| CP09-EN-TR2-A-1910 |  | Pool Shower Works-Shop Drawing Approval | 14d | 2025-08-18 A | 2025-08-22 A | CP09-EN-TR2-S-1910 SS+7d, CP09-EN-TR2-S-1910 FF+7d | 100% |
| CP09-EN-TR2-A-1920 |  | Handrails Works-Shop Drawing Approval | 14d | 2025-08-18 A | 2025-08-22 A | CP09-EN-TR2-S-1920 SS+7d, CP09-EN-TR2-S-1920 FF+7d | 100% |
| CP09-EN-TR2-A-1930 |  | Landscape Furntiure-Shop Drawing Approval | 14d | 2025-08-18 A | 2025-08-22 A | CP09-EN-TR2-S-1930 SS+7d, CP09-EN-TR2-S-1930 FF+7d | 100% |
|  | 5 | **Electrical Works** |  | 2025-07-06 | 2025-08-22 |  |  |
| CP09-EN-TR2-A-1940 |  | Power Cables-Shop Drawing Approval | 14d | 2025-07-06 A | 2025-07-10 A | CP09-EN-TR2-S-1940 SS+7d, CP09-EN-TR2-S-1940 FF+7d | 100% |
| CP09-EN-TR2-A-1950 |  | Connecting Pillars-Shop Drawing Approval | 14d | 2025-08-18 A | 2025-08-22 A | CP09-EN-TR2-S-1950 SS+7d, CP09-EN-TR2-S-1950 FF+7d | 100% |
|  | 6 | **Sinage** |  | 2025-07-06 | 2025-07-10 |  |  |
| CP09-EN-TR2-A-1960 |  | Sinage-Shop Drawing Approval | 7d | 2025-07-06 A | 2025-07-10 A | CP09-EN-TR2-S-1960 SS+7d, CP09-EN-TR2-S-1960 FF+7d | 100% |
|  | 7 | **Play Field Equipment** |  | 2025-08-18 | 2025-08-22 |  |  |
| CP09-EN-TR2-A-1970 |  | Play Field Equipment-Shop Drawing Approval | 14d | 2025-08-18 A | 2025-08-22 A | CP09-EN-TR2-S-1970 SS+7d, CP09-EN-TR2-S-1970 FF+7d | 100% |
|  | 8 | **Irrigation Networks** |  | 2024-08-19 | 2024-08-22 |  |  |
| CP09-EN-TR2-A-1980 |  | Irrigation Networks Layout -Shop Drawing Approval | 7d | 2024-08-19 A | 2024-08-22 A | CP09-EN-TR2-S-1980 SS+7d, CP09-EN-TR2-S-1980 FF+7d | 100% |
|  | 9 | **Planting** |  | 2024-10-01 | 2024-10-05 |  |  |
| CP09-EN-TR2-A-1990 |  | Plantings -Shop Drawing Approval | 10d | 2024-10-01 A | 2024-10-05 A | CP09-EN-TR2-S-1990 SS+7d, CP09-EN-TR2-S-1990 FF+7d | 100% |
|  | 10 | **Lighting** |  | 2024-08-10 | 2024-08-15 |  |  |
| CP09-EN-TR2-A-2000 |  | Exterior Lighting for Softlandscape-Shop Drawing Approval | 14d | 2024-08-10 A | 2024-08-15 A | CP09-EN-TR2-S-2000 SS+7d, CP09-EN-TR2-S-2000 FF+7d | 100% |
|  | 8 | **Terrace # 03** |  | 2024-02-19 | 2026-01-16 |  |  |
|  | 2 | **Shopdrwaings Submittal** |  | 2024-02-19 | 2026-01-16 |  |  |
|  | 1 | **Swimming Pool & MR** |  | 2024-07-30 | 2026-01-16 |  |  |
| CP09-EN-TR3-S-1000 |  | Swimmimg Pool & MR Concrete dimension shop drawing Submittal | 7d | 2024-07-30 A | 2024-08-07 A | CP09-CLD-1010 | 100% |
| CP09-EN-TR3-S-1020 |  | Swimmimg Pool & MR Water Proofing Worksshop drawing Submittal | 7d | 2024-07-30 A | 2024-08-07 A | CP09-PR-CV-A-1010 SS | 100% |
| CP09-EN-TR3-S-1080 |  | Swimmimg Pool & MR Mechnical Works shop drawing Submittal | 7d | 2024-08-03 A | 2024-08-21 A | CP09-PR-ME-A-1000, CP09-PR-ME-A-1010, CP09-PR-ME-A-1020, CP09-PR-ME-A-1030, CP09-PR-ME-A-1040, CP09-PR-ME-A-1050, CP09-PR-ME-A-1060, CP09-PR-ME-A-1070, CP09-PR-ME-A-1080 | 100% |
| CP09-EN-TR3-S-1090 |  | Swimmimg Pool & MR Electrical Works shop drawing Submittal | 7d | 2024-09-26 A | 2026-01-16 A | CP09-PR-EL-A-1000, CP09-PR-EL-A-1010, CP09-PR-EL-A-1020 FF, CP09-PR-EL-A-1030, CP09-PR-EL-A-1040, CP09-PR-EL-A-1050, CP09-PR-EL-A-1140 | 100% |
| CP09-EN-TR3-S-1010 |  | Swimmimg Pool & MR Steel reinforcement shop drawing Submittal | 7d | 2024-10-09 A | 2025-05-22 A | CP09-EN-TR3-S-1000 | 100% |
| CP09-EN-TR3-S-1050 |  | Swimmimg Pool & MR Granite Works shop drawing Submittal | 7d | 2025-08-18 A | 2025-08-22 A | CP09-PR-CV-A-1040 | 100% |
| CP09-EN-TR3-S-1060 |  | Swimmimg Pool & MR Ladders Works shop drawing Submittal | 7d | 2025-08-18 A | 2025-08-22 A | CP09-PR-CV-A-1050 | 100% |
| CP09-EN-TR3-S-1070 |  | Swimmimg Pool & MR Handrial Works shop drawing Submittal | 7d | 2025-08-18 A | 2025-08-22 A | CP09-PR-CV-A-1060 | 100% |
| CP09-EN-TR3-S-1040 |  | Swimmimg Pool & MR Mosaics Works shop drawing Submittal | 7d | 2026-01-12 A | 2026-01-16 A | CP09-PR-CV-A-1030 | 100% |
| CP09-EN-TR3-S-1370 |  | Swimmimg Pool & MR Fininshes shop drawing Submittal | 7d | 2026-01-12 A | 2026-01-16 A | CP09-PR-CV-A-1070, CP09-PR-CV-A-1080, CP09-PR-CV-A-1110 | 100% |
|  | 2 | **Earth Work** |  | 2024-04-15 | 2025-07-10 |  |  |
| CP09-EN-TR3-S-1100 |  | Sub Garde shop drawing Submittal | 3d | 2024-04-15 A | 2025-07-10 A | CP09-CLD-1010 | 100% |
|  | 3 | **Cheek & Retaning Wall** |  | 2024-09-21 | 2024-10-30 |  |  |
| CP09-EN-TR3-S-1130 |  | Cheek & Retaning Wall Water Proofing Works shop drawing Submittal | 6.56d | 2024-09-21 A | 2024-09-28 A | CP09-EN-TR2-S-1770, CP09-PR-CV-A-1010 | 100% |
| CP09-EN-TR3-S-1140 |  | Cheek & Retaning Wall Masonary Works shop drawing Submittal | 6.56d | 2024-09-21 A | 2024-09-28 A | CP09-EN-TR2-S-1780, CP09-PR-CV-A-1020 | 100% |
| CP09-EN-TR3-S-1150 |  | Cheek & Retaning Wall Marble Works shop drawing Submittal | 6.56d | 2024-09-21 A | 2024-09-28 A | CP09-EN-TR2-S-1790, CP09-PR-CV-A-1120 | 100% |
| CP09-EN-TR3-S-1110 |  | Cheek & Retaning Wall Concrete dimension shop drawing Submittal | 6.56d | 2024-10-23 A | 2024-10-30 A | CP09-EN-TR2-S-1750, CP09-PR-CV-A-1000 | 100% |
| CP09-EN-TR3-S-1120 |  | Cheek & Retaning Wall Steel reinforcement shop drawing Submittal | 6.56d | 2024-10-23 A | 2024-10-30 A | CP09-EN-TR2-S-1760, CP09-PR-CV-A-1130 | 100% |
|  | 4 | **Hardscape Works** |  | 2024-08-11 | 2025-08-22 |  |  |
| CP09-EN-TR3-S-1230 |  | Flush Curb Works Shop Drawing Submittal | 6.56d | 2024-08-11 A | 2024-08-21 A | CP09-EN-TR2-S-1870, CP09-PR-HD-A-1080 | 100% |
| CP09-EN-TR3-S-1240 |  | Interlocking Paving Works Shop Drawing Submittal | 6.56d | 2024-08-11 A | 2024-08-21 A | CP09-EN-TR1-S-1610, CP09-PR-HD-A-1090, CP09-PR-HD-A-1180 | 100% |
| CP09-EN-TR3-S-1290 |  | Landscape Furntiure Shop Drawing Submittal | 6.56d | 2024-08-11 A | 2025-08-22 A | CP09-EN-TR1-S-1660, CP09-PR-FN-A-1000, CP09-PR-FN-A-1010, CP09-PR-FN-A-1020, CP09-PR-FN-A-1030, CP09-PR-FN-A-1040, CP09-PR-FN-A-1050, CP09-PR-FN-A-1060, CP09-PR-FN-A-1070, CP09-PR-FN-A-1080 | 100% |
| CP09-EN-TR3-S-1260 |  | Seats Works Shop Shop Drawing Submittal | 6.56d | 2024-09-21 A | 2024-09-28 A | CP09-EN-TR1-S-1630, CP09-PR-HD-A-1110 | 100% |
| CP09-EN-TR3-S-1170 |  | Marble Paving - Side Walks Works Shop Drawing Submittal | 6.56d | 2024-09-26 A | 2024-09-26 A | CP09-EN-TR2-S-1810, CP09-PR-HD-A-1010 | 100% |
| CP09-EN-TR3-S-1180 |  | WPC - Side Walks Works Shop Drawing Submittal | 6.56d | 2024-09-26 A | 2024-09-26 A | CP09-PR-HD-A-1020 | 100% |
| CP09-EN-TR3-S-1190 |  | Gravel - Side Walks Works Shop Drawing Submittal | 6.56d | 2024-09-26 A | 2024-09-26 A | CP09-EN-TR2-S-1830, CP09-PR-HD-A-1030 | 100% |
| CP09-EN-TR3-S-1200 |  | Crushed Stone - Side Walks Works Shop Drawing Submittal | 6.56d | 2024-09-26 A | 2024-09-26 A | CP09-EN-TR2-S-1840, CP09-PR-HD-A-1040 | 100% |
| CP09-EN-TR3-S-1210 |  | Loose Gravel - Side Walks Works Shop Drawing Submittal | 6.56d | 2024-09-26 A | 2024-09-26 A | CP09-EN-TR2-S-1850, CP09-PR-HD-A-1050 | 100% |
| CP09-EN-TR3-S-1220 |  | Clean sand layer - Side Walks Works Shop Drawing Submittal | 7d | 2024-09-26 A | 2024-09-26 A | CP09-EN-TR2-S-1860, CP09-PR-HD-A-1060, CP09-PR-HD-A-1070 | 100% |
| CP09-EN-TR3-S-1250 |  | Steps Works shop Shop Drawing Submittal | 6.56d | 2024-10-01 A | 2024-10-07 A | CP09-EN-TR1-S-1620, CP09-PR-HD-A-1100 | 100% |
| CP09-EN-TR3-S-1160 |  | Concrete Exposed Aggregate - Side Walks Shop Drawing Submittal | 6.56d | 2024-10-02 A | 2024-10-08 A | CP09-EN-TR2-S-1800, CP09-PR-HD-A-1000 | 100% |
| CP09-EN-TR3-S-1270 |  | Pool Shower Works Shop Drawing Submittal | 6.56d | 2025-08-18 A | 2025-08-22 A | CP09-EN-TR1-S-1640, CP09-PR-HD-A-1120, CP09-PR-HD-A-1130, CP09-PR-HD-A-1140, CP09-PR-HD-A-1150 | 100% |
| CP09-EN-TR3-S-1280 |  | Handrails Works Shop Drawing Submittal | 6.56d | 2025-08-18 A | 2025-08-22 A | CP09-EN-TR1-S-1650, CP09-PR-HD-A-1160, CP09-PR-HD-A-1170 | 100% |
|  | 5 | **Electrical Works** |  | 2025-07-06 | 2025-08-22 |  |  |
| CP09-EN-TR3-S-1300 |  | Power Cables Shop Drawing Submittal | 6.56d | 2025-07-06 A | 2025-07-10 A | CP09-EN-TR1-S-1670, CP09-PR-EL-A-1060 | 100% |
| CP09-EN-TR3-S-1310 |  | Connecting Pillars Shop Drawing Submittal | 6.56d | 2025-08-18 A | 2025-08-22 A | CP09-EN-TR1-S-1680, CP09-PR-EL-A-1070 | 100% |
|  | 6 | **Sinage** |  | 2025-07-06 | 2025-07-10 |  |  |
| CP09-EN-TR3-S-1320 |  | Sinage Shop Drawing Submittal | 6.56d | 2025-07-06 A | 2025-07-10 A | CP09-EN-TR1-S-1690, CP09-PR-SN-A-1000, CP09-PR-SN-A-1010, CP09-PR-SN-A-1020, CP09-PR-SN-A-1030, CP09-PR-SN-A-1040 | 100% |
|  | 7 | **Play Field Equipment** |  | 2025-08-18 | 2025-08-22 |  |  |

| ID | WBS | Task | Duration | Start | Finish | Predecessors | Complete |
| --- | --- | --- | --- | --- | --- | --- | --- |
| CP09-EN-TR3-S-1330 |  | Play Field Equipment Shop Drawing Submittal | 6.56d | 2025-08-18 A | 2025-08-22 A | CP09-EN-TR1-S-1700, CP09-PR-PE-A-1000, CP09-PR-PE-A-1010, CP09-PR-PE-A-1020, CP09-PR-PE-A-1030, CP09-PR-PE-A-1040, CP09-PR-PE-A-1050, CP09-PR-PE-A-1060, CP09-PR-PE-A-1070, CP09-PR-PE-A-1080, CP09-PR-PE-A-1090, CP09-PR-PE-A-1100 | 100% |
|  | 8 | **Irrigation Networks** |  | 2024-05-17 | 2024-05-25 |  |  |
| CP09-EN-TR3-S-1340 |  | Irrigation Networks Layout Shop Drawing Submittal | 6.56d | 2024-05-17 A | 2024-05-25 A | CP09-EN-TR2-S-1980, CP09-EN-TR1-S-1710, CP09-PR-IR-A-1000, CP09-PR-IR-A-1010, CP09-PR-IR-A-1020, CP09-PR-IR-A-1030, CP09-PR-IR-A-1040, CP09-PR-IR-A-1050, CP09-PR-IR-A-1060, CP09-PR-IR-A-1070, CP09-PR-IR-A-1080 | 100% |
|  | 9 | **Planting** |  | 2024-02-19 | 2024-10-14 |  |  |
| CP09-EN-TR3-S-1350 |  | Plantings Shop Drawing Submittal | 6.56d | 2024-02-19 A | 2024-10-14 A | CP09-EN-TR1-S-1720, CP09-PR-PN-A-1000, CP09-PR-PN-A-1010, CP09-PR-PN-A-1020, CP09-PR-PN-A-1030, CP09-PR-PN-A-1040, CP09-PR-PN-A-1050, CP09-PR-PN-A-1060, CP09-PR-PN-A-1070, CP09-PR-PN-A-1080 | 100% |
|  | 10 | **Lighting** |  | 2024-09-28 | 2024-10-02 |  |  |
| CP09-EN-TR3-S-1360 |  | Exterior Lighting for Softlandscape Shop Drawing Submittal | 6.56d | 2024-09-28 A | 2024-10-02 A | CP09-EN-TR1-S-1730, CP09-PR-EL-A-1080, CP09-PR-EL-A-1090, CP09-PR-EL-A-1100, CP09-PR-EL-A-1110, CP09-PR-EL-A-1120, CP09-PR-EL-A-1130 | 100% |
|  | 1 | **Shopdrwaings Approval** |  | 2024-05-27 | 2026-01-16 |  |  |
|  | 1 | **Swimming Pool & MR** |  | 2024-08-08 | 2026-01-16 |  |  |
| CP09-EN-TR3-A-1000 |  | Swimmimg Pool & MR Concrete dimension-Shop Drawing Approval | 14d | 2024-08-08 A | 2024-08-25 A | CP09-EN-TR3-S-1000 FF+7d, CP09-EN-TR3-S-1000 SS+7d | 100% |
| CP09-EN-TR3-A-1020 |  | Swimmimg Pool & MR Water Proofing Works-Shop Drawing Approval | 14d | 2024-08-08 A | 2024-08-25 A | CP09-EN-TR3-S-1020 FF+7d, CP09-EN-TR3-S-1020 SS+7d | 100% |
| CP09-EN-TR3-A-1080 |  | Swimmimg Pool & MR Mechnical Works-Shop Drawing Approval | 14d | 2024-08-10 A | 2024-08-27 A | CP09-EN-TR3-S-1080 FF+7d, CP09-EN-TR3-S-1080 SS+7d | 100% |
| CP09-EN-TR3-A-1040 |  | Swimmimg Pool & MR Mosaics Works-Shop Drawing Approval | 14d | 2025-08-18 A | 2025-08-22 A | CP09-EN-TR3-S-1040 FF+7d, CP09-EN-TR3-S-1040 SS+7d | 100% |
| CP09-EN-TR3-A-1050 |  | Swimmimg Pool & MR Granite Works-Shop Drawing Approval | 14d | 2025-08-18 A | 2025-08-22 A | CP09-EN-TR3-S-1050 FF+7d, CP09-EN-TR3-S-1050 SS+7d | 100% |
| CP09-EN-TR3-A-1060 |  | Swimmimg Pool & MR Ladders Works-Shop Drawing Approval | 14d | 2025-08-18 A | 2025-08-22 A | CP09-EN-TR3-S-1060 FF+7d, CP09-EN-TR3-S-1060 SS+7d | 100% |
| CP09-EN-TR3-A-1070 |  | Swimmimg Pool & MR Handrial Works-Shop Drawing Approval | 14d | 2025-08-18 A | 2025-08-22 A | CP09-EN-TR3-S-1070 FF+7d, CP09-EN-TR3-S-1070 SS+7d | 100% |
| CP09-EN-TR3-A-1010 |  | Swimmimg Pool & MR Steel reinforcement-Shop Drawing Approval | 14d | 2026-01-12 A | 2026-01-16 A | CP09-EN-TR3-S-1010 FF+7d, CP09-EN-TR3-S-1010 SS+7d | 100% |
| CP09-EN-TR3-A-1090 |  | Swimmimg Pool & MR Electrical Works-Shop Drawing Approval | 14d | 2026-01-12 A | 2026-01-16 A | CP09-EN-TR3-S-1090 FF+7d, CP09-EN-TR3-S-1090 SS+7d | 100% |
| CP09-EN-TR3-A-1370 |  | Swimmimg Pool & MR Fininshes shop drawing Approval | 14d | 2026-01-12 A | 2026-01-16 A | CP09-EN-TR3-S-1370 FF+7d, CP09-EN-TR3-S-1370 SS+7d | 100% |
|  | 2 | **Earth Work** |  | 2025-07-06 | 2025-07-10 |  |  |
| CP09-EN-TR3-A-1100 |  | Sub Garde Shopdrwaings-Shop Drawing Approval | 14d | 2025-07-06 A | 2025-07-10 A | CP09-EN-TR3-S-1100 FF+7d, CP09-EN-TR3-S-1100 SS+7d | 100% |
|  | 3 | **Cheek & Retaning Wall** |  | 2024-09-28 | 2025-11-03 |  |  |
| CP09-EN-TR3-A-1130 |  | Cheek & Retaning Wall Water Proofing Works-Shop Drawing Approval | 14d | 2024-09-28 A | 2024-11-03 A | CP09-EN-TR3-S-1130 FF+7d, CP09-EN-TR3-S-1130 SS+7d | 100% |
| CP09-EN-TR3-A-1140 |  | Cheek & Retaning Wall Masonary Works-Shop Drawing Approval | 14d | 2024-09-28 A | 2024-11-03 A | CP09-EN-TR3-S-1140 FF+7d, CP09-EN-TR3-S-1140 SS+7d | 100% |
| CP09-EN-TR3-A-1150 |  | Cheek & Retaning Wall Marble Works-Shop Drawing Approval | 14d | 2024-09-28 A | 2025-11-03 A | CP09-EN-TR3-S-1150 FF+7d, CP09-EN-TR3-S-1150 SS+7d | 100% |
| CP09-EN-TR3-A-1110 |  | Cheek & Retaning Wall Concrete dimension-ShopDrawing Approval | 14d | 2024-10-30 A | 2024-11-12 A | CP09-EN-TR3-S-1110 FF+7d, CP09-EN-TR3-S-1110 SS+7d | 100% |
| CP09-EN-TR3-A-1120 |  | Cheek & Retaning Wall Steel reinforcement-Shop Drawing Approval | 14d | 2024-10-30 A | 2024-11-12 A | CP09-EN-TR3-S-1120 FF+7d, CP09-EN-TR3-S-1120 SS+7d | 100% |
|  | 4 | **Hardscape Works** |  | 2024-08-21 | 2025-08-22 |  |  |
| CP09-EN-TR3-A-1230 |  | Flush Curb Works-Shop Drawing Approval | 14d | 2024-08-21 A | 2024-08-21 A | CP09-EN-TR3-S-1230 FF+7d, CP09-EN-TR3-S-1230 SS+7d | 100% |
| CP09-EN-TR3-A-1240 |  | Interlocking Paving Works-Shop Drawing Approval | 14d | 2024-08-21 A | 2024-08-21 A | CP09-EN-TR3-S-1240 FF+7d, CP09-EN-TR3-S-1240 SS+7d | 100% |
| CP09-EN-TR3-A-1170 |  | Marble Paving - Side Walks Works-Shop Drawing Approval | 14d | 2024-09-26 A | 2024-09-30 A | CP09-EN-TR3-S-1170 FF+7d, CP09-EN-TR3-S-1170 SS+7d | 100% |
| CP09-EN-TR3-A-1180 |  | WPC - Side Walks Works -Shop Drawing Approval | 14d | 2024-09-26 A | 2024-09-30 A | CP09-EN-TR3-S-1180 FF+7d, CP09-EN-TR3-S-1180 SS+7d | 100% |
| CP09-EN-TR3-A-1190 |  | Gravel - Side Walks Works-Shop Drawing Approval | 14d | 2024-09-26 A | 2024-09-30 A | CP09-EN-TR3-S-1190 FF+7d, CP09-EN-TR3-S-1190 SS+7d | 100% |
| CP09-EN-TR3-A-1200 |  | Crushed Stone - Side Walks Works-Shop Drawing Approval | 14d | 2024-09-26 A | 2024-09-30 A | CP09-EN-TR3-S-1200 FF+7d, CP09-EN-TR3-S-1200 SS+7d | 100% |
| CP09-EN-TR3-A-1210 |  | Loose Gravel - Side Walks Works-Shop Drawing Approval | 14d | 2024-09-26 A | 2024-09-30 A | CP09-EN-TR3-S-1210 FF+7d, CP09-EN-TR3-S-1210 SS+7d | 100% |
| CP09-EN-TR3-A-1220 |  | Clean sand layer - Side Walks Works-Shop Drawing Approval | 14d | 2024-09-26 A | 2024-09-30 A | CP09-EN-TR3-S-1220 FF+7d, CP09-EN-TR3-S-1220 SS+7d | 100% |
| CP09-EN-TR3-A-1260 |  | Seats Works-Shop Drawing Approval | 14d | 2024-09-28 A | 2024-11-03 A | CP09-EN-TR3-S-1260 FF+7d, CP09-EN-TR3-S-1260 SS+7d | 100% |
| CP09-EN-TR3-A-1250 |  | Steps Works-Shop Drawing Approval | 14d | 2024-10-07 A | 2024-10-14 A | CP09-EN-TR3-S-1250 FF+7d, CP09-EN-TR3-S-1250 SS+7d | 100% |
| CP09-EN-TR3-A-1160 |  | Concrete Exposed Aggregate - Side Walks-Shop Drawing Approval | 14d | 2024-10-08 A | 2024-10-10 A | CP09-EN-TR3-S-1160 FF+7d, CP09-EN-TR3-S-1160 SS+7d | 100% |
| CP09-EN-TR3-A-1270 |  | Pool Shower Works-Shop Drawing Approval | 14d | 2025-08-18 A | 2025-08-22 A | CP09-EN-TR3-S-1270 FF+7d, CP09-EN-TR3-S-1270 SS+7d | 100% |
| CP09-EN-TR3-A-1280 |  | Handrails Works-Shop Drawing Approval | 14d | 2025-08-18 A | 2025-08-22 A | CP09-EN-TR3-S-1280 FF+7d, CP09-EN-TR3-S-1280 SS+7d | 100% |
| CP09-EN-TR3-A-1290 |  | Landscape Furntiure-Shop Drawing Approval | 14d | 2025-08-18 A | 2025-08-22 A | CP09-EN-TR3-S-1290 FF+7d, CP09-EN-TR3-S-1290 SS+7d | 100% |
|  | 5 | **Electrical Works** |  | 2025-07-06 | 2025-08-22 |  |  |
| CP09-EN-TR3-A-1300 |  | Power Cables-Shop Drawing Approval | 14d | 2025-07-06 A | 2025-07-10 A | CP09-EN-TR3-S-1300 FF+7d, CP09-EN-TR3-S-1300 SS+7d | 100% |
| CP09-EN-TR3-A-1310 |  | Connecting Pillars-Shop Drawing Approval | 14d | 2025-08-18 A | 2025-08-22 A | CP09-EN-TR3-S-1310 FF+7d, CP09-EN-TR3-S-1310 SS+7d | 100% |
|  | 6 | **Sinage** |  | 2025-07-06 | 2025-07-10 |  |  |
| CP09-EN-TR3-A-1320 |  | Sinage-Shop Drawing Approval | 14d | 2025-07-06 A | 2025-07-10 A | CP09-EN-TR3-S-1320 FF+7d, CP09-EN-TR3-S-1320 SS+7d | 100% |
|  | 7 | **Play Field Equipment** |  | 2025-08-18 | 2025-08-22 |  |  |
| CP09-EN-TR3-A-1330 |  | Play Field Equipment-Shop Drawing Approval | 14d | 2025-08-18 A | 2025-08-22 A | CP09-EN-TR3-S-1330 FF+7d, CP09-EN-TR3-S-1330 SS+7d | 100% |
|  | 8 | **Irrigation Networks** |  | 2024-05-27 | 2024-06-12 |  |  |
| CP09-EN-TR3-A-1340 |  | Irrigation Networks Layout -Shop Drawing Approval | 14d | 2024-05-27 A | 2024-06-12 A | CP09-EN-TR3-S-1340 FF+7d, CP09-EN-TR3-S-1340 SS+7d | 100% |
|  | 9 | **Planting** |  | 2024-10-14 | 2024-10-16 |  |  |
| CP09-EN-TR3-A-1350 |  | Plantings -Shop Drawing Approval | 14d | 2024-10-14 A | 2024-10-16 A | CP09-EN-TR3-S-1350 FF+7d, CP09-EN-TR3-S-1350 SS+7d | 100% |
|  | 10 | **Lighting** |  | 2024-10-02 | 2024-10-06 |  |  |
| CP09-EN-TR3-A-1360 |  | Exterior Lighting for Softlandscape-Shop Drawing Approval | 14d | 2024-10-02 A | 2024-10-06 A | CP09-EN-TR3-S-1360 FF+7d, CP09-EN-TR3-S-1360 SS+7d | 100% |
|  | 1 | **Terrace # 04** |  | 2024-02-29 | 2026-01-16 |  |  |
|  | 2 | **Shopdrwaings Submittal** |  | 2024-02-29 | 2026-01-16 |  |  |
|  | 1 | **Swimming Pool & MR** |  | 2024-05-28 | 2026-01-16 |  |  |
| CP09-EN-TR4-S-1460 |  | Swimmimg Pool & MR Electrical Works shop drawing Submittal | 7d | 2024-05-28 A | 2026-01-16 A | CP09-EN-TR3-S-1090, CP09-PR-EL-A-1000, CP09-PR-EL-A-1010, CP09-PR-EL-A-1020, CP09-PR-EL-A-1030, CP09-PR-EL-A-1040, CP09-PR-EL-A-1050, CP09-PR-EL-A-1140 | 100% |
| CP09-EN-TR4-S-1380 |  | Swimmimg Pool & MR Concrete dimension shop drawing Submittal | 7d | 2024-08-21 A | 2025-07-10 A | CP09-CLD-1010 | 100% |
| CP09-EN-TR4-S-1400 |  | Swimmimg Pool & MR Water Proofing Worksshop drawing Submittal | 7d | 2024-08-21 A | 2025-07-10 A | CP09-PR-CV-A-1010 SS | 100% |
| CP09-EN-TR4-S-1450 |  | Swimmimg Pool & MR Mechnical Works shop drawing Submittal | 7d | 2024-08-21 A | 2024-08-21 A | CP09-EN-TR3-S-1080, CP09-PR-ME-A-1000, CP09-PR-ME-A-1010, CP09-PR-ME-A-1020, CP09-PR-ME-A-1030, CP09-PR-ME-A-1040, CP09-PR-ME-A-1050, CP09-PR-ME-A-1060, CP09-PR-ME-A-1070, CP09-PR-ME-A-1080 | 100% |
| CP09-EN-TR4-S-1390 |  | Swimmimg Pool & MR Steel reinforcement shop drawing Submittal | 7d | 2024-10-17 A | 2025-07-10 A | CP09-EN-TR4-S-1380 | 100% |
| CP09-EN-TR4-S-1420 |  | Swimmimg Pool & MR Granite Works shop drawing Submittal | 7d | 2025-08-18 A | 2025-08-22 A | CP09-EN-TR3-S-1050, CP09-PR-CV-A-1040 | 100% |
| CP09-EN-TR4-S-1430 |  | Swimmimg Pool & MR Ladders Works shop drawing Submittal | 7d | 2025-08-18 A | 2025-08-22 A | CP09-PR-CV-A-1050 | 100% |
| CP09-EN-TR4-S-1440 |  | Swimmimg Pool & MR Handrial Works shop drawing Submittal | 7d | 2025-08-18 A | 2025-08-22 A | CP09-PR-CV-A-1060 | 100% |
| CP09-EN-TR4-S-1410 |  | Swimmimg Pool & MR Mosaics Works shop drawing Submittal | 7d | 2026-01-12 A | 2026-01-16 A | CP09-PR-CV-A-1030 | 100% |
| CP09-EN-TR4-S-1740 |  | Swimmimg Pool & MR Fininshes shop drawing Submittal | 7d | 2026-01-12 A | 2026-01-16 A | CP09-PR-CV-A-1070, CP09-PR-CV-A-1080, CP09-PR-CV-A-1110 | 100% |
|  | 2 | **Earth Work** |  | 2024-04-23 | 2025-07-10 |  |  |
| CP09-EN-TR4-S-1470 |  | Sub Garde shop drawing Submittal | 3d | 2024-04-23 A | 2025-07-10 A | CP09-EN-TR2-S-1740, CP09-CLD-1010 | 100% |

| ID | WBS | Task | Duration | Start | Finish | Predecessors | Complete |
| --- | --- | --- | --- | --- | --- | --- | --- |
|  | 3 | **Cheek & Retaning Wall** |  | 2024-10-14 | 2024-10-27 |  |  |
| CP09-EN-TR4-S-1500 |  | Cheek & Retaning Wall Water Proofing Works shop drawing Submittal | 6.56d | 2024-10-14 A | 2024-10-21 A | CP09-EN-TR2-S-1770, CP09-PR-CV-A-1010 | 100% |
| CP09-EN-TR4-S-1510 |  | Cheek & Retaning Wall Masonary Works shop drawing Submittal | 6.56d | 2024-10-14 A | 2024-10-21 A | CP09-EN-TR2-S-1780, CP09-PR-CV-A-1020 | 100% |
| CP09-EN-TR4-S-1520 |  | Cheek & Retaning Wall Marble Works shop drawing Submittal | 6.56d | 2024-10-14 A | 2024-10-21 A | CP09-EN-TR2-S-1790, CP09-PR-CV-A-1120 | 100% |
| CP09-EN-TR4-S-1480 |  | Cheek & Retaning Wall Concrete dimension shop drawing Submittal | 6.56d | 2024-10-20 A | 2024-10-27 A | CP09-EN-TR2-S-1750, CP09-PR-CV-A-1000 | 100% |
| CP09-EN-TR4-S-1490 |  | Cheek & Retaning Wall Steel reinforcement shop drawing Submittal | 6.56d | 2024-10-20 A | 2024-10-27 A | CP09-EN-TR2-S-1760, CP09-PR-CV-A-1130 | 100% |
|  | 4 | **Hardscape Works** |  | 2024-08-11 | 2025-08-22 |  |  |
| CP09-EN-TR4-S-1660 |  | Landscape Furntiure Shop Drawing Submittal | 6.56d | 2024-08-11 A | 2025-08-22 A | CP09-EN-TR2-S-1930, CP09-PR-FN-A-1000, CP09-PR-FN-A-1010, CP09-PR-FN-A-1020, CP09-PR-FN-A-1030, CP09-PR-FN-A-1040, CP09-PR-FN-A-1050, CP09-PR-FN-A-1060, CP09-PR-FN-A-1070, CP09-PR-FN-A-1080 | 100% |
| CP09-EN-TR4-S-1600 |  | Flush Curb Works Shop Drawing Submittal | 6.56d | 2024-08-21 A | 2024-08-26 A | CP09-PR-HD-A-1080 | 100% |
| CP09-EN-TR4-S-1610 |  | Interlocking Paving Works Shop Drawing Submittal | 6.56d | 2024-08-21 A | 2024-08-26 A | CP09-EN-TR2-S-1880, CP09-PR-HD-A-1090, CP09-PR-HD-A-1180 | 100% |
| CP09-EN-TR4-S-1620 |  | Steps Works shop Shop Drawing Submittal | 6.56d | 2024-10-07 A | 2024-10-14 A | CP09-EN-TR2-S-1890, CP09-PR-HD-A-1100 | 100% |
| CP09-EN-TR4-S-1530 |  | Concrete Exposed Aggregate - Side Walks Shop Drawing Submittal | 6.56d | 2024-10-08 A | 2024-10-13 A | CP09-EN-TR2-S-1800, CP09-PR-HD-A-1000 | 100% |
| CP09-EN-TR4-S-1540 |  | Marble Paving - Side Walks Works Shop Drawing Submittal | 6.56d | 2024-10-08 A | 2024-10-09 A | CP09-EN-TR2-S-1810, CP09-PR-HD-A-1010 | 100% |
| CP09-EN-TR4-S-1550 |  | WPC - Side Walks Works Shop Drawing Submittal | 6.56d | 2024-10-08 A | 2024-10-09 A | CP09-PR-HD-A-1020 | 100% |
| CP09-EN-TR4-S-1560 |  | Gravel - Side Walks Works Shop Drawing Submittal | 6.56d | 2024-10-08 A | 2024-10-09 A | CP09-EN-TR2-S-1830, CP09-PR-HD-A-1030 | 100% |
| CP09-EN-TR4-S-1570 |  | Crushed Stone - Side Walks Works Shop Drawing Submittal | 6.56d | 2024-10-08 A | 2024-10-09 A | CP09-EN-TR2-S-1840, CP09-PR-HD-A-1040 | 100% |
| CP09-EN-TR4-S-1580 |  | Loose Gravel - Side Walks Works Shop Drawing Submittal | 6.56d | 2024-10-08 A | 2024-10-09 A | CP09-EN-TR2-S-1850, CP09-PR-HD-A-1050 | 100% |
| CP09-EN-TR4-S-1590 |  | Clean sand layer - Side Walks Works Shop Drawing Submittal | 7d | 2024-10-08 A | 2024-10-09 A | CP09-EN-TR2-S-1860, CP09-PR-HD-A-1060, CP09-PR-HD-A-1070 | 100% |
| CP09-EN-TR4-S-1630 |  | Seats Works Shop Shop Drawing Submittal | 6.56d | 2024-10-14 A | 2024-10-21 A | CP09-EN-TR2-S-1900, CP09-PR-HD-A-1110 | 100% |
| CP09-EN-TR4-S-1640 |  | Pool Shower Works Shop Drawing Submittal | 6.56d | 2025-08-18 A | 2025-08-22 A | CP09-EN-TR2-S-1910, CP09-PR-HD-A-1120, CP09-PR-HD-A-1130, CP09-PR-HD-A-1140, CP09-PR-HD-A-1150 | 100% |
| CP09-EN-TR4-S-1650 |  | Handrails Works Shop Drawing Submittal | 6.56d | 2025-08-18 A | 2025-08-22 A | CP09-EN-TR2-S-1920, CP09-PR-HD-A-1160, CP09-PR-HD-A-1170 | 100% |
|  | 5 | **Electrical Works** |  | 2025-05-18 | 2025-05-22 |  |  |
| CP09-EN-TR4-S-1670 |  | Power Cables Shop Drawing Submittal | 6.56d | 2025-05-18 A | 2025-05-22 A | CP09-EN-TR2-S-1940, CP09-PR-EL-A-1060 | 100% |
| CP09-EN-TR4-S-1680 |  | Connecting Pillars Shop Drawing Submittal | 6.56d | 2025-05-18 A | 2025-05-22 A | CP09-EN-TR2-S-1950, CP09-PR-EL-A-1070 | 100% |
|  | 6 | **Sinage** |  | 2025-07-06 | 2025-07-10 |  |  |
| CP09-EN-TR4-S-1690 |  | Sinage Shop Drawing Submittal | 6.56d | 2025-07-06 A | 2025-07-10 A | CP09-EN-TR2-S-1960, CP09-PR-SN-A-1000, CP09-PR-SN-A-1010, CP09-PR-SN-A-1020, CP09-PR-SN-A-1030, CP09-PR-SN-A-1040 | 100% |
|  | 7 | **Play Field Equipment** |  | 2025-08-18 | 2025-08-22 |  |  |
| CP09-EN-TR4-S-1700 |  | Play Field Equipment Shop Drawing Submittal | 6.56d | 2025-08-18 A | 2025-08-22 A | CP09-EN-TR2-S-1970, CP09-PR-PE-A-1000, CP09-PR-PE-A-1010, CP09-PR-PE-A-1020, CP09-PR-PE-A-1030, CP09-PR-PE-A-1040, CP09-PR-PE-A-1050, CP09-PR-PE-A-1060, CP09-PR-PE-A-1070, CP09-PR-PE-A-1080, CP09-PR-PE-A-1090, CP09-PR-PE-A-1100 | 100% |
|  | 8 | **Irrigation Networks** |  | 2024-05-28 | 2024-10-23 |  |  |
| CP09-EN-TR4-S-1710 |  | Irrigation Networks Layout Shop Drawing Submittal | 6.56d | 2024-05-28 A | 2024-10-23 A | CP09-EN-TR2-S-1980, CP09-PR-IR-A-1000, CP09-PR-IR-A-1010, CP09-PR-IR-A-1020, CP09-PR-IR-A-1030, CP09-PR-IR-A-1040, CP09-PR-IR-A-1050, CP09-PR-IR-A-1060, CP09-PR-IR-A-1070, CP09-PR-IR-A-1080 | 100% |
|  | 9 | **Planting** |  | 2024-02-29 | 2024-10-14 |  |  |
| CP09-EN-TR4-S-1720 |  | Plantings Shop Drawing Submittal | 6.56d | 2024-02-29 A | 2024-10-14 A | CP09-EN-TR2-S-1990, CP09-PR-PN-A-1000, CP09-PR-PN-A-1010, CP09-PR-PN-A-1020, CP09-PR-PN-A-1030, CP09-PR-PN-A-1040, CP09-PR-PN-A-1050, CP09-PR-PN-A-1060, CP09-PR-PN-A-1070, CP09-PR-PN-A-1080 | 100% |
|  | 10 | **Lighting** |  | 2024-10-07 | 2024-10-20 |  |  |
| CP09-EN-TR4-S-1730 |  | Exterior Lighting for Softlandscape Shop Drawing Submittal | 6.56d | 2024-10-07 A | 2024-10-20 A | CP09-EN-TR2-S-2000, CP09-PR-EL-A-1080, CP09-PR-EL-A-1090, CP09-PR-EL-A-1100, CP09-PR-EL-A-1110, CP09-PR-EL-A-1120, CP09-PR-EL-A-1130 | 100% |
|  | 1 | **Shopdrwaings Approval** |  | 2024-08-21 | 2026-01-16 |  |  |
|  | 1 | **Swimming Pool & MR** |  | 2024-08-21 | 2026-01-16 |  |  |
| CP09-EN-TR4-A-1450 |  | Swimmimg Pool & MR Mechnical Works-Shop Drawing Approval | 14d | 2024-08-21 A | 2024-08-27 A | CP09-EN-TR4-S-1450 FF+7d, CP09-EN-TR4-S-1450 SS+7d | 100% |
| CP09-EN-TR4-A-1380 |  | Swimmimg Pool & MR Concrete dimension-Shop Drawing Approval | 14d | 2025-07-06 A | 2025-07-10 A | CP09-EN-TR4-S-1380 FF+7d, CP09-EN-TR4-S-1380 SS+7d | 100% |
| CP09-EN-TR4-A-1390 |  | Swimmimg Pool & MR Steel reinforcement-Shop Drawing Approval | 14d | 2025-07-06 A | 2025-07-10 A | CP09-EN-TR4-S-1390 FF+7d, CP09-EN-TR4-S-1390 SS+7d | 100% |
| CP09-EN-TR4-A-1400 |  | Swimmimg Pool & MR Water Proofing Works-Shop Drawing Approval | 14d | 2025-07-06 A | 2025-07-10 A | CP09-EN-TR4-S-1400 FF+7d, CP09-EN-TR4-S-1400 SS+7d | 100% |
| CP09-EN-TR4-A-1420 |  | Swimmimg Pool & MR Granite Works-Shop Drawing Approval | 14d | 2025-08-18 A | 2025-08-22 A | CP09-EN-TR4-S-1420 FF+7d, CP09-EN-TR4-S-1420 SS+7d | 100% |
| CP09-EN-TR4-A-1430 |  | Swimmimg Pool & MR Ladders Works-Shop Drawing Approval | 14d | 2025-08-18 A | 2025-08-22 A | CP09-EN-TR4-S-1430 FF+7d, CP09-EN-TR4-S-1430 SS+7d | 100% |
| CP09-EN-TR4-A-1440 |  | Swimmimg Pool & MR Handrial Works-Shop Drawing Approval | 14d | 2025-08-18 A | 2025-08-22 A | CP09-EN-TR4-S-1440 FF+7d, CP09-EN-TR4-S-1440 SS+7d | 100% |
| CP09-EN-TR4-A-1410 |  | Swimmimg Pool & MR Mosaics Works-Shop Drawing Approval | 14d | 2026-01-12 A | 2026-01-16 A | CP09-EN-TR4-S-1410 FF+7d, CP09-EN-TR4-S-1410 SS+7d | 100% |
| CP09-EN-TR4-A-1460 |  | Swimmimg Pool & MR Electrical Works-Shop Drawing Approval | 14d | 2026-01-12 A | 2026-01-16 A | CP09-EN-TR4-S-1460 FF+7d, CP09-EN-TR4-S-1460 SS+7d | 100% |
| CP09-EN-TR4-A-1740 |  | Swimmimg Pool & MR Fininshes shop drawing Approval | 14d | 2026-01-12 A | 2026-01-16 A | CP09-EN-TR4-S-1740 FF+7d, CP09-EN-TR4-S-1740 SS+7d | 100% |
|  | 2 | **Earth Work** |  | 2025-07-06 | 2025-07-10 |  |  |
| CP09-EN-TR4-A-1470 |  | Sub Garde Shopdrwaings-Shop Drawing Approval | 14d | 2025-07-06 A | 2025-07-10 A | CP09-EN-TR4-S-1470 FF+4d, CP09-EN-TR4-S-1470 SS+4d | 100% |
|  | 3 | **Cheek & Retaning Wall** |  | 2024-10-21 | 2024-11-19 |  |  |
| CP09-EN-TR4-A-1500 |  | Cheek & Retaning Wall Water Proofing Works-Shop Drawing Approval | 14d | 2024-10-21 A | 2024-10-27 A | CP09-EN-TR4-S-1500 FF+7d, CP09-EN-TR4-S-1500 SS+7d | 100% |
| CP09-EN-TR4-A-1510 |  | Cheek & Retaning Wall Masonary Works-Shop Drawing Approval | 14d | 2024-10-21 A | 2024-10-27 A | CP09-EN-TR4-S-1510 FF+7d, CP09-EN-TR4-S-1510 SS+7d | 100% |
| CP09-EN-TR4-A-1520 |  | Cheek & Retaning Wall Marble Works-Shop Drawing Approval | 14d | 2024-10-21 A | 2024-10-27 A | CP09-EN-TR4-S-1520 FF+7d, CP09-EN-TR4-S-1520 SS+7d | 100% |
| CP09-EN-TR4-A-1480 |  | Cheek & Retaning Wall Concrete dimension-ShopDrawing Approval | 14d | 2024-10-27 A | 2024-11-19 A | CP09-EN-TR4-S-1480 FF+7d, CP09-EN-TR4-S-1480 SS+7d | 100% |
| CP09-EN-TR4-A-1490 |  | Cheek & Retaning Wall Steel reinforcement-Shop Drawing Approval | 14d | 2024-10-27 A | 2024-11-19 A | CP09-EN-TR4-S-1490 FF+7d, CP09-EN-TR4-S-1490 SS+7d | 100% |
|  | 4 | **Hardscape Works** |  | 2024-08-26 | 2025-08-22 |  |  |
| CP09-EN-TR4-A-1600 |  | Flush Curb Works-Shop Drawing Approval | 14d | 2024-08-26 A | 2024-08-26 A | CP09-EN-TR4-S-1600 FF+7d, CP09-EN-TR4-S-1600 SS+7d | 100% |
| CP09-EN-TR4-A-1610 |  | Interlocking Paving Works-Shop Drawing Approval | 14d | 2024-08-26 A | 2024-08-26 A | CP09-EN-TR4-S-1610 FF+7d, CP09-EN-TR4-S-1610 SS+7d | 100% |
| CP09-EN-TR4-A-1540 |  | Marble Paving - Side Walks Works-Shop Drawing Approval | 14d | 2024-10-09 A | 2024-10-14 A | CP09-EN-TR4-S-1540 FF+7d, CP09-EN-TR4-S-1540 SS+7d | 100% |
| CP09-EN-TR4-A-1550 |  | WPC - Side Walks Works -Shop Drawing Approval | 14d | 2024-10-09 A | 2024-10-14 A | CP09-EN-TR4-S-1550 FF+7d, CP09-EN-TR4-S-1550 SS+7d | 100% |
| CP09-EN-TR4-A-1560 |  | Gravel - Side Walks Works-Shop Drawing Approval | 14d | 2024-10-09 A | 2024-10-14 A | CP09-EN-TR4-S-1560 FF+7d, CP09-EN-TR4-S-1560 SS+7d | 100% |
| CP09-EN-TR4-A-1570 |  | Crushed Stone - Side Walks Works-Shop Drawing Approval | 14d | 2024-10-09 A | 2024-10-14 A | CP09-EN-TR4-S-1570 FF+7d, CP09-EN-TR4-S-1570 SS+7d | 100% |
| CP09-EN-TR4-A-1580 |  | Loose Gravel - Side Walks Works-Shop Drawing Approval | 14d | 2024-10-09 A | 2024-10-14 A | CP09-EN-TR4-S-1580 FF+7d, CP09-EN-TR4-S-1580 SS+7d | 100% |
| CP09-EN-TR4-A-1590 |  | Clean sand layer - Side Walks Works-Shop Drawing Approval | 14d | 2024-10-09 A | 2024-10-14 A | CP09-EN-TR4-S-1590 FF+7d, CP09-EN-TR4-S-1590 SS+7d | 100% |
| CP09-EN-TR4-A-1530 |  | Concrete Exposed Aggregate - Side Walks-Shop Drawing Approval | 14d | 2024-10-13 A | 2024-10-17 A | CP09-EN-TR4-S-1530 FF+7d, CP09-EN-TR4-S-1530 SS+7d | 100% |
| CP09-EN-TR4-A-1620 |  | Steps Works-Shop Drawing Approval | 14d | 2024-10-14 A | 2024-10-29 A | CP09-EN-TR4-S-1620 FF+7d, CP09-EN-TR4-S-1620 SS+7d | 100% |
| CP09-EN-TR4-A-1630 |  | Seats Works-Shop Drawing Approval | 14d | 2024-10-21 A | 2024-10-27 A | CP09-EN-TR4-S-1630 FF+7d, CP09-EN-TR4-S-1630 SS+7d | 100% |
| CP09-EN-TR4-A-1640 |  | Pool Shower Works-Shop Drawing Approval | 14d | 2025-08-18 A | 2025-08-22 A | CP09-EN-TR4-S-1640 FF+7d, CP09-EN-TR4-S-1640 SS+7d | 100% |
| CP09-EN-TR4-A-1650 |  | Handrails Works-Shop Drawing Approval | 14d | 2025-08-18 A | 2025-08-22 A | CP09-EN-TR4-S-1650 FF+7d, CP09-EN-TR4-S-1650 FS+7d | 100% |
| CP09-EN-TR4-A-1660 |  | Landscape Furntiure-Shop Drawing Approval | 14d | 2025-08-18 A | 2025-08-22 A | CP09-EN-TR4-S-1660 FF+7d, CP09-EN-TR4-S-1660 SS+7d | 100% |
|  | 5 | **Electrical Works** |  | 2025-05-18 | 2025-05-22 |  |  |

| ID | WBS | Task | Duration | Start | Finish | Predecessors | Complete |
| --- | --- | --- | --- | --- | --- | --- | --- |
| CP09-EN-TR4-A-1670 |  | Power Cables-Shop Drawing Approval | 14d | 2025-05-18 A | 2025-05-22 A | CP09-EN-TR4-S-1670 FF+7d, CP09-EN-TR4-S-1670 SS+7d | 100% |
| CP09-EN-TR4-A-1680 |  | Connecting Pillars-Shop Drawing Approval | 14d | 2025-05-18 A | 2025-05-22 A | CP09-EN-TR4-S-1680 FF+7d, CP09-EN-TR4-S-1680 SS+7d | 100% |
|  | 6 | **Sinage** |  | 2025-07-06 | 2025-07-10 |  |  |
| CP09-EN-TR4-A-1690 |  | Sinage-Shop Drawing Approval | 14d | 2025-07-06 A | 2025-07-10 A | CP09-EN-TR4-S-1690 FF+7d, CP09-EN-TR4-S-1690 SS+7d | 100% |
|  | 7 | **Play Field Equipment** |  | 2025-08-18 | 2025-08-22 |  |  |
| CP09-EN-TR4-A-1700 |  | Play Field Equipment-Shop Drawing Approval | 14d | 2025-08-18 A | 2025-08-22 A | CP09-EN-TR4-S-1700 FF+7d, CP09-EN-TR4-S-1700 FS+7d | 100% |
|  | 8 | **Irrigation Networks** |  | 2024-10-23 | 2024-10-29 |  |  |
| CP09-EN-TR4-A-1710 |  | Irrigation Networks Layout -Shop Drawing Approval | 14d | 2024-10-23 A | 2024-10-29 A | CP09-EN-TR4-S-1710 FF+7d, CP09-EN-TR4-S-1710 SS+7d | 100% |
|  | 9 | **Planting** |  | 2024-10-14 | 2024-10-16 |  |  |
| CP09-EN-TR4-A-1720 |  | Plantings -Shop Drawing Approval | 14d | 2024-10-14 A | 2024-10-16 A | CP09-EN-TR4-S-1720 FF+7d, CP09-EN-TR4-S-1720 SS+7d | 100% |
|  | 10 | **Lighting** |  | 2024-10-20 | 2024-10-22 |  |  |
| CP09-EN-TR4-A-1730 |  | Exterior Lighting for Softlandscape-Shop Drawing Approval | 14d | 2024-10-20 A | 2024-10-22 A | CP09-EN-TR4-S-1730 FF+7d, CP09-EN-TR4-S-1730 SS+7d | 100% |
|  | 2 | **Terrace # 05** |  | 2024-04-21 | 2026-01-16 |  |  |
|  | 2 | **Shopdrwaings Submittal** |  | 2024-04-21 | 2026-01-16 |  |  |
|  | 1 | **Swimming Pool & MR** |  | 2024-08-03 | 2026-01-16 |  |  |
| CP09-EN-TR5-S-1750 |  | Swimmimg Pool & MR Concrete dimension shop drawing Submittal | 7d | 2024-08-03 A | 2024-08-03 A | CP09-CLD-1010 | 100% |
| CP09-EN-TR5-S-1770 |  | Swimmimg Pool & MR Water Proofing Worksshop drawing Submittal | 7d | 2024-08-03 A | 2024-08-03 A | CP09-EN-TR3-S-1020, CP09-PR-CV-A-1010 | 100% |
| CP09-EN-TR5-S-1820 |  | Swimmimg Pool & MR Mechnical Works shop drawing Submittal | 7d | 2024-09-04 A | 2024-09-04 A | CP09-EN-TR3-S-1080, CP09-PR-ME-A-1000, CP09-PR-ME-A-1010, CP09-PR-ME-A-1020, CP09-PR-ME-A-1030, CP09-PR-ME-A-1040, CP09-PR-ME-A-1050, CP09-PR-ME-A-1060, CP09-PR-ME-A-1070, CP09-PR-ME-A-1080 | 100% |
| CP09-EN-TR5-S-1830 |  | Swimmimg Pool & MR Electrical Works shop drawing Submittal | 7d | 2024-09-04 A | 2026-01-16 A | CP09-EN-TR3-S-1090, CP09-PR-EL-A-1000, CP09-PR-EL-A-1010, CP09-PR-EL-A-1020, CP09-PR-EL-A-1030, CP09-PR-EL-A-1040, CP09-PR-EL-A-1050, CP09-PR-EL-A-1140 | 100% |
| CP09-EN-TR5-S-1760 |  | Swimmimg Pool & MR Steel reinforcement shop drawing Submittal | 7d | 2025-07-06 A | 2025-07-10 A | CP09-EN-TR5-S-1750 | 100% |
| CP09-EN-TR5-S-1790 |  | Swimmimg Pool & MR Granite Works shop drawing Submittal | 7d | 2025-08-18 A | 2025-08-22 A | CP09-EN-TR3-S-1050, CP09-PR-CV-A-1040 | 100% |
| CP09-EN-TR5-S-1800 |  | Swimmimg Pool & MR Ladders Works shop drawing Submittal | 7d | 2025-08-18 A | 2025-08-22 A | CP09-EN-TR3-S-1060, CP09-PR-CV-A-1050 | 100% |
| CP09-EN-TR5-S-1810 |  | Swimmimg Pool & MR Handrial Works shop drawing Submittal | 7d | 2025-08-18 A | 2025-08-22 A | CP09-EN-TR3-S-1070, CP09-PR-CV-A-1060 | 100% |
| CP09-EN-TR5-S-1780 |  | Swimmimg Pool & MR Mosaics Works shop drawing Submittal | 7d | 2026-01-12 A | 2026-01-16 A | CP09-EN-TR3-S-1040, CP09-PR-CV-A-1030 | 100% |
| CP09-EN-TR5-S-2110 |  | Swimmimg Pool & MR Fininshes shop drawing Submittal | 7d | 2026-01-12 A | 2026-01-16 A | CP09-EN-TR3-S-1370, CP09-PR-CV-A-1070, CP09-PR-CV-A-1080, CP09-PR-CV-A-1110 | 100% |
|  | 2 | **Earth Work** |  | 2025-07-06 | 2025-07-10 |  |  |
| CP09-EN-TR5-S-1840 |  | Sub Garde shop drawing Submittal | 3d | 2025-07-06 A | 2025-07-10 A | CP09-EN-TR3-S-1100, CP09-CLD-1010 | 100% |
|  | 3 | **Cheek & Retaning Wall** |  | 2024-10-27 | 2025-08-22 |  |  |
| CP09-EN-TR5-S-1880 |  | Cheek & Retaning Wall Masonary Works shop drawing Submittal | 6.56d | 2024-10-27 A | 2025-05-22 A | CP09-EN-TR3-S-1140, CP09-PR-CV-A-1020 | 100% |
| CP09-EN-TR5-S-1890 |  | Cheek & Retaning Wall Marble Works shop drawing Submittal | 6.56d | 2024-10-27 A | 2025-05-22 A | CP09-EN-TR3-S-1150, CP09-PR-CV-A-1120 | 100% |
| CP09-EN-TR5-S-1850 |  | Cheek & Retaning Wall Concrete dimension shop drawing Submittal | 6.56d | 2025-08-18 A | 2025-08-22 A | CP09-EN-TR3-S-1110, CP09-PR-CV-A-1000 | 100% |
| CP09-EN-TR5-S-1860 |  | Cheek & Retaning Wall Steel reinforcement shop drawing Submittal | 6.56d | 2025-08-18 A | 2025-08-22 A | CP09-EN-TR3-S-1120, CP09-PR-CV-A-1130 | 100% |
| CP09-EN-TR5-S-1870 |  | Cheek & Retaning Wall Water Proofing Works shop drawing Submittal | 6.56d | 2025-08-18 A | 2025-08-22 A | CP09-EN-TR3-S-1130, CP09-PR-CV-A-1010 | 100% |
|  | 4 | **Hardscape Works** |  | 2024-08-21 | 2025-08-22 |  |  |
| CP09-EN-TR5-S-1970 |  | Flush Curb Works Shop Drawing Submittal | 6.56d | 2024-08-21 A | 2024-08-26 A | CP09-EN-TR3-S-1230, CP09-PR-HD-A-1080 | 100% |
| CP09-EN-TR5-S-1980 |  | Interlocking Paving Works Shop Drawing Submittal | 6.56d | 2024-08-21 A | 2024-08-26 A | CP09-EN-TR3-S-1240, CP09-PR-HD-A-1090, CP09-PR-HD-A-1180 | 100% |
| CP09-EN-TR5-S-1910 |  | Marble Paving - Side Walks Works Shop Drawing Submittal | 6.56d | 2024-10-16 A | 2025-05-22 A | CP09-EN-TR3-S-1170, CP09-PR-HD-A-1010 | 100% |
| CP09-EN-TR5-S-1920 |  | WPC - Side Walks Works Shop Drawing Submittal | 6.56d | 2024-10-16 A | 2025-05-22 A | CP09-EN-TR3-S-1180, CP09-PR-HD-A-1020 | 100% |
| CP09-EN-TR5-S-1930 |  | Gravel - Side Walks Works Shop Drawing Submittal | 6.56d | 2024-10-16 A | 2025-05-22 A | CP09-EN-TR3-S-1190, CP09-PR-HD-A-1030 | 100% |
| CP09-EN-TR5-S-1940 |  | Crushed Stone - Side Walks Works Shop Drawing Submittal | 6.56d | 2024-10-16 A | 2025-05-22 A | CP09-EN-TR3-S-1200, CP09-PR-HD-A-1040 | 100% |
| CP09-EN-TR5-S-1950 |  | Loose Gravel - Side Walks Works Shop Drawing Submittal | 6.56d | 2024-10-16 A | 2025-05-22 A | CP09-EN-TR3-S-1210, CP09-PR-HD-A-1050 | 100% |
| CP09-EN-TR5-S-1960 |  | Clean sand layer - Side Walks Works Shop Drawing Submittal | 7d | 2024-10-16 A | 2025-05-22 A | CP09-EN-TR3-S-1220, CP09-PR-HD-A-1060, CP09-PR-HD-A-1070 | 100% |
| CP09-EN-TR5-S-1990 |  | Steps Works shop Shop Drawing Submittal | 6.56d | 2024-10-21 A | 2024-10-28 A | CP09-EN-TR3-S-1250, CP09-PR-HD-A-1100 | 100% |
| CP09-EN-TR5-S-1900 |  | Concrete Exposed Aggregate - Side Walks Shop Drawing Submittal | 6.56d | 2025-05-18 A | 2025-05-22 A | CP09-EN-TR3-S-1160, CP09-PR-HD-A-1000 | 100% |
| CP09-EN-TR5-S-2000 |  | Seats Works Shop Shop Drawing Submittal | 6.56d | 2025-08-18 A | 2025-08-22 A | CP09-EN-TR3-S-1260, CP09-PR-HD-A-1110 | 100% |
| CP09-EN-TR5-S-2010 |  | Pool Shower Works Shop Drawing Submittal | 6.56d | 2025-08-18 A | 2025-08-22 A | CP09-EN-TR3-S-1270, CP09-PR-HD-A-1120, CP09-PR-HD-A-1130, CP09-PR-HD-A-1140, CP09-PR-HD-A-1150 | 100% |
| CP09-EN-TR5-S-2020 |  | Handrails Works Shop Drawing Submittal | 6.56d | 2025-08-18 A | 2025-08-22 A | CP09-EN-TR3-S-1280, CP09-PR-HD-A-1160, CP09-PR-HD-A-1170 | 100% |
| CP09-EN-TR5-S-2030 |  | Landscape Furntiure Shop Drawing Submittal | 6.56d | 2025-08-18 A | 2025-08-22 A | CP09-EN-TR3-S-1290, CP09-PR-FN-A-1000, CP09-PR-FN-A-1010, CP09-PR-FN-A-1020, CP09-PR-FN-A-1030, CP09-PR-FN-A-1040, CP09-PR-FN-A-1050, CP09-PR-FN-A-1060, CP09-PR-FN-A-1070, CP09-PR-FN-A-1080 | 100% |
|  | 5 | **Electrical Works** |  | 2025-05-18 | 2025-05-22 |  |  |
| CP09-EN-TR5-S-2040 |  | Power Cables Shop Drawing Submittal | 6.56d | 2025-05-18 A | 2025-05-22 A | CP09-EN-TR3-S-1300, CP09-PR-EL-A-1060 | 100% |
| CP09-EN-TR5-S-2050 |  | Connecting Pillars Shop Drawing Submittal | 6.56d | 2025-05-18 A | 2025-05-22 A | CP09-EN-TR3-S-1310, CP09-PR-EL-A-1070 | 100% |
|  | 6 | **Sinage** |  | 2025-07-06 | 2025-07-10 |  |  |
| CP09-EN-TR5-S-2060 |  | Sinage Shop Drawing Submittal | 6.56d | 2025-07-06 A | 2025-07-10 A | CP09-EN-TR3-S-1320, CP09-PR-SN-A-1000, CP09-PR-SN-A-1010, CP09-PR-SN-A-1020, CP09-PR-SN-A-1030, CP09-PR-SN-A-1040 | 100% |
|  | 7 | **Play Field Equipment** |  | 2025-08-18 | 2025-08-22 |  |  |
| CP09-EN-TR5-S-2070 |  | Play Field Equipment Shop Drawing Submittal | 6.56d | 2025-08-18 A | 2025-08-22 A | CP09-EN-TR3-S-1330, CP09-PR-PE-A-1000, CP09-PR-PE-A-1010, CP09-PR-PE-A-1020, CP09-PR-PE-A-1030, CP09-PR-PE-A-1040, CP09-PR-PE-A-1050, CP09-PR-PE-A-1060, CP09-PR-PE-A-1070, CP09-PR-PE-A-1080, CP09-PR-PE-A-1090, CP09-PR-PE-A-1100 | 100% |
|  | 8 | **Irrigation Networks** |  | 2024-04-21 | 2025-05-22 |  |  |
| CP09-EN-TR5-S-2080 |  | Irrigation Networks Layout Shop Drawing Submittal | 6.56d | 2024-04-21 A | 2025-05-22 A | CP09-EN-TR3-S-1340, CP09-PR-IR-A-1000, CP09-PR-IR-A-1010, CP09-PR-IR-A-1020, CP09-PR-IR-A-1030, CP09-PR-IR-A-1040, CP09-PR-IR-A-1050, CP09-PR-IR-A-1060, CP09-PR-IR-A-1070, CP09-PR-IR-A-1080 | 100% |
|  | 9 | **Planting** |  | 2024-04-21 | 2024-11-30 |  |  |
| CP09-EN-TR5-S-2090 |  | Plantings Shop Drawing Submittal | 6.56d | 2024-04-21 A | 2024-11-30 A | CP09-EN-TR3-S-1350, CP09-EN-TR5-S-2080, CP09-PR-PN-A-1000, CP09-PR-PN-A-1010, CP09-PR-PN-A-1020, CP09-PR-PN-A-1030, CP09-PR-PN-A-1040, CP09-PR-PN-A-1050, CP09-PR-PN-A-1060, CP09-PR-PN-A-1070, CP09-PR-PN-A-1080 | 100% |
|  | 10 | **Lighting** |  | 2024-10-10 | 2024-10-19 |  |  |
| CP09-EN-TR5-S-2100 |  | Exterior Lighting for Softlandscape Shop Drawing Submittal | 6.56d | 2024-10-10 A | 2024-10-19 A | CP09-EN-TR3-S-1360, CP09-EN-TR5-S-2090, CP09-PR-EL-A-1080, CP09-PR-EL-A-1090, CP09-PR-EL-A-1100, CP09-PR-EL-A-1110, CP09-PR-EL-A-1120, CP09-PR-EL-A-1130 | 100% |
|  | 1 | **Shopdrwaings Approval** |  | 2024-08-03 | 2026-01-16 |  |  |
|  | 1 | **Swimming Pool & MR** |  | 2024-08-03 | 2026-01-16 |  |  |
| CP09-EN-TR5-A-1750 |  | Swimmimg Pool & MR Concrete dimension-Shop Drawing Approval | 14d | 2024-08-03 A | 2024-08-14 A | CP09-EN-TR5-S-1750 FF+7d, CP09-EN-TR5-S-1750 SS+7d | 100% |
| CP09-EN-TR5-A-1820 |  | Swimmimg Pool & MR Mechnical Works-Shop Drawing Approval | 14d | 2024-09-04 A | 2024-09-05 A | CP09-EN-TR5-S-1820 FF+7d, CP09-EN-TR5-S-1820 SS+7d | 100% |
| CP09-EN-TR5-A-1760 |  | Swimmimg Pool & MR Steel reinforcement-Shop Drawing Approval | 14d | 2025-07-06 A | 2025-07-10 A | CP09-EN-TR5-S-1760 FF+7d, CP09-EN-TR5-S-1760 SS+7d | 100% |
| CP09-EN-TR5-A-1790 |  | Swimmimg Pool & MR Granite Works-Shop Drawing Approval | 14d | 2025-08-18 A | 2025-08-22 A | CP09-EN-TR5-S-1790 FF+7d, CP09-EN-TR5-S-1790 SS+7d | 100% |
| CP09-EN-TR5-A-1800 |  | Swimmimg Pool & MR Ladders Works-Shop Drawing Approval | 14d | 2025-08-18 A | 2025-08-22 A | CP09-EN-TR5-S-1800 FF+7d, CP09-EN-TR5-S-1800 SS+7d | 100% |
| CP09-EN-TR5-A-1810 |  | Swimmimg Pool & MR Handrial Works-Shop Drawing Approval | 14d | 2025-08-18 A | 2025-08-22 A | CP09-EN-TR5-S-1810 FF+7d, CP09-EN-TR5-S-1810 SS+7d | 100% |
| CP09-EN-TR5-A-1770 |  | Swimmimg Pool & MR Water Proofing Works-Shop Drawing Approval | 14d | 2026-01-12 A | 2026-01-16 A | CP09-EN-TR5-S-1770 FF+7d, CP09-EN-TR5-S-1770 SS+7d | 100% |

| ID | WBS | Task | Duration | Start | Finish | Predecessors | Complete |
| --- | --- | --- | --- | --- | --- | --- | --- |
| CP09-EN-TR5-A-1780 |  | Swimmimg Pool & MR Mosaics Works-Shop Drawing Approval | 14d | 2026-01-12 A | 2026-01-16 A | CP09-EN-TR5-S-1780 FF+7d, CP09-EN-TR5-S-1780 SS+7d | 100% |
| CP09-EN-TR5-A-1830 |  | Swimmimg Pool & MR Electrical Works-Shop Drawing Approval | 14d | 2026-01-12 A | 2026-01-16 A | CP09-EN-TR5-S-1830 FF+7d, CP09-EN-TR5-S-1830 SS+7d | 100% |
| CP09-EN-TR5-A-2110 |  | Swimmimg Pool & MR Fininshes shop drawing Approval | 14d | 2026-01-12 A | 2026-01-16 A | CP09-EN-TR5-S-2110 FF+7d, CP09-EN-TR5-S-2110 SS+7d | 100% |
|  | 2 | **Earth Work** |  | 2025-07-06 | 2025-07-10 |  |  |
| CP09-EN-TR5-A-1840 |  | Sub Garde Shopdrwaings-Shop Drawing Approval | 14d | 2025-07-06 A | 2025-07-10 A | CP09-EN-TR5-S-1840 FF+7d, CP09-EN-TR5-S-1840 SS+7d | 100% |
|  | 3 | **Cheek & Retaning Wall** |  | 2025-08-18 | 2025-08-22 |  |  |
| CP09-EN-TR5-A-1850 |  | Cheek & Retaning Wall Concrete dimension-ShopDrawing Approval | 14d | 2025-08-18 A | 2025-08-22 A | CP09-EN-TR5-S-1850 FF+7d, CP09-EN-TR5-S-1850 SS+7d | 100% |
| CP09-EN-TR5-A-1860 |  | Cheek & Retaning Wall Steel reinforcement-Shop Drawing Approval | 14d | 2025-08-18 A | 2025-08-22 A | CP09-EN-TR5-S-1860 FF+7d, CP09-EN-TR5-S-1860 SS+7d | 100% |
| CP09-EN-TR5-A-1870 |  | Cheek & Retaning Wall Water Proofing Works-Shop Drawing Approval | 14d | 2025-08-18 A | 2025-08-22 A | CP09-EN-TR5-S-1870 FF+7d, CP09-EN-TR5-S-1870 SS+7d | 100% |
| CP09-EN-TR5-A-1880 |  | Cheek & Retaning Wall Masonary Works-Shop Drawing Approval | 14d | 2025-08-18 A | 2025-08-22 A | CP09-EN-TR5-S-1880 FF+7d, CP09-EN-TR5-S-1880 SS+7d | 100% |
| CP09-EN-TR5-A-1890 |  | Cheek & Retaning Wall Marble Works-Shop Drawing Approval | 14d | 2025-08-18 A | 2025-08-22 A | CP09-EN-TR5-S-1890 FF+7d, CP09-EN-TR5-S-1890 SS+7d | 100% |
|  | 4 | **Hardscape Works** |  | 2024-08-21 | 2025-08-22 |  |  |
| CP09-EN-TR5-A-1970 |  | Flush Curb Works-Shop Drawing Approval | 14d | 2024-08-21 A | 2024-08-26 A | CP09-EN-TR5-S-1970 FF+7d, CP09-EN-TR5-S-1970 SS+7d | 100% |
| CP09-EN-TR5-A-1980 |  | Interlocking Paving Works-Shop Drawing Approval | 14d | 2024-08-21 A | 2024-08-26 A | CP09-EN-TR5-S-1980 FF+7d, CP09-EN-TR5-S-1980 SS+7d | 100% |
| CP09-EN-TR5-A-1990 |  | Steps Works-Shop Drawing Approval | 14d | 2024-10-28 A | 2024-11-11 A | CP09-EN-TR5-S-1990 FF+7d, CP09-EN-TR5-S-1990 SS+7d | 100% |
| CP09-EN-TR5-A-1900 |  | Concrete Exposed Aggregate - Side Walks-Shop Drawing Approval | 14d | 2025-05-18 A | 2025-05-22 A | CP09-EN-TR5-S-1900 FF+7d, CP09-EN-TR5-S-1900 SS+7d | 100% |
| CP09-EN-TR5-A-1910 |  | Marble Paving - Side Walks Works-Shop Drawing Approval | 14d | 2025-05-18 A | 2025-05-22 A | CP09-EN-TR5-S-1910 FF+7d, CP09-EN-TR5-S-1910 SS+7d | 100% |
| CP09-EN-TR5-A-1920 |  | WPC - Side Walks Works -Shop Drawing Approval | 14d | 2025-05-18 A | 2025-05-22 A | CP09-EN-TR5-S-1920 FF+7d, CP09-EN-TR5-S-1920 SS+7d | 100% |
| CP09-EN-TR5-A-1930 |  | Gravel - Side Walks Works-Shop Drawing Approval | 14d | 2025-05-18 A | 2025-05-22 A | CP09-EN-TR5-S-1930 FF+7d, CP09-EN-TR5-S-1930 SS+7d | 100% |
| CP09-EN-TR5-A-1940 |  | Crushed Stone - Side Walks Works-Shop Drawing Approval | 14d | 2025-05-18 A | 2025-05-22 A | CP09-EN-TR5-S-1940 FF+7d, CP09-EN-TR5-S-1940 SS+7d | 100% |
| CP09-EN-TR5-A-1950 |  | Loose Gravel - Side Walks Works-Shop Drawing Approval | 14d | 2025-05-18 A | 2025-05-22 A | CP09-EN-TR5-S-1950 FF+7d, CP09-EN-TR5-S-1950 SS+7d | 100% |
| CP09-EN-TR5-A-1960 |  | Clean sand layer - Side Walks Works-Shop Drawing Approval | 14d | 2025-05-18 A | 2025-05-22 A | CP09-EN-TR5-S-1960 FF+7d, CP09-EN-TR5-S-1960 SS+7d | 100% |
| CP09-EN-TR5-A-2000 |  | Seats Works-Shop Drawing Approval | 14d | 2025-08-18 A | 2025-08-22 A | CP09-EN-TR5-S-2000 FF+7d, CP09-EN-TR5-S-2000 SS+7d | 100% |
| CP09-EN-TR5-A-2010 |  | Pool Shower Works-Shop Drawing Approval | 14d | 2025-08-18 A | 2025-08-22 A | CP09-EN-TR5-S-2010 FF+7d, CP09-EN-TR5-S-2010 SS+7d | 100% |
| CP09-EN-TR5-A-2020 |  | Handrails Works-Shop Drawing Approval | 14d | 2025-08-18 A | 2025-08-22 A | CP09-EN-TR5-S-2020 FF+7d, CP09-EN-TR5-S-2020 SS+7d | 100% |
| CP09-EN-TR5-A-2030 |  | Landscape Furntiure-Shop Drawing Approval | 14d | 2025-08-18 A | 2025-08-22 A | CP09-EN-TR5-S-2030 FF+7d, CP09-EN-TR5-S-2030 SS+7d | 100% |
|  | 5 | **Electrical Works** |  | 2025-05-18 | 2025-05-22 |  |  |
| CP09-EN-TR5-A-2040 |  | Power Cables-Shop Drawing Approval | 14d | 2025-05-18 A | 2025-05-22 A | CP09-EN-TR5-S-2040 FF+7d, CP09-EN-TR5-S-2040 SS+7d | 100% |
| CP09-EN-TR5-A-2050 |  | Connecting Pillars-Shop Drawing Approval | 14d | 2025-05-18 A | 2025-05-22 A | CP09-EN-TR5-S-2050 FF+7d, CP09-EN-TR5-S-2050 SS+7d | 100% |
|  | 6 | **Sinage** |  | 2025-07-06 | 2025-07-10 |  |  |
| CP09-EN-TR5-A-2060 |  | Sinage-Shop Drawing Approval | 14d | 2025-07-06 A | 2025-07-10 A | CP09-EN-TR5-S-2060 FF+7d, CP09-EN-TR5-S-2060 SS+7d | 100% |
|  | 7 | **Play Field Equipment** |  | 2025-08-18 | 2025-08-22 |  |  |
| CP09-EN-TR5-A-2070 |  | Play Field Equipment-Shop Drawing Approval | 14d | 2025-08-18 A | 2025-08-22 A | CP09-EN-TR5-S-2070 FF+7d, CP09-EN-TR5-S-2070 SS+7d | 100% |
|  | 8 | **Irrigation Networks** |  | 2025-07-06 | 2025-07-10 |  |  |
| CP09-EN-TR5-A-2080 |  | Irrigation Networks Layout -Shop Drawing Approval | 14d | 2025-07-06 A | 2025-07-10 A | CP09-EN-TR5-S-2080 FF+7d, CP09-EN-TR5-S-2080 SS+7d | 100% |
|  | 9 | **Planting** |  | 2024-11-30 | 2024-12-09 |  |  |
| CP09-EN-TR5-A-2090 |  | Plantings -Shop Drawing Approval | 14d | 2024-11-30 A | 2024-12-09 A | CP09-EN-TR5-S-2090 FF+7d, CP09-EN-TR5-S-2090 SS+7d | 100% |
|  | 10 | **Lighting** |  | 2024-10-19 | 2024-10-22 |  |  |
| CP09-EN-TR5-A-2100 |  | Exterior Lighting for Softlandscape-Shop Drawing Approval | 14d | 2024-10-19 A | 2024-10-22 A | CP09-EN-TR5-S-2100 FF+7d, CP09-EN-TR5-S-2100 SS+7d | 100% |
|  | 3 | **Terrace # 06** |  | 2024-05-12 | 2026-01-16 |  |  |
|  | 2 | **Shopdrwaings Submittal** |  | 2024-05-12 | 2026-01-16 |  |  |
|  | 1 | **Swimming Pool & MR** |  | 2024-10-20 | 2026-01-16 |  |  |
| CP09-EN-TR6-S-2130 |  | Swimmimg Pool & MR Steel reinforcement shop drawing Submittal | 7d | 2024-10-20 A | 2025-05-22 A | CP09-EN-TR8-S-2870, CP09-EN-TR6-S-2120 | 100% |
| CP09-EN-TR6-S-2120 |  | Swimmimg Pool & MR Concrete dimension shop drawing Submittal | 7d | 2025-05-18 A | 2025-05-22 A | CP09-EN-TR8-S-2860, CP09-CLD-1010 | 100% |
| CP09-EN-TR6-S-2190 |  | Swimmimg Pool & MR Mechnical Works shop drawing Submittal | 7d | 2025-05-18 A | 2025-05-22 A | CP09-EN-TR4-S-1450, CP09-PR-ME-A-1000, CP09-PR-ME-A-1010, CP09-PR-ME-A-1020, CP09-PR-ME-A-1030, CP09-PR-ME-A-1040, CP09-PR-ME-A-1050, CP09-PR-ME-A-1060, CP09-PR-ME-A-1070, CP09-PR-ME-A-1080 | 100% |
| CP09-EN-TR6-S-2160 |  | Swimmimg Pool & MR Granite Works shop drawing Submittal | 7d | 2025-08-18 A | 2025-08-22 A | CP09-EN-TR4-S-1420, CP09-PR-CV-A-1040 | 100% |
| CP09-EN-TR6-S-2170 |  | Swimmimg Pool & MR Ladders Works shop drawing Submittal | 7d | 2025-08-18 A | 2025-08-22 A | CP09-PR-CV-A-1050 | 100% |
| CP09-EN-TR6-S-2180 |  | Swimmimg Pool & MR Handrial Works shop drawing Submittal | 7d | 2025-08-18 A | 2025-08-22 A | CP09-EN-TR4-S-1440, CP09-PR-CV-A-1060 | 100% |
| CP09-EN-TR6-S-2140 |  | Swimmimg Pool & MR Water Proofing Worksshop drawing Submittal | 7d | 2026-01-12 A | 2026-01-16 A | CP09-EN-TR4-S-1400, CP09-PR-CV-A-1010 | 100% |
| CP09-EN-TR6-S-2150 |  | Swimmimg Pool & MR Mosaics Works shop drawing Submittal | 7d | 2026-01-12 A | 2026-01-16 A | CP09-EN-TR4-S-1410, CP09-PR-CV-A-1030 | 100% |
| CP09-EN-TR6-S-2200 |  | Swimmimg Pool & MR Electrical Works shop drawing Submittal | 7d | 2026-01-12 A | 2026-01-16 A | CP09-EN-TR4-S-1460, CP09-PR-EL-A-1000, CP09-PR-EL-A-1010, CP09-PR-EL-A-1020, CP09-PR-EL-A-1030, CP09-PR-EL-A-1040, CP09-PR-EL-A-1050, CP09-PR-EL-A-1140 | 100% |
| CP09-EN-TR6-S-2480 |  | Swimmimg Pool & MR Fininshes shop drawing Submittal | 7d | 2026-01-12 A | 2026-01-16 A | CP09-EN-TR4-S-1740, CP09-PR-CV-A-1070, CP09-PR-CV-A-1080, CP09-PR-CV-A-1110 | 100% |
|  | 2 | **Earth Work** |  | 2025-05-18 | 2025-05-22 |  |  |
| CP09-EN-TR6-S-2210 |  | Sub Garde shop drawing Submittal | 3d | 2025-05-18 A | 2025-05-22 A | CP09-EN-TR4-S-1470, CP09-CLD-1010 | 100% |
|  | 3 | **Cheek & Retaning Wall** |  | 2024-11-06 | 2025-07-10 |  |  |
| CP09-EN-TR6-S-2250 |  | Cheek & Retaning Wall Masonary Works shop drawing Submittal | 6.56d | 2024-11-06 A | 2025-05-22 A | CP09-EN-TR4-S-1510, CP09-PR-CV-A-1020 | 100% |
| CP09-EN-TR6-S-2260 |  | Cheek & Retaning Wall Marble Works shop drawing Submittal | 6.56d | 2024-11-06 A | 2025-05-22 A | CP09-EN-TR4-S-1520, CP09-PR-CV-A-1120 | 100% |
| CP09-EN-TR6-S-2220 |  | Cheek & Retaning Wall Concrete dimension shop drawing Submittal | 6.56d | 2025-07-06 A | 2025-07-10 A | CP09-EN-TR4-S-1480, CP09-PR-CV-A-1000 | 100% |
| CP09-EN-TR6-S-2230 |  | Cheek & Retaning Wall Steel reinforcement shop drawing Submittal | 6.56d | 2025-07-06 A | 2025-07-10 A | CP09-EN-TR4-S-1490, CP09-PR-CV-A-1130 | 100% |
| CP09-EN-TR6-S-2240 |  | Cheek & Retaning Wall Water Proofing Works shop drawing Submittal | 6.56d | 2025-07-06 A | 2025-07-10 A | CP09-EN-TR4-S-1500, CP09-PR-CV-A-1010 | 100% |
|  | 4 | **Hardscape Works** |  | 2024-08-11 | 2025-08-22 |  |  |
| CP09-EN-TR6-S-2400 |  | Landscape Furntiure Shop Drawing Submittal | 6.56d | 2024-08-11 A | 2025-08-22 A | CP09-EN-TR4-S-1660, CP09-PR-FN-A-1000, CP09-PR-FN-A-1010, CP09-PR-FN-A-1020, CP09-PR-FN-A-1030, CP09-PR-FN-A-1040, CP09-PR-FN-A-1050, CP09-PR-FN-A-1060, CP09-PR-FN-A-1070, CP09-PR-FN-A-1080 | 100% |
| CP09-EN-TR6-S-2350 |  | Interlocking Paving Works Shop Drawing Submittal | 6.56d | 2024-08-27 A | 2024-08-28 A | CP09-EN-TR4-S-1610, CP09-PR-HD-A-1090, CP09-PR-HD-A-1180 | 100% |
| CP09-EN-TR6-S-2360 |  | Steps Works shop Shop Drawing Submittal | 6.56d | 2024-11-16 A | 2025-08-22 A | CP09-EN-TR4-S-1620, CP09-PR-HD-A-1100 | 100% |
| CP09-EN-TR6-S-2270 |  | Concrete Exposed Aggregate - Side Walks Shop Drawing Submittal | 6.56d | 2025-05-18 A | 2025-05-22 A | CP09-EN-TR4-S-1530, CP09-PR-HD-A-1000 | 100% |
| CP09-EN-TR6-S-2280 |  | Marble Paving - Side Walks Works Shop Drawing Submittal | 6.56d | 2025-05-18 A | 2025-05-22 A | CP09-EN-TR4-S-1540, CP09-PR-HD-A-1010 | 100% |
| CP09-EN-TR6-S-2290 |  | WPC - Side Walks Works Shop Drawing Submittal | 6.56d | 2025-05-18 A | 2025-05-22 A | CP09-EN-TR4-S-1550, CP09-PR-HD-A-1020 | 100% |
| CP09-EN-TR6-S-2300 |  | Gravel - Side Walks Works Shop Drawing Submittal | 6.56d | 2025-05-18 A | 2025-05-22 A | CP09-EN-TR4-S-1560, CP09-PR-HD-A-1030 | 100% |
| CP09-EN-TR6-S-2310 |  | Crushed Stone - Side Walks Works Shop Drawing Submittal | 6.56d | 2025-05-18 A | 2025-05-22 A | CP09-EN-TR4-S-1570, CP09-PR-HD-A-1040 | 100% |
| CP09-EN-TR6-S-2320 |  | Loose Gravel - Side Walks Works Shop Drawing Submittal | 6.56d | 2025-05-18 A | 2025-05-22 A | CP09-EN-TR4-S-1580, CP09-PR-HD-A-1050 | 100% |

| ID | WBS | Task | Duration | Start | Finish | Predecessors | Complete |
| --- | --- | --- | --- | --- | --- | --- | --- |
| CP09-EN-TR6-S-2330 |  | Clean sand layer - Side Walks Works Shop Drawing Submittal | 7d | 2025-05-18 A | 2025-05-22 A | CP09-EN-TR4-S-1590, CP09-PR-HD-A-1060, CP09-PR-HD-A-1070 | 100% |
| CP09-EN-TR6-S-2340 |  | Flush Curb Works Shop Drawing Submittal | 6.56d | 2025-05-18 A | 2025-05-22 A | CP09-EN-TR4-S-1600, CP09-PR-HD-A-1080 | 100% |
| CP09-EN-TR6-S-2370 |  | Seats Works Shop Shop Drawing Submittal | 6.56d | 2025-08-18 A | 2025-08-22 A | CP09-EN-TR4-S-1630, CP09-PR-HD-A-1110 | 100% |
| CP09-EN-TR6-S-2380 |  | Pool Shower Works Shop Drawing Submittal | 6.56d | 2025-08-18 A | 2025-08-22 A | CP09-EN-TR4-S-1640, CP09-PR-HD-A-1120, CP09-PR-HD-A-1130, CP09-PR-HD-A-1140, CP09-PR-HD-A-1150 | 100% |
| CP09-EN-TR6-S-2390 |  | Handrails Works Shop Drawing Submittal | 6.56d | 2025-08-18 A | 2025-08-22 A | CP09-EN-TR4-S-1650, CP09-PR-HD-A-1160, CP09-PR-HD-A-1170 | 100% |
|  | 5 | **Electrical Works** |  | 2025-05-18 | 2025-05-22 |  |  |
| CP09-EN-TR6-S-2410 |  | Power Cables Shop Drawing Submittal | 6.56d | 2025-05-18 A | 2025-05-22 A | CP09-EN-TR4-S-1670, CP09-PR-EL-A-1060 | 100% |
| CP09-EN-TR6-S-2420 |  | Connecting Pillars Shop Drawing Submittal | 6.56d | 2025-05-18 A | 2025-05-22 A | CP09-EN-TR4-S-1680, CP09-PR-EL-A-1070 | 100% |
|  | 6 | **Sinage** |  | 2025-07-06 | 2025-07-10 |  |  |
| CP09-EN-TR6-S-2430 |  | Sinage Shop Drawing Submittal | 6.56d | 2025-07-06 A | 2025-07-10 A | CP09-EN-TR4-S-1690, CP09-PR-SN-A-1000, CP09-PR-SN-A-1010, CP09-PR-SN-A-1020, CP09-PR-SN-A-1030, CP09-PR-SN-A-1040 | 100% |
|  | 7 | **Play Field Equipment** |  | 2025-08-18 | 2025-08-22 |  |  |
| CP09-EN-TR6-S-2440 |  | Play Field Equipment Shop Drawing Submittal | 6.56d | 2025-08-18 A | 2025-08-22 A | CP09-EN-TR4-S-1700, CP09-PR-PE-A-1000, CP09-PR-PE-A-1010, CP09-PR-PE-A-1020, CP09-PR-PE-A-1030, CP09-PR-PE-A-1040, CP09-PR-PE-A-1050, CP09-PR-PE-A-1060, CP09-PR-PE-A-1070, CP09-PR-PE-A-1080, CP09-PR-PE-A-1090, CP09-PR-PE-A-1100 | 100% |
|  | 8 | **Irrigation Networks** |  | 2024-05-12 | 2025-05-22 |  |  |
| CP09-EN-TR6-S-2450 |  | Irrigation Networks Layout Shop Drawing Submittal | 6.56d | 2024-05-12 A | 2025-05-22 A | CP09-EN-TR4-S-1710, CP09-PR-IR-A-1000, CP09-PR-IR-A-1010, CP09-PR-IR-A-1020, CP09-PR-IR-A-1030, CP09-PR-IR-A-1040, CP09-PR-IR-A-1050, CP09-PR-IR-A-1060, CP09-PR-IR-A-1070, CP09-PR-IR-A-1080 | 100% |
|  | 9 | **Planting** |  | 2024-05-12 | 2024-12-08 |  |  |
| CP09-EN-TR6-S-2460 |  | Plantings Shop Drawing Submittal | 6.56d | 2024-05-12 A | 2024-12-08 A | CP09-EN-TR4-S-1720, CP09-EN-TR6-S-2450, CP09-PR-PN-A-1000, CP09-PR-PN-A-1010, CP09-PR-PN-A-1020, CP09-PR-PN-A-1030, CP09-PR-PN-A-1040, CP09-PR-PN-A-1050, CP09-PR-PN-A-1060, CP09-PR-PN-A-1070, CP09-PR-PN-A-1080 | 100% |
|  | 10 | **Lighting** |  | 2024-10-10 | 2024-10-19 |  |  |
| CP09-EN-TR6-S-2470 |  | Exterior Lighting for Softlandscape Shop Drawing Submittal | 6.56d | 2024-10-10 A | 2024-10-19 A | CP09-EN-TR4-S-1730, CP09-EN-TR6-S-2460, CP09-PR-EL-A-1080, CP09-PR-EL-A-1090, CP09-PR-EL-A-1100, CP09-PR-EL-A-1110, CP09-PR-EL-A-1120, CP09-PR-EL-A-1130 | 100% |
|  | 1 | **Shopdrwaings Approval** |  | 2024-08-28 | 2026-01-16 |  |  |
|  | 1 | **Swimming Pool & MR** |  | 2025-05-18 | 2026-01-16 |  |  |
| CP09-EN-TR6-A-2120 |  | Swimmimg Pool & MR Concrete dimension-Shop Drawing Approval | 14d | 2025-05-18 A | 2025-05-22 A | CP09-EN-TR6-S-2120 FF+7d, CP09-EN-TR6-S-2120 SS+7d | 100% |
| CP09-EN-TR6-A-2130 |  | Swimmimg Pool & MR Steel reinforcement-Shop Drawing Approval | 14d | 2025-05-18 A | 2025-05-22 A | CP09-EN-TR6-S-2130 FF+7d, CP09-EN-TR6-S-2130 SS+7d | 100% |
| CP09-EN-TR6-A-2160 |  | Swimmimg Pool & MR Granite Works-Shop Drawing Approval | 14d | 2025-08-18 A | 2025-08-22 A | CP09-EN-TR6-S-2160 FF+7d, CP09-EN-TR6-S-2160 SS+7d | 100% |
| CP09-EN-TR6-A-2170 |  | Swimmimg Pool & MR Ladders Works-Shop Drawing Approval | 14d | 2025-08-18 A | 2025-08-22 A | CP09-EN-TR6-S-2170 FF+7d, CP09-EN-TR6-S-2170 SS+7d | 100% |
| CP09-EN-TR6-A-2180 |  | Swimmimg Pool & MR Handrial Works-Shop Drawing Approval | 14d | 2025-08-18 A | 2025-08-22 A | CP09-EN-TR6-S-2180 FF+7d, CP09-EN-TR6-S-2180 SS+7d | 100% |
| CP09-EN-TR6-A-2190 |  | Swimmimg Pool & MR Mechnical Works-Shop Drawing Approval | 14d | 2025-08-18 A | 2025-08-22 A | CP09-EN-TR6-S-2190 FF+7d, CP09-EN-TR6-S-2190 SS+7d | 100% |
| CP09-EN-TR6-A-2140 |  | Swimmimg Pool & MR Water Proofing Works-Shop Drawing Approval | 14d | 2026-01-12 A | 2026-01-16 A | CP09-EN-TR6-S-2140 FF+7d, CP09-EN-TR6-S-2140 SS+7d | 100% |
| CP09-EN-TR6-A-2150 |  | Swimmimg Pool & MR Mosaics Works-Shop Drawing Approval | 14d | 2026-01-12 A | 2026-01-16 A | CP09-EN-TR6-S-2150 FF+7d, CP09-EN-TR6-S-2150 SS+7d | 100% |
| CP09-EN-TR6-A-2200 |  | Swimmimg Pool & MR Electrical Works-Shop Drawing Approval | 14d | 2026-01-12 A | 2026-01-16 A | CP09-EN-TR6-S-2200 FF+7d, CP09-EN-TR6-S-2200 SS+7d | 100% |
| CP09-EN-TR6-A-2480 |  | Swimmimg Pool & MR Fininshes shop drawing Approval | 14d | 2026-01-12 A | 2026-01-16 A | CP09-EN-TR6-S-2480 FF+7d, CP09-EN-TR6-S-2480 SS+7d | 100% |
|  | 2 | **Earth Work** |  | 2025-07-06 | 2025-07-10 |  |  |
| CP09-EN-TR6-A-2210 |  | Sub Garde Shopdrwaings-Shop Drawing Approval | 14d | 2025-07-06 A | 2025-07-10 A | CP09-EN-TR6-S-2210 FF+7d, CP09-EN-TR6-S-2210 SS+7d | 100% |
|  | 3 | **Cheek & Retaning Wall** |  | 2025-07-06 | 2025-07-10 |  |  |
| CP09-EN-TR6-A-2220 |  | Cheek & Retaning Wall Concrete dimension-ShopDrawing Approval | 14d | 2025-07-06 A | 2025-07-10 A | CP09-EN-TR6-S-2220 FF+7d, CP09-EN-TR6-S-2220 SS+7d | 100% |
| CP09-EN-TR6-A-2230 |  | Cheek & Retaning Wall Steel reinforcement-Shop Drawing Approval | 14d | 2025-07-06 A | 2025-07-10 A | CP09-EN-TR6-S-2230 FF+7d, CP09-EN-TR6-S-2230 SS+7d | 100% |
| CP09-EN-TR6-A-2240 |  | Cheek & Retaning Wall Water Proofing Works-Shop Drawing Approval | 14d | 2025-07-06 A | 2025-07-10 A | CP09-EN-TR6-S-2240 FF+7d, CP09-EN-TR6-S-2240 SS+7d | 100% |
| CP09-EN-TR6-A-2250 |  | Cheek & Retaning Wall Masonary Works-Shop Drawing Approval | 14d | 2025-07-06 A | 2025-07-10 A | CP09-EN-TR6-S-2250 FF+7d, CP09-EN-TR6-S-2250 SS+7d | 100% |
| CP09-EN-TR6-A-2260 |  | Cheek & Retaning Wall Marble Works-Shop Drawing Approval | 14d | 2025-07-06 A | 2025-07-10 A | CP09-EN-TR6-S-2260 FF+7d, CP09-EN-TR6-S-2260 SS+7d | 100% |
|  | 4 | **Hardscape Works** |  | 2024-08-28 | 2025-08-22 |  |  |
| CP09-EN-TR6-A-2350 |  | Interlocking Paving Works-Shop Drawing Approval | 14d | 2024-08-28 A | 2024-08-28 A | CP09-EN-TR6-S-2350 FF+7d, CP09-EN-TR6-S-2350 SS+7d | 100% |
| CP09-EN-TR6-A-2270 |  | Concrete Exposed Aggregate - Side Walks-Shop Drawing Approval | 14d | 2025-05-18 A | 2025-05-22 A | CP09-EN-TR6-S-2270 FF+7d, CP09-EN-TR6-S-2270 SS+7d | 100% |
| CP09-EN-TR6-A-2280 |  | Marble Paving - Side Walks Works-Shop Drawing Approval | 14d | 2025-05-18 A | 2025-05-22 A | CP09-EN-TR6-S-2280 FF+7d, CP09-EN-TR6-S-2280 SS+7d | 100% |
| CP09-EN-TR6-A-2290 |  | WPC - Side Walks Works -Shop Drawing Approval | 14d | 2025-05-18 A | 2025-05-22 A | CP09-EN-TR6-S-2290 FF+7d, CP09-EN-TR6-S-2290 SS+7d | 100% |
| CP09-EN-TR6-A-2300 |  | Gravel - Side Walks Works-Shop Drawing Approval | 14d | 2025-05-18 A | 2025-05-22 A | CP09-EN-TR6-S-2300 FF+7d, CP09-EN-TR6-S-2300 SS+7d | 100% |
| CP09-EN-TR6-A-2310 |  | Crushed Stone - Side Walks Works-Shop Drawing Approval | 14d | 2025-05-18 A | 2025-05-22 A | CP09-EN-TR6-S-2310 FF+7d, CP09-EN-TR6-S-2310 SS+7d | 100% |
| CP09-EN-TR6-A-2320 |  | Loose Gravel - Side Walks Works-Shop Drawing Approval | 14d | 2025-05-18 A | 2025-05-22 A | CP09-EN-TR6-S-2320 FF+7d, CP09-EN-TR6-S-2320 SS+7d | 100% |
| CP09-EN-TR6-A-2330 |  | Clean sand layer - Side Walks Works-Shop Drawing Approval | 14d | 2025-05-18 A | 2025-05-22 A | CP09-EN-TR6-S-2330 FF+7d, CP09-EN-TR6-S-2330 SS+7d | 100% |
| CP09-EN-TR6-A-2340 |  | Flush Curb Works-Shop Drawing Approval | 14d | 2025-05-18 A | 2025-05-22 A | CP09-EN-TR6-S-2340 FF+7d, CP09-EN-TR6-S-2340 SS+7d | 100% |
| CP09-EN-TR6-A-2360 |  | Steps Works-Shop Drawing Approval | 14d | 2025-08-18 A | 2025-08-22 A | CP09-EN-TR6-S-2360 FF+7d, CP09-EN-TR6-S-2360 SS+7d | 100% |
| CP09-EN-TR6-A-2370 |  | Seats Works-Shop Drawing Approval | 14d | 2025-08-18 A | 2025-08-22 A | CP09-EN-TR6-S-2370 FF+7d, CP09-EN-TR6-S-2370 SS+7d | 100% |
| CP09-EN-TR6-A-2380 |  | Pool Shower Works-Shop Drawing Approval | 14d | 2025-08-18 A | 2025-08-22 A | CP09-EN-TR6-S-2380 FF+7d, CP09-EN-TR6-S-2380 SS+7d | 100% |
| CP09-EN-TR6-A-2390 |  | Handrails Works-Shop Drawing Approval | 14d | 2025-08-18 A | 2025-08-22 A | CP09-EN-TR6-S-2390 FF+7d, CP09-EN-TR6-S-2390 SS+7d | 100% |
| CP09-EN-TR6-A-2400 |  | Landscape Furntiure-Shop Drawing Approval | 14d | 2025-08-18 A | 2025-08-22 A | CP09-EN-TR6-S-2400 FF+7d, CP09-EN-TR6-S-2400 SS+7d | 100% |
|  | 5 | **Electrical Works** |  | 2025-05-18 | 2025-05-22 |  |  |
| CP09-EN-TR6-A-2410 |  | Power Cables-Shop Drawing Approval | 14d | 2025-05-18 A | 2025-05-22 A | CP09-EN-TR6-S-2410 FF+7d, CP09-EN-TR6-S-2410 SS+7d | 100% |
| CP09-EN-TR6-A-2420 |  | Connecting Pillars-Shop Drawing Approval | 14d | 2025-05-18 A | 2025-05-22 A | CP09-EN-TR6-S-2420 FF+7d, CP09-EN-TR6-S-2420 SS+7d | 100% |
|  | 6 | **Sinage** |  | 2025-07-06 | 2025-07-10 |  |  |
| CP09-EN-TR6-A-2430 |  | Sinage-Shop Drawing Approval | 14d | 2025-07-06 A | 2025-07-10 A | CP09-EN-TR6-S-2430 FF+7d, CP09-EN-TR6-S-2430 SS+7d | 100% |
|  | 7 | **Play Field Equipment** |  | 2025-08-18 | 2025-08-22 |  |  |
| CP09-EN-TR6-A-2440 |  | Play Field Equipment-Shop Drawing Approval | 14d | 2025-08-18 A | 2025-08-22 A | CP09-EN-TR6-S-2440 FF+7d, CP09-EN-TR6-S-2440 SS+7d | 100% |
|  | 8 | **Irrigation Networks** |  | 2025-07-06 | 2025-07-10 |  |  |
| CP09-EN-TR6-A-2450 |  | Irrigation Networks Layout -Shop Drawing Approval | 14d | 2025-07-06 A | 2025-07-10 A | CP09-EN-TR6-S-2450 FF+7d, CP09-EN-TR6-S-2450 SS+7d | 100% |
|  | 9 | **Planting** |  | 2024-12-08 | 2024-12-18 |  |  |
| CP09-EN-TR6-A-2460 |  | Plantings -Shop Drawing Approval | 14d | 2024-12-08 A | 2024-12-18 A | CP09-EN-TR6-S-2460 FF+7d, CP09-EN-TR6-S-2460 SS+7d | 100% |
|  | 10 | **Lighting** |  | 2024-10-19 | 2024-10-23 |  |  |
| CP09-EN-TR6-A-2470 |  | Exterior Lighting for Softlandscape-Shop Drawing Approval | 14d | 2024-10-19 A | 2024-10-23 A | CP09-EN-TR6-S-2470 FF+7d, CP09-EN-TR6-S-2470 SS+7d | 100% |
|  | 10 | **Terrace # 07** |  | 2024-05-12 | 2026-01-16 |  |  |
|  | 2 | **Shopdrwaings Submittal** |  | 2024-05-12 | 2026-01-16 |  |  |
|  | 1 | **Swimming Pool & MR** |  | 2024-08-03 | 2026-01-16 |  |  |
| CP09-EN-TR7-S-2490 |  | Swimmimg Pool & MR Concrete dimension shop drawing Submittal | 7d | 2024-08-03 A | 2025-07-10 A | CP09-EN-TR5-S-1750, CP09-EN-TR7-S-2510, CP09-CLD-1010 FS+30d | 100% |

| ID | WBS | Task | Duration | Start | Finish | Predecessors | Complete |
| --- | --- | --- | --- | --- | --- | --- | --- |
| CP09-EN-TR7-S-2510 |  | Swimmimg Pool & MR Water Proofing Worksshop drawing Submittal | 7d | 2024-08-03 A | 2025-07-10 A | CP09-EN-TR5-S-1770, CP09-PR-CV-A-1010 | 100% |
| CP09-EN-TR7-S-2560 |  | Swimmimg Pool & MR Mechnical Works shop drawing Submittal | 7d | 2024-09-04 A | 2024-09-04 A | CP09-EN-TR5-S-1820, CP09-EN-TR7-S-2520, CP09-PR-ME-A-1000, CP09-PR-ME-A-1010, CP09-PR-ME-A-1020, CP09-PR-ME-A-1030, CP09-PR-ME-A-1040, CP09-PR-ME-A-1050, CP09-PR-ME-A-1060, CP09-PR-ME-A-1070, CP09-PR-ME-A-1080 | 100% |
| CP09-EN-TR7-S-2570 |  | Swimmimg Pool & MR Electrical Works shop drawing Submittal | 7d | 2024-09-28 A | 2025-08-22 A | CP09-EN-TR5-S-1830, CP09-EN-TR7-S-2560, CP09-PR-EL-A-1000, CP09-PR-EL-A-1010, CP09-PR-EL-A-1020, CP09-PR-EL-A-1030, CP09-PR-EL-A-1040, CP09-PR-EL-A-1050, CP09-PR-EL-A-1140 | 100% |
| CP09-EN-TR7-S-2500 |  | Swimmimg Pool & MR Steel reinforcement shop drawing Submittal | 7d | 2024-10-20 A | 2025-07-10 A | CP09-EN-TR7-S-2490 FF, CP09-EN-TR7-S-2490 | 100% |
| CP09-EN-TR7-S-2530 |  | Swimmimg Pool & MR Granite Works shop drawing Submittal | 7d | 2025-08-18 A | 2025-08-22 A | CP09-EN-TR5-S-1790, CP09-EN-TR7-S-2570, CP09-PR-CV-A-1040 | 100% |
| CP09-EN-TR7-S-2540 |  | Swimmimg Pool & MR Ladders Works shop drawing Submittal | 7d | 2025-08-18 A | 2025-08-22 A | CP09-EN-TR5-S-1800, CP09-EN-TR7-S-2530, CP09-PR-CV-A-1050 | 100% |
| CP09-EN-TR7-S-2550 |  | Swimmimg Pool & MR Handrial Works shop drawing Submittal | 7d | 2025-08-18 A | 2025-08-22 A | CP09-EN-TR5-S-1810, CP09-EN-TR7-S-2540, CP09-PR-CV-A-1060 | 100% |
| CP09-EN-TR7-S-2520 |  | Swimmimg Pool & MR Mosaics Works shop drawing Submittal | 7d | 2026-01-12 A | 2026-01-16 A | CP09-EN-TR5-S-1780, CP09-EN-TR7-S-2500, CP09-PR-CV-A-1030 | 100% |
| CP09-EN-TR7-S-2850 |  | Swimmimg Pool & MR Fininshes shop drawing Submittal | 7d | 2026-01-12 A | 2026-01-16 A | CP09-EN-TR5-S-2110, CP09-EN-TR7-S-2550, CP09-PR-CV-A-1070, CP09-PR-CV-A-1080, CP09-PR-CV-A-1110 | 100% |
|  | 2 | **Earth Work** |  | 2025-07-06 | 2025-07-10 |  |  |
| CP09-EN-TR7-S-2580 |  | Sub Garde shop drawing Submittal | 3d | 2025-07-06 A | 2025-07-10 A | CP09-EN-TR5-S-1840, CP09-CLD-1010 | 100% |
|  | 3 | **Cheek & Retaning Wall** |  | 2024-11-13 | 2025-07-10 |  |  |
| CP09-EN-TR7-S-2610 |  | Cheek & Retaning Wall Water Proofing Works shop drawing Submittal | 6.56d | 2024-11-13 A | 2025-07-10 A | CP09-EN-TR5-S-1870, CP09-EN-TR7-S-2600, CP09-PR-CV-A-1010 | 100% |
| CP09-EN-TR7-S-2620 |  | Cheek & Retaning Wall Masonary Works shop drawing Submittal | 6.56d | 2024-11-13 A | 2025-07-10 A | CP09-EN-TR5-S-1880, CP09-EN-TR7-S-2610, CP09-PR-CV-A-1020 | 100% |
| CP09-EN-TR7-S-2630 |  | Cheek & Retaning Wall Marble Works shop drawing Submittal | 6.56d | 2024-11-13 A | 2025-07-10 A | CP09-EN-TR5-S-1890, CP09-EN-TR7-S-2620, CP09-PR-CV-A-1120 | 100% |
| CP09-EN-TR7-S-2590 |  | Cheek & Retaning Wall Concrete dimension shop drawing Submittal | 6.56d | 2025-07-06 A | 2025-07-10 A | CP09-EN-TR5-S-1850, CP09-PR-CV-A-1000 | 100% |
| CP09-EN-TR7-S-2600 |  | Cheek & Retaning Wall Steel reinforcement shop drawing Submittal | 6.56d | 2025-07-06 A | 2025-07-10 A | CP09-EN-TR5-S-1860, CP09-EN-TR7-S-2590, CP09-PR-CV-A-1130 | 100% |
|  | 4 | **Hardscape Works** |  | 2024-08-11 | 2025-08-22 |  |  |
| CP09-EN-TR7-S-2770 |  | Landscape Furntiure Shop Drawing Submittal | 6.56d | 2024-08-11 A | 2025-08-22 A | CP09-EN-TR5-S-2030, CP09-PR-FN-A-1000, CP09-PR-FN-A-1010, CP09-PR-FN-A-1020, CP09-PR-FN-A-1030, CP09-PR-FN-A-1040, CP09-PR-FN-A-1050, CP09-PR-FN-A-1060, CP09-PR-FN-A-1070, CP09-PR-FN-A-1080 | 100% |
| CP09-EN-TR7-S-2720 |  | Interlocking Paving Works Shop Drawing Submittal | 6.56d | 2024-09-02 A | 2024-09-05 A | CP09-EN-TR5-S-1980, CP09-PR-HD-A-1090, CP09-PR-HD-A-1180 | 100% |
| CP09-EN-TR7-S-2730 |  | Steps Works shop Shop Drawing Submittal | 6.56d | 2024-12-02 A | 2025-08-22 A | CP09-EN-TR5-S-1990, CP09-PR-HD-A-1100 | 100% |
| CP09-EN-TR7-S-2640 |  | Concrete Exposed Aggregate - Side Walks Shop Drawing Submittal | 6.56d | 2025-08-18 A | 2025-08-22 A | CP09-EN-TR5-S-1900, CP09-PR-HD-A-1000 | 100% |
| CP09-EN-TR7-S-2650 |  | Marble Paving - Side Walks Works Shop Drawing Submittal | 6.56d | 2025-08-18 A | 2025-08-22 A | CP09-EN-TR5-S-1910, CP09-PR-HD-A-1010 | 100% |
| CP09-EN-TR7-S-2660 |  | WPC - Side Walks Works Shop Drawing Submittal | 6.56d | 2025-08-18 A | 2025-08-22 A | CP09-EN-TR5-S-1920, CP09-PR-HD-A-1020 | 100% |
| CP09-EN-TR7-S-2670 |  | Gravel - Side Walks Works Shop Drawing Submittal | 6.56d | 2025-08-18 A | 2025-08-22 A | CP09-EN-TR5-S-1930, CP09-PR-HD-A-1030 | 100% |
| CP09-EN-TR7-S-2680 |  | Crushed Stone - Side Walks Works Shop Drawing Submittal | 6.56d | 2025-08-18 A | 2025-08-22 A | CP09-EN-TR5-S-1940, CP09-PR-HD-A-1040 | 100% |
| CP09-EN-TR7-S-2690 |  | Loose Gravel - Side Walks Works Shop Drawing Submittal | 6.56d | 2025-08-18 A | 2025-08-22 A | CP09-EN-TR5-S-1950, CP09-PR-HD-A-1050 | 100% |
| CP09-EN-TR7-S-2700 |  | Clean sand layer - Side Walks Works Shop Drawing Submittal | 7d | 2025-08-18 A | 2025-08-22 A | CP09-EN-TR5-S-1960, CP09-PR-HD-A-1060, CP09-PR-HD-A-1070 | 100% |
| CP09-EN-TR7-S-2710 |  | Flush Curb Works Shop Drawing Submittal | 6.56d | 2025-08-18 A | 2025-08-22 A | CP09-EN-TR5-S-1970, CP09-PR-HD-A-1080 | 100% |
| CP09-EN-TR7-S-2740 |  | Seats Works Shop Shop Drawing Submittal | 6.56d | 2025-08-18 A | 2025-08-22 A | CP09-EN-TR5-S-2000, CP09-PR-HD-A-1110 | 100% |
| CP09-EN-TR7-S-2750 |  | Pool Shower Works Shop Drawing Submittal | 6.56d | 2025-08-18 A | 2025-08-22 A | CP09-EN-TR5-S-2010, CP09-PR-HD-A-1120, CP09-PR-HD-A-1130, CP09-PR-HD-A-1140, CP09-PR-HD-A-1150 | 100% |
| CP09-EN-TR7-S-2760 |  | Handrails Works Shop Drawing Submittal | 6.56d | 2025-08-18 A | 2025-08-22 A | CP09-EN-TR5-S-2020, CP09-PR-HD-A-1160, CP09-PR-HD-A-1170 | 100% |
|  | 5 | **Electrical Works** |  | 2025-07-06 | 2025-08-22 |  |  |
| CP09-EN-TR7-S-2780 |  | Power Cables Shop Drawing Submittal | 6.56d | 2025-07-06 A | 2025-07-10 A | CP09-EN-TR5-S-2040, CP09-PR-EL-A-1060 | 100% |
| CP09-EN-TR7-S-2790 |  | Connecting Pillars Shop Drawing Submittal | 6.56d | 2025-08-18 A | 2025-08-22 A | CP09-EN-TR5-S-2050, CP09-PR-EL-A-1070 | 100% |
|  | 6 | **Sinage** |  | 2024-07-29 | 2025-07-10 |  |  |
| CP09-EN-TR7-S-2800 |  | Sinage Shop Drawing Submittal | 6.56d | 2024-07-29 A | 2025-07-10 A | CP09-EN-TR5-S-2060, CP09-PR-SN-A-1000, CP09-PR-SN-A-1010, CP09-PR-SN-A-1020, CP09-PR-SN-A-1030, CP09-PR-SN-A-1040 | 100% |
|  | 7 | **Play Field Equipment** |  | 2024-07-07 | 2025-08-22 |  |  |
| CP09-EN-TR7-S-2810 |  | Play Field Equipment Shop Drawing Submittal | 6.56d | 2024-07-07 A | 2025-08-22 A | CP09-EN-TR5-S-2070, CP09-PR-PE-A-1000, CP09-PR-PE-A-1010, CP09-PR-PE-A-1020, CP09-PR-PE-A-1030, CP09-PR-PE-A-1040, CP09-PR-PE-A-1050, CP09-PR-PE-A-1060, CP09-PR-PE-A-1070, CP09-PR-PE-A-1080, CP09-PR-PE-A-1090, CP09-PR-PE-A-1100 | 100% |
|  | 8 | **Irrigation Networks** |  | 2024-05-12 | 2025-07-10 |  |  |
| CP09-EN-TR7-S-2820 |  | Irrigation Networks Layout Shop Drawing Submittal | 6.56d | 2024-05-12 A | 2025-07-10 A | CP09-EN-TR5-S-2080, CP09-PR-IR-A-1000, CP09-PR-IR-A-1010, CP09-PR-IR-A-1020, CP09-PR-IR-A-1030, CP09-PR-IR-A-1040, CP09-PR-IR-A-1050, CP09-PR-IR-A-1060, CP09-PR-IR-A-1070, CP09-PR-IR-A-1080 | 100% |
|  | 9 | **Planting** |  | 2024-05-12 | 2024-12-08 |  |  |
| CP09-EN-TR7-S-2830 |  | Plantings Shop Drawing Submittal | 6.56d | 2024-05-12 A | 2024-12-08 A | CP09-EN-TR5-S-2090, CP09-EN-TR7-S-2820, CP09-PR-PN-A-1000, CP09-PR-PN-A-1010, CP09-PR-PN-A-1020, CP09-PR-PN-A-1030, CP09-PR-PN-A-1040, CP09-PR-PN-A-1050, CP09-PR-PN-A-1060, CP09-PR-PN-A-1070, CP09-PR-PN-A-1080 | 100% |
|  | 10 | **Lighting** |  | 2024-10-18 | 2024-10-26 |  |  |
| CP09-EN-TR7-S-2840 |  | Exterior Lighting for Softlandscape Shop Drawing Submittal | 6.56d | 2024-10-18 A | 2024-10-26 A | CP09-EN-TR5-S-2100, CP09-EN-TR7-S-2830, CP09-PR-EL-A-1080, CP09-PR-EL-A-1090, CP09-PR-EL-A-1100, CP09-PR-EL-A-1110, CP09-PR-EL-A-1120, CP09-PR-EL-A-1130 | 100% |
|  | 1 | **Shopdrwaings Approval** |  | 2024-05-12 | 2026-01-16 |  |  |
|  | 1 | **Swimming Pool & MR** |  | 2024-09-05 | 2026-01-16 |  |  |
| CP09-EN-TR7-A-2560 |  | Swimmimg Pool & MR Mechnical Works-Shop Drawing Approval | 14d | 2024-09-05 A | 2024-09-05 A | CP09-EN-TR7-S-2560 FF+7d, CP09-EN-TR7-S-2560 SS+7d | 100% |
| CP09-EN-TR7-A-2490 |  | Swimmimg Pool & MR Concrete dimension-Shop Drawing Approval | 14d | 2025-07-06 A | 2025-07-10 A | CP09-EN-TR7-S-2490 FF+7d, CP09-EN-TR7-S-2490 SS+7d | 100% |
| CP09-EN-TR7-A-2500 |  | Swimmimg Pool & MR Steel reinforcement-Shop Drawing Approval | 14d | 2025-07-06 A | 2025-07-10 A | CP09-EN-TR7-S-2500 FF+7d, CP09-EN-TR7-S-2500 SS+7d | 100% |
| CP09-EN-TR7-A-2510 |  | Swimmimg Pool & MR Water Proofing Works-Shop Drawing Approval | 14d | 2025-07-06 A | 2025-07-10 A | CP09-EN-TR7-S-2510 FF+7d, CP09-EN-TR7-S-2510 SS+7d | 100% |
| CP09-EN-TR7-A-2530 |  | Swimmimg Pool & MR Granite Works-Shop Drawing Approval | 14d | 2025-08-18 A | 2025-08-22 A | CP09-EN-TR7-S-2530 FF+7d, CP09-EN-TR7-S-2530 SS+7d | 100% |
| CP09-EN-TR7-A-2540 |  | Swimmimg Pool & MR Ladders Works-Shop Drawing Approval | 14d | 2025-08-18 A | 2025-08-22 A | CP09-EN-TR7-S-2540 FF+7d, CP09-EN-TR7-S-2540 SS+7d | 100% |
| CP09-EN-TR7-A-2550 |  | Swimmimg Pool & MR Handrial Works-Shop Drawing Approval | 14d | 2025-08-18 A | 2025-08-22 A | CP09-EN-TR7-S-2550 FF+7d, CP09-EN-TR7-S-2550 SS+7d | 100% |
| CP09-EN-TR7-A-2570 |  | Swimmimg Pool & MR Electrical Works-Shop Drawing Approval | 14d | 2025-08-18 A | 2025-08-22 A | CP09-EN-TR7-S-2570 FF+7d, CP09-EN-TR7-S-2570 SS+7d | 100% |
| CP09-EN-TR7-A-2520 |  | Swimmimg Pool & MR Mosaics Works-Shop Drawing Approval | 14d | 2026-01-12 A | 2026-01-16 A | CP09-EN-TR7-S-2520 FF+7d, CP09-EN-TR7-S-2520 SS+7d | 100% |
| CP09-EN-TR7-A-2850 |  | Swimmimg Pool & MR Fininshes shop drawing Approval | 14d | 2026-01-12 A | 2026-01-16 A | CP09-EN-TR7-S-2850 FF+7d, CP09-EN-TR7-S-2850 SS+7d | 100% |
|  | 2 | **Earth Work** |  | 2025-07-06 | 2025-07-10 |  |  |
| CP09-EN-TR7-A-2580 |  | Sub Garde Shopdrwaings-Shop Drawing Approval | 14d | 2025-07-06 A | 2025-07-10 A | CP09-EN-TR7-S-2580 FF+7d, CP09-EN-TR7-S-2580 SS+7d | 100% |
|  | 3 | **Cheek & Retaning Wall** |  | 2025-07-06 | 2025-07-10 |  |  |
| CP09-EN-TR7-A-2590 |  | Cheek & Retaning Wall Concrete dimension-ShopDrawing Approval | 14d | 2025-07-06 A | 2025-07-10 A | CP09-EN-TR7-S-2590 FF+7d, CP09-EN-TR7-S-2590 SS+7d | 100% |
| CP09-EN-TR7-A-2600 |  | Cheek & Retaning Wall Steel reinforcement-Shop Drawing Approval | 14d | 2025-07-06 A | 2025-07-10 A | CP09-EN-TR7-S-2600 FF+7d, CP09-EN-TR7-S-2600 SS+7d | 100% |
| CP09-EN-TR7-A-2610 |  | Cheek & Retaning Wall Water Proofing Works-Shop Drawing Approval | 14d | 2025-07-06 A | 2025-07-10 A | CP09-EN-TR7-S-2610 FF+7d, CP09-EN-TR7-S-2610 SS+7d | 100% |
| CP09-EN-TR7-A-2620 |  | Cheek & Retaning Wall Masonary Works-Shop Drawing Approval | 14d | 2025-07-06 A | 2025-07-10 A | CP09-EN-TR7-S-2620 FF+7d, CP09-EN-TR7-S-2620 SS+7d | 100% |
| CP09-EN-TR7-A-2630 |  | Cheek & Retaning Wall Marble Works-Shop Drawing Approval | 14d | 2025-07-06 A | 2025-07-10 A | CP09-EN-TR7-S-2630 FF+7d, CP09-EN-TR7-S-2630 SS+7d | 100% |
|  | 4 | **Hardscape Works** |  | 2024-09-05 | 2025-08-22 |  |  |
| CP09-EN-TR7-A-2720 |  | Interlocking Paving Works-Shop Drawing Approval | 14d | 2024-09-05 A | 2024-09-05 A | CP09-EN-TR7-S-2720 FF+7d, CP09-EN-TR7-S-2720 SS+7d | 100% |
| CP09-EN-TR7-A-2640 |  | Concrete Exposed Aggregate - Side Walks-Shop Drawing Approval | 14d | 2025-08-18 A | 2025-08-22 A | CP09-EN-TR7-S-2640 FF+7d, CP09-EN-TR7-S-2640 SS+7d | 100% |
| CP09-EN-TR7-A-2650 |  | Marble Paving - Side Walks Works-Shop Drawing Approval | 14d | 2025-08-18 A | 2025-08-22 A | CP09-EN-TR7-S-2650 FF+7d, CP09-EN-TR7-S-2650 SS+7d | 100% |
| CP09-EN-TR7-A-2660 |  | WPC - Side Walks Works -Shop Drawing Approval | 14d | 2025-08-18 A | 2025-08-22 A | CP09-EN-TR7-S-2660 FF+7d, CP09-EN-TR7-S-2660 SS+7d | 100% |

| ID | WBS | Task | Duration | Start | Finish | Predecessors | Complete |
| --- | --- | --- | --- | --- | --- | --- | --- |
| CP09-EN-TR7-A-2670 |  | Gravel - Side Walks Works-Shop Drawing Approval | 14d | 2025-08-18 A | 2025-08-22 A | CP09-EN-TR7-S-2670 FF+7d, CP09-EN-TR7-S-2670 SS+7d | 100% |
| CP09-EN-TR7-A-2680 |  | Crushed Stone - Side Walks Works-Shop Drawing Approval | 14d | 2025-08-18 A | 2025-08-22 A | CP09-EN-TR7-S-2680 FF+7d, CP09-EN-TR7-S-2680 SS+7d | 100% |
| CP09-EN-TR7-A-2690 |  | Loose Gravel - Side Walks Works-Shop Drawing Approval | 14d | 2025-08-18 A | 2025-08-22 A | CP09-EN-TR7-S-2690 FF+7d, CP09-EN-TR7-S-2690 SS+7d | 100% |
| CP09-EN-TR7-A-2700 |  | Clean sand layer - Side Walks Works-Shop Drawing Approval | 14d | 2025-08-18 A | 2025-08-22 A | CP09-EN-TR7-S-2700 FF+7d, CP09-EN-TR7-S-2700 SS+7d | 100% |
| CP09-EN-TR7-A-2710 |  | Flush Curb Works-Shop Drawing Approval | 14d | 2025-08-18 A | 2025-08-22 A | CP09-EN-TR7-S-2710 FF+7d, CP09-EN-TR7-S-2710 SS+7d | 100% |
| CP09-EN-TR7-A-2730 |  | Steps Works-Shop Drawing Approval | 14d | 2025-08-18 A | 2025-08-22 A | CP09-EN-TR7-S-2730 FF+7d, CP09-EN-TR7-S-2730 SS+7d | 100% |
| CP09-EN-TR7-A-2740 |  | Seats Works-Shop Drawing Approval | 14d | 2025-08-18 A | 2025-08-22 A | CP09-EN-TR7-S-2740 FF+7d, CP09-EN-TR7-S-2740 SS+7d | 100% |
| CP09-EN-TR7-A-2750 |  | Pool Shower Works-Shop Drawing Approval | 14d | 2025-08-18 A | 2025-08-22 A | CP09-EN-TR7-S-2750 FF+7d, CP09-EN-TR7-S-2750 SS+7d | 100% |
| CP09-EN-TR7-A-2760 |  | Handrails Works-Shop Drawing Approval | 14d | 2025-08-18 A | 2025-08-22 A | CP09-EN-TR7-S-2760 FF+7d, CP09-EN-TR7-S-2760 SS+7d | 100% |
| CP09-EN-TR7-A-2770 |  | Landscape Furntiure-Shop Drawing Approval | 14d | 2025-08-18 A | 2025-08-22 A | CP09-EN-TR7-S-2770 FF+7d, CP09-EN-TR7-S-2770 SS+7d | 100% |
|  | 5 | **Electrical Works** |  | 2025-07-06 | 2025-08-22 |  |  |
| CP09-EN-TR7-A-2780 |  | Power Cables-Shop Drawing Approval | 14d | 2025-07-06 A | 2025-07-10 A | CP09-EN-TR7-S-2780 FF+7d, CP09-EN-TR7-S-2780 SS+7d | 100% |
| CP09-EN-TR7-A-2790 |  | Connecting Pillars-Shop Drawing Approval | 14d | 2025-08-18 A | 2025-08-22 A | CP09-EN-TR7-S-2790 FF+7d, CP09-EN-TR7-S-2790 SS+7d | 100% |
|  | 6 | **Sinage** |  | 2025-07-06 | 2025-07-10 |  |  |
| CP09-EN-TR7-A-2800 |  | Sinage-Shop Drawing Approval | 14d | 2025-07-06 A | 2025-07-10 A | CP09-EN-TR7-S-2800 FF+7d, CP09-EN-TR7-S-2800 SS+7d | 100% |
|  | 7 | **Play Field Equipment** |  | 2025-08-18 | 2025-08-22 |  |  |
| CP09-EN-TR7-A-2810 |  | Play Field Equipment-Shop Drawing Approval | 14d | 2025-08-18 A | 2025-08-22 A | CP09-EN-TR7-S-2810 FF+7d, CP09-EN-TR7-S-2810 SS+7d | 100% |
|  | 8 | **Irrigation Networks** |  | 2025-07-06 | 2025-07-10 |  |  |
| CP09-EN-TR7-A-2820 |  | Irrigation Networks Layout -Shop Drawing Approval | 14d | 2025-07-06 A | 2025-07-10 A | CP09-EN-TR7-S-2820 FF+7d, CP09-EN-TR7-S-2820 SS+7d | 100% |
|  | 9 | **Planting** |  | 2024-05-12 | 2024-12-18 |  |  |
| CP09-EN-TR7-A-2830 |  | Plantings -Shop Drawing Approval | 14d | 2024-05-12 A | 2024-12-18 A | CP09-EN-TR7-S-2830 FF+7d, CP09-EN-TR7-S-2830 SS+7d | 100% |
|  | 10 | **Lighting** |  | 2024-10-26 | 2024-10-30 |  |  |
| CP09-EN-TR7-A-2840 |  | Exterior Lighting for Softlandscape-Shop Drawing Approval | 14d | 2024-10-26 A | 2024-10-30 A | CP09-EN-TR7-S-2840 FF+7d, CP09-EN-TR7-S-2840 SS+7d | 100% |
|  | 12 | **Terrace # 08** |  | 2024-05-12 | 2026-01-16 |  |  |
|  | 2 | **Shopdrwaings Submittal** |  | 2024-05-12 | 2026-01-16 |  |  |
|  | 1 | **Swimming Pool & MR** |  | 2024-08-01 | 2026-01-16 |  |  |
| CP09-EN-TR8-S-2860 |  | Swimmimg Pool & MR Concrete dimension shop drawing Submittal | 7d | 2024-08-01 A | 2025-07-10 A | CP09-CLD-1010 | 100% |
| CP09-EN-TR8-S-2930 |  | Swimmimg Pool & MR Mechnical Works shop drawing Submittal | 7d | 2024-09-04 A | 2025-08-22 A | CP09-EN-TR6-S-2190, CP09-EN-TR8-S-2910, CP09-PR-ME-A-1000, CP09-PR-ME-A-1010, CP09-PR-ME-A-1020, CP09-PR-ME-A-1030, CP09-PR-ME-A-1040, CP09-PR-ME-A-1050, CP09-PR-ME-A-1060, CP09-PR-ME-A-1070, CP09-PR-ME-A-1080 | 100% |
| CP09-EN-TR8-S-2940 |  | Swimmimg Pool & MR Electrical Works shop drawing Submittal | 7d | 2024-09-28 A | 2025-08-22 A | CP09-EN-TR6-S-2200, CP09-EN-TR8-S-2930, CP09-PR-EL-A-1000, CP09-PR-EL-A-1010, CP09-PR-EL-A-1020, CP09-PR-EL-A-1030, CP09-PR-EL-A-1040, CP09-PR-EL-A-1050, CP09-PR-EL-A-1140 | 100% |
| CP09-EN-TR8-S-2870 |  | Swimmimg Pool & MR Steel reinforcement shop drawing Submittal | 7d | 2024-10-10 A | 2025-07-10 A | CP09-EN-TR8-S-2860 FF, CP09-EN-TR8-S-2860 | 100% |
| CP09-EN-TR8-S-2900 |  | Swimmimg Pool & MR Granite Works shop drawing Submittal | 7d | 2025-08-18 A | 2025-08-22 A | CP09-EN-TR6-S-2160, CP09-EN-TR8-S-2940, CP09-PR-CV-A-1040 | 100% |
| CP09-EN-TR8-S-2910 |  | Swimmimg Pool & MR Ladders Works shop drawing Submittal | 7d | 2025-08-18 A | 2025-08-22 A | CP09-EN-TR6-S-2170, CP09-EN-TR8-S-2890, CP09-PR-CV-A-1050 | 100% |
| CP09-EN-TR8-S-2920 |  | Swimmimg Pool & MR Handrial Works shop drawing Submittal | 7d | 2025-08-18 A | 2025-08-22 A | CP09-EN-TR6-S-2180, CP09-EN-TR8-S-2900, CP09-PR-CV-A-1060 | 100% |
| CP09-EN-TR8-S-2880 |  | Swimmimg Pool & MR Water Proofing Worksshop drawing Submittal | 7d | 2026-01-12 A | 2026-01-16 A | CP09-EN-TR6-S-2140, CP09-EN-TR8-S-2870, CP09-PR-CV-A-1010 | 100% |
| CP09-EN-TR8-S-2890 |  | Swimmimg Pool & MR Mosaics Works shop drawing Submittal | 7d | 2026-01-12 A | 2026-01-16 A | CP09-EN-TR6-S-2150, CP09-EN-TR8-S-2880, CP09-PR-CV-A-1030 | 100% |
| CP09-EN-TR8-S-3220 |  | Swimmimg Pool & MR Fininshes shop drawing Submittal | 7d | 2026-01-12 A | 2026-01-16 A | CP09-EN-TR6-S-2480, CP09-EN-TR8-S-2920, CP09-PR-CV-A-1070, CP09-PR-CV-A-1080, CP09-PR-CV-A-1110 | 100% |
|  | 2 | **Earth Work** |  | 2025-07-06 | 2025-07-10 |  |  |
| CP09-EN-TR8-S-2950 |  | Sub Garde shop drawing Submittal | 3d | 2025-07-06 A | 2025-07-10 A | CP09-EN-TR6-S-2210, CP09-CLD-1010 | 100% |
|  | 3 | **Cheek & Retaning Wall** |  | 2024-11-19 | 2025-07-10 |  |  |
| CP09-EN-TR8-S-2980 |  | Cheek & Retaning Wall Water Proofing Works shop drawing Submittal | 6.56d | 2024-11-19 A | 2024-11-26 A | CP09-EN-TR6-S-2240, CP09-EN-TR8-S-2970, CP09-PR-CV-A-1010 | 100% |
| CP09-EN-TR8-S-2990 |  | Cheek & Retaning Wall Masonary Works shop drawing Submittal | 6.56d | 2024-11-19 A | 2024-11-26 A | CP09-EN-TR6-S-2250, CP09-EN-TR8-S-2980, CP09-PR-CV-A-1020 | 100% |
| CP09-EN-TR8-S-3000 |  | Cheek & Retaning Wall Marble Works shop drawing Submittal | 6.56d | 2024-11-19 A | 2024-11-26 A | CP09-EN-TR6-S-2260, CP09-EN-TR8-S-2990, CP09-PR-CV-A-1120 | 100% |
| CP09-EN-TR8-S-2960 |  | Cheek & Retaning Wall Concrete dimension shop drawing Submittal | 6.56d | 2025-07-06 A | 2025-07-10 A | CP09-EN-TR6-S-2220, CP09-PR-CV-A-1000 | 100% |
| CP09-EN-TR8-S-2970 |  | Cheek & Retaning Wall Steel reinforcement shop drawing Submittal | 6.56d | 2025-07-06 A | 2025-07-10 A | CP09-EN-TR6-S-2230, CP09-EN-TR8-S-2960, CP09-PR-CV-A-1130 | 100% |
|  | 4 | **Hardscape Works** |  | 2024-08-11 | 2025-08-22 |  |  |
| CP09-EN-TR8-S-3140 |  | Landscape Furntiure Shop Drawing Submittal | 6.56d | 2024-08-11 A | 2025-08-22 A | CP09-EN-TR6-S-2400, CP09-PR-FN-A-1000, CP09-PR-FN-A-1010, CP09-PR-FN-A-1020, CP09-PR-FN-A-1030, CP09-PR-FN-A-1040, CP09-PR-FN-A-1050, CP09-PR-FN-A-1060, CP09-PR-FN-A-1070, CP09-PR-FN-A-1080 | 100% |
| CP09-EN-TR8-S-3090 |  | Interlocking Paving Works Shop Drawing Submittal | 6.56d | 2024-09-04 A | 2024-09-12 A | CP09-EN-TR6-S-2350, CP09-PR-HD-A-1090, CP09-PR-HD-A-1180 | 100% |
| CP09-EN-TR8-S-3100 |  | Steps Works shop Shop Drawing Submittal | 6.56d | 2024-12-03 A | 2025-08-22 A | CP09-EN-TR6-S-2360, CP09-PR-HD-A-1100 | 100% |
| CP09-EN-TR8-S-3010 |  | Concrete Exposed Aggregate - Side Walks Shop Drawing Submittal | 6.56d | 2025-08-18 A | 2025-08-22 A | CP09-EN-TR6-S-2270, CP09-PR-HD-A-1000 | 100% |
| CP09-EN-TR8-S-3020 |  | Marble Paving - Side Walks Works Shop Drawing Submittal | 6.56d | 2025-08-18 A | 2025-08-22 A | CP09-EN-TR6-S-2280, CP09-PR-HD-A-1010 | 100% |
| CP09-EN-TR8-S-3030 |  | WPC - Side Walks Works Shop Drawing Submittal | 6.56d | 2025-08-18 A | 2025-08-22 A | CP09-EN-TR6-S-2290, CP09-PR-HD-A-1020 | 100% |
| CP09-EN-TR8-S-3040 |  | Gravel - Side Walks Works Shop Drawing Submittal | 6.56d | 2025-08-18 A | 2025-08-22 A | CP09-EN-TR6-S-2300, CP09-PR-HD-A-1030 | 100% |
| CP09-EN-TR8-S-3050 |  | Crushed Stone - Side Walks Works Shop Drawing Submittal | 6.56d | 2025-08-18 A | 2025-08-22 A | CP09-EN-TR6-S-2310, CP09-PR-HD-A-1040 | 100% |
| CP09-EN-TR8-S-3060 |  | Loose Gravel - Side Walks Works Shop Drawing Submittal | 6.56d | 2025-08-18 A | 2025-08-22 A | CP09-EN-TR6-S-2320, CP09-PR-HD-A-1050 | 100% |
| CP09-EN-TR8-S-3070 |  | Clean sand layer - Side Walks Works Shop Drawing Submittal | 7d | 2025-08-18 A | 2025-08-22 A | CP09-EN-TR6-S-2330, CP09-PR-HD-A-1060, CP09-PR-HD-A-1070 | 100% |
| CP09-EN-TR8-S-3080 |  | Flush Curb Works Shop Drawing Submittal | 6.56d | 2025-08-18 A | 2025-08-22 A | CP09-EN-TR6-S-2340, CP09-PR-HD-A-1080 | 100% |
| CP09-EN-TR8-S-3110 |  | Seats Works Shop Shop Drawing Submittal | 6.56d | 2025-08-18 A | 2025-08-22 A | CP09-EN-TR6-S-2370, CP09-PR-HD-A-1110 | 100% |
| CP09-EN-TR8-S-3120 |  | Pool Shower Works Shop Drawing Submittal | 6.56d | 2025-08-18 A | 2025-08-22 A | CP09-EN-TR6-S-2380, CP09-PR-HD-A-1120, CP09-PR-HD-A-1130, CP09-PR-HD-A-1140, CP09-PR-HD-A-1150 | 100% |
| CP09-EN-TR8-S-3130 |  | Handrails Works Shop Drawing Submittal | 6.56d | 2025-08-18 A | 2025-08-22 A | CP09-EN-TR6-S-2390, CP09-PR-HD-A-1160, CP09-PR-HD-A-1170 | 100% |
|  | 5 | **Electrical Works** |  | 2025-07-06 | 2025-08-22 |  |  |
| CP09-EN-TR8-S-3150 |  | Power Cables Shop Drawing Submittal | 6.56d | 2025-07-06 A | 2025-07-10 A | CP09-EN-TR6-S-2410, CP09-PR-EL-A-1060 | 100% |
| CP09-EN-TR8-S-3160 |  | Connecting Pillars Shop Drawing Submittal | 6.56d | 2025-08-18 A | 2025-08-22 A | CP09-EN-TR6-S-2420, CP09-PR-EL-A-1070 | 100% |
|  | 6 | **Sinage** |  | 2024-07-29 | 2025-07-10 |  |  |
| CP09-EN-TR8-S-3170 |  | Sinage Shop Drawing Submittal | 6.56d | 2024-07-29 A | 2025-07-10 A | CP09-EN-TR6-S-2430, CP09-PR-SN-A-1000, CP09-PR-SN-A-1010, CP09-PR-SN-A-1020, CP09-PR-SN-A-1030, CP09-PR-SN-A-1040 | 100% |
|  | 7 | **Play Field Equipment** |  | 2024-07-07 | 2025-08-22 |  |  |
| CP09-EN-TR8-S-3180 |  | Play Field Equipment Shop Drawing Submittal | 6.56d | 2024-07-07 A | 2025-08-22 A | CP09-EN-TR6-S-2440, CP09-PR-PE-A-1000, CP09-PR-PE-A-1010, CP09-PR-PE-A-1020, CP09-PR-PE-A-1030, CP09-PR-PE-A-1040, CP09-PR-PE-A-1050, CP09-PR-PE-A-1060, CP09-PR-PE-A-1070, CP09-PR-PE-A-1080, CP09-PR-PE-A-1090, CP09-PR-PE-A-1100 | 100% |
|  | 8 | **Irrigation Networks** |  | 2024-05-12 | 2024-12-11 |  |  |
| CP09-EN-TR8-S-3190 |  | Irrigation Networks Layout Shop Drawing Submittal | 6.56d | 2024-05-12 A | 2024-12-11 A | CP09-EN-TR6-S-2450, CP09-PR-IR-A-1000, CP09-PR-IR-A-1010, CP09-PR-IR-A-1020, CP09-PR-IR-A-1030, CP09-PR-IR-A-1040, CP09-PR-IR-A-1050, CP09-PR-IR-A-1060, CP09-PR-IR-A-1070, CP09-PR-IR-A-1080 | 100% |
|  | 9 | **Planting** |  | 2024-05-12 | 2025-07-10 |  |  |
| CP09-EN-TR8-S-3200 |  | Plantings Shop Drawing Submittal | 6.56d | 2024-05-12 A | 2025-07-10 A | CP09-EN-TR6-S-2460, CP09-EN-TR8-S-3190, CP09-EN-TR8-S-3190 FF, CP09-PR-PN-A-1000, CP09-PR-PN-A-1010, CP09-PR-PN-A-1020, CP09-PR-PN-A-1030, CP09-PR-PN-A-1040, CP09-PR-PN-A-1050, CP09-PR-PN-A-1060, CP09-PR-PN-A-1070, CP09-PR-PN-A-1080 | 100% |

| ID | WBS | Task | Duration | Start | Finish | Predecessors | Complete |
| --- | --- | --- | --- | --- | --- | --- | --- |
|  | 10 | **Lighting** |  | 2024-10-19 | 2024-10-27 |  |  |
| CP09-EN-TR8-S-3210 |  | Exterior Lighting for Softlandscape Shop Drawing Submittal | 6.56d | 2024-10-19 A | 2024-10-27 A | CP09-EN-TR6-S-2470, CP09-EN-TR8-S-3200, CP09-EN-TR8-S-3200 FF, CP09-PR-EL-A-1080, CP09-PR-EL-A-1090, CP09-PR-EL-A-1100, CP09-PR-EL-A-1110, CP09-PR-EL-A-1120, CP09-PR-EL-A-1130 | 100% |
|  | 1 | **Shopdrwaings Approval** |  | 2024-09-12 | 2026-01-16 |  |  |
|  | 1 | **Swimming Pool & MR** |  | 2025-07-06 | 2026-01-16 |  |  |
| CP09-EN-TR8-A-2860 |  | Swimmimg Pool & MR Concrete dimension-Shop Drawing Approval | 14d | 2025-07-06 A | 2025-07-10 A | CP09-EN-TR8-S-2860 FF+7d, CP09-EN-TR8-S-2860 SS+7d | 100% |
| CP09-EN-TR8-A-2870 |  | Swimmimg Pool & MR Steel reinforcement-Shop Drawing Approval | 14d | 2025-07-06 A | 2025-07-10 A | CP09-EN-TR8-S-2870 FF+7d, CP09-EN-TR8-S-2870 SS+7d | 100% |
| CP09-EN-TR8-A-2900 |  | Swimmimg Pool & MR Granite Works-Shop Drawing Approval | 14d | 2025-08-18 A | 2025-08-22 A | CP09-EN-TR8-S-2900 FF+7d, CP09-EN-TR8-S-2900 SS+7d | 100% |
| CP09-EN-TR8-A-2910 |  | Swimmimg Pool & MR Ladders Works-Shop Drawing Approval | 14d | 2025-08-18 A | 2025-08-22 A | CP09-EN-TR8-S-2910 FF+7d, CP09-EN-TR8-S-2910 SS+7d | 100% |
| CP09-EN-TR8-A-2920 |  | Swimmimg Pool & MR Handrial Works-Shop Drawing Approval | 14d | 2025-08-18 A | 2025-08-22 A | CP09-EN-TR8-S-2920 FF+7d, CP09-EN-TR8-S-2920 SS+7d | 100% |
| CP09-EN-TR8-A-2930 |  | Swimmimg Pool & MR Mechnical Works-Shop Drawing Approval | 14d | 2025-08-18 A | 2025-08-22 A | CP09-EN-TR8-S-2930 FF+7d, CP09-EN-TR8-S-2930 SS+7d | 100% |
| CP09-EN-TR8-A-2880 |  | Swimmimg Pool & MR Water Proofing Works-Shop Drawing Approval | 14d | 2026-01-12 A | 2026-01-16 A | CP09-EN-TR8-S-2880 FF+7d, CP09-EN-TR8-S-2880 SS+7d | 100% |
| CP09-EN-TR8-A-2890 |  | Swimmimg Pool & MR Mosaics Works-Shop Drawing Approval | 14d | 2026-01-12 A | 2026-01-16 A | CP09-EN-TR8-S-2890 FF+7d, CP09-EN-TR8-S-2890 SS+7d | 100% |
| CP09-EN-TR8-A-2940 |  | Swimmimg Pool & MR Electrical Works-Shop Drawing Approval | 14d | 2026-01-12 A | 2026-01-16 A | CP09-EN-TR8-S-2940 FF+7d, CP09-EN-TR8-S-2940 SS+7d | 100% |
| CP09-EN-TR8-A-3220 |  | Swimmimg Pool & MR Fininshes shop drawing Approval | 14d | 2026-01-12 A | 2026-01-16 A | CP09-EN-TR8-S-3220 FF+7d, CP09-EN-TR8-S-3220 SS+7d | 100% |
|  | 2 | **Earth Work** |  | 2025-07-06 | 2025-07-10 |  |  |
| CP09-EN-TR8-A-2950 |  | Sub Garde Shopdrwaings-Shop Drawing Approval | 14d | 2025-07-06 A | 2025-07-10 A | CP09-EN-TR8-S-2950 FF+7d, CP09-EN-TR8-S-2950 SS+7d | 100% |
|  | 3 | **Cheek & Retaning Wall** |  | 2024-11-26 | 2025-07-10 |  |  |
| CP09-EN-TR8-A-2980 |  | Cheek & Retaning Wall Water Proofing Works-Shop Drawing Approval | 14d | 2024-11-26 A | 2024-12-03 A | CP09-EN-TR8-S-2980 FF+7d, CP09-EN-TR8-S-2980 SS+7d | 100% |
| CP09-EN-TR8-A-2990 |  | Cheek & Retaning Wall Masonary Works-Shop Drawing Approval | 14d | 2024-11-26 A | 2024-12-03 A | CP09-EN-TR8-S-2990 FF+7d, CP09-EN-TR8-S-2990 SS+7d | 100% |
| CP09-EN-TR8-A-3000 |  | Cheek & Retaning Wall Marble Works-Shop Drawing Approval | 14d | 2024-11-26 A | 2024-12-03 A | CP09-EN-TR8-S-3000 FF+7d, CP09-EN-TR8-S-3000 SS+7d | 100% |
| CP09-EN-TR8-A-2960 |  | Cheek & Retaning Wall Concrete dimension-ShopDrawing Approval | 14d | 2025-07-06 A | 2025-07-10 A | CP09-EN-TR8-S-2960 FF+7d, CP09-EN-TR8-S-2960 SS+7d | 100% |
| CP09-EN-TR8-A-2970 |  | Cheek & Retaning Wall Steel reinforcement-Shop Drawing Approval | 14d | 2025-07-06 A | 2025-07-10 A | CP09-EN-TR8-S-2970 FF+7d, CP09-EN-TR8-S-2970 SS+7d | 100% |
|  | 4 | **Hardscape Works** |  | 2024-09-12 | 2025-08-22 |  |  |
| CP09-EN-TR8-A-3090 |  | Interlocking Paving Works-Shop Drawing Approval | 14d | 2024-09-12 A | 2024-09-12 A | CP09-EN-TR8-S-3090 FF+7d, CP09-EN-TR8-S-3090 SS+7d | 100% |
| CP09-EN-TR8-A-3010 |  | Concrete Exposed Aggregate - Side Walks-Shop Drawing Approval | 14d | 2025-08-18 A | 2025-08-22 A | CP09-EN-TR8-S-3010 FF+7d, CP09-EN-TR8-S-3010 SS+7d | 100% |
| CP09-EN-TR8-A-3020 |  | Marble Paving - Side Walks Works-Shop Drawing Approval | 14d | 2025-08-18 A | 2025-08-22 A | CP09-EN-TR8-S-3020 FF+7d, CP09-EN-TR8-S-3020 SS+7d | 100% |
| CP09-EN-TR8-A-3030 |  | WPC - Side Walks Works -Shop Drawing Approval | 14d | 2025-08-18 A | 2025-08-22 A | CP09-EN-TR8-S-3030 FF+7d, CP09-EN-TR8-S-3030 SS+7d | 100% |
| CP09-EN-TR8-A-3040 |  | Gravel - Side Walks Works-Shop Drawing Approval | 14d | 2025-08-18 A | 2025-08-22 A | CP09-EN-TR8-S-3040 FF+7d, CP09-EN-TR8-S-3040 SS+7d | 100% |
| CP09-EN-TR8-A-3050 |  | Crushed Stone - Side Walks Works-Shop Drawing Approval | 14d | 2025-08-18 A | 2025-08-22 A | CP09-EN-TR8-S-3050 FF+7d, CP09-EN-TR8-S-3050 SS+7d | 100% |
| CP09-EN-TR8-A-3060 |  | Loose Gravel - Side Walks Works-Shop Drawing Approval | 14d | 2025-08-18 A | 2025-08-22 A | CP09-EN-TR8-S-3060 FF+7d, CP09-EN-TR8-S-3060 SS+7d | 100% |
| CP09-EN-TR8-A-3070 |  | Clean sand layer - Side Walks Works-Shop Drawing Approval | 14d | 2025-08-18 A | 2025-08-22 A | CP09-EN-TR8-S-3070 FF+7d, CP09-EN-TR8-S-3070 SS+7d | 100% |
| CP09-EN-TR8-A-3080 |  | Flush Curb Works-Shop Drawing Approval | 14d | 2025-08-18 A | 2025-08-22 A | CP09-EN-TR8-S-3080 FF+7d, CP09-EN-TR8-S-3080 SS+7d | 100% |
| CP09-EN-TR8-A-3100 |  | Steps Works-Shop Drawing Approval | 14d | 2025-08-18 A | 2025-08-22 A | CP09-EN-TR8-S-3100 FF+7d, CP09-EN-TR8-S-3100 SS+7d | 100% |
| CP09-EN-TR8-A-3110 |  | Seats Works-Shop Drawing Approval | 14d | 2025-08-18 A | 2025-08-22 A | CP09-EN-TR8-S-3110 FF+7d, CP09-EN-TR8-S-3110 SS+7d | 100% |
| CP09-EN-TR8-A-3120 |  | Pool Shower Works-Shop Drawing Approval | 14d | 2025-08-18 A | 2025-08-22 A | CP09-EN-TR8-S-3120 FF+7d, CP09-EN-TR8-S-3120 SS+7d | 100% |
| CP09-EN-TR8-A-3130 |  | Handrails Works-Shop Drawing Approval | 14d | 2025-08-18 A | 2025-08-22 A | CP09-EN-TR8-S-3130 FF+7d, CP09-EN-TR8-S-3130 SS+7d | 100% |
| CP09-EN-TR8-A-3140 |  | Landscape Furntiure-Shop Drawing Approval | 14d | 2025-08-18 A | 2025-08-22 A | CP09-EN-TR8-S-3140 FF+7d, CP09-EN-TR8-S-3140 SS+7d | 100% |
|  | 5 | **Electrical Works** |  | 2025-07-06 | 2025-08-22 |  |  |
| CP09-EN-TR8-A-3150 |  | Power Cables-Shop Drawing Approval | 14d | 2025-07-06 A | 2025-07-10 A | CP09-EN-TR8-S-3150 FF+7d, CP09-EN-TR8-S-3150 SS+7d | 100% |
| CP09-EN-TR8-A-3160 |  | Connecting Pillars-Shop Drawing Approval | 14d | 2025-08-18 A | 2025-08-22 A | CP09-EN-TR8-S-3160 FF+7d, CP09-EN-TR8-S-3160 SS+7d | 100% |
|  | 6 | **Sinage** |  | 2025-07-06 | 2025-07-10 |  |  |
| CP09-EN-TR8-A-3170 |  | Sinage-Shop Drawing Approval | 14d | 2025-07-06 A | 2025-07-10 A | CP09-EN-TR8-S-3170 FF+7d, CP09-EN-TR8-S-3170 SS+7d | 100% |
|  | 7 | **Play Field Equipment** |  | 2025-08-18 | 2025-08-22 |  |  |
| CP09-EN-TR8-A-3180 |  | Play Field Equipment-Shop Drawing Approval | 14d | 2025-08-18 A | 2025-08-22 A | CP09-EN-TR8-S-3180 FF+7d, CP09-EN-TR8-S-3180 SS+7d | 100% |
|  | 8 | **Irrigation Networks** |  | 2025-07-06 | 2025-07-10 |  |  |
| CP09-EN-TR8-A-3190 |  | Irrigation Networks Layout -Shop Drawing Approval | 14d | 2025-07-06 A | 2025-07-10 A | CP09-EN-TR8-S-3190 FF+7d, CP09-EN-TR8-S-3190 SS+7d | 100% |
|  | 9 | **Planting** |  | 2024-12-10 | 2024-12-19 |  |  |
| CP09-EN-TR8-A-3200 |  | Plantings -Shop Drawing Approval | 14d | 2024-12-10 A | 2024-12-19 A | CP09-EN-TR8-S-3200 FF+7d, CP09-EN-TR8-S-3200 SS+7d | 100% |
|  | 10 | **Lighting** |  | 2024-10-27 | 2024-11-03 |  |  |
| CP09-EN-TR8-A-3210 |  | Exterior Lighting for Softlandscape-Shop Drawing Approval | 14d | 2024-10-27 A | 2024-11-03 A | CP09-EN-TR8-S-3210 FF+7d, CP09-EN-TR8-S-3210 SS+7d | 100% |
|  | 4 | **Construction** |  | 2024-02-10 | 2026-09-29 |  |  |
|  | 15 | **Terrace # 01** |  | 2024-08-24 | 2026-07-04 |  |  |
|  | 6 | **Earth Work** |  | 2024-08-24 | 2025-03-16 |  |  |
|  | 1 | **Grading works** |  | 2024-08-24 | 2025-03-16 |  |  |
| CP09-TR1-EW-1030 |  | Excavation work to Reduce Level | 6d | 2024-08-24 A | 2025-03-16 A | CP09-MB-1010, CP09-EN-TR1-A-1470, CP09-CLD-1000, CP09-MS-1010 FS+4d | 100% |
| CP09-TR1-EW-1040 |  | Filling works to make up levels with Compacting | 6d | 2024-08-24 A | 2025-03-16 A | CP09-TR1-EW-1030 SS+4.69d, CP09-EN-TR1-A-1470, CP09-MS-1010, CP09-CLD-1000 | 100% |
|  | 2 | **Planting** |  | 2024-08-24 | 2025-03-16 |  |  |
| CP09-TR1-EW-1050 |  | Excavation works for Planting Beds | 6d | 2024-08-24 A | 2025-03-16 A | CP09-TR1-EW-1030 SS, CP09-TR1-EW-1040 SS, CP09-EN-TR1-A-1470 | 100% |
|  | 9 | **Retaining & Cheek Walls** |  | 2025-09-01 | 2025-09-28 |  |  |
|  | 1 | **Soild Block Work Cheek Walls** |  | 2025-09-01 | 2025-09-28 |  |  |
| CP09-TR1-RW-1230 |  | Plaing Concrete with HPDE | 2d | 2025-09-01 A | 2025-09-28 A | CP09-TR1-RW-1280 SS+2.81d, CP09-TR1-RW-1280 FF+2.81d, CP09-EN-TR1-A-1480 | 100% |
| CP09-TR1-RW-1240 |  | Reinforced Concrete for Footing | 4d | 2025-09-01 A | 2025-09-28 A | CP09-TR1-RW-1230 SS+2d, CP09-TR1-RW-1230 FF+2d, CP09-EN-TR1-A-1490, CP09-EN-TR1-A-1480 | 100% |
| CP09-TR1-RW-1250 |  | Reinforced Concrete for Tie beam | 4.69d | 2025-09-01 A | 2025-09-28 A | CP09-TR1-RW-1240 SS+2d, CP09-TR1-RW-1240 FF+2d | 100% |
| CP09-TR1-RW-1260 |  | Reinforced Concrete for Column | 3d | 2025-09-01 A | 2025-09-28 A | CP09-TR1-RW-1250 SS+2.81d, CP09-TR1-RW-1250 FF+2.81d | 100% |
| CP09-TR1-RW-1270 |  | Soild Block Work | 3d | 2025-09-01 A | 2025-09-28 A | CP09-TR1-RW-1260 SS+2d, CP09-TR1-RW-1260 FF+2d, CP09-EN-TR1-A-1510, CP09-PR-CV-DY-1020 | 100% |
| CP09-TR1-RW-1280 |  | Excavation | 3.75d | 2025-09-01 A | 2025-09-28 A | CP09-TR1-EW-1030, CP09-TR1-EW-1040 | 100% |
| CP09-TR1-RW-1290 |  | Reinforced Concrete for Beam | 4d | 2025-09-01 A | 2025-09-28 A | CP09-TR1-RW-1270 SS+2d, CP09-TR1-RW-1270 FF+2d | 100% |
| CP09-TR1-RW-1300 |  | Waterproofing & Protection | 3d | 2025-09-01 A | 2025-09-28 A | CP09-TR1-RW-1290 SS+2d, CP09-TR1-RW-1290 FF+2d, CP09-EN-TR1-A-1500 | 100% |
| CP09-TR1-RW-1310 |  | Backfilling | 3d | 2025-09-01 A | 2025-09-28 A | CP09-TR1-RW-1300 SS+2d, CP09-TR1-RW-1300 FF+2d | 100% |
| CP09-TR1-RW-1320 |  | Marble Cladding | 4d | 2025-09-01 A | 2025-09-28 A | CP09-TR1-RW-1310 SS+1d, CP09-TR1-RW-1310 FF+1d, CP09-EN-TR1-A-1520, CP09-PR-CV-DY-1120 | 100% |

| ID | WBS | Task | Duration | Start | Finish | Predecessors | Complete | Total float |
| --- | --- | --- | --- | --- | --- | --- | --- | --- |
| CP09-TR1-RW-1330 |  | Marble Copping | 4d | 2025-09-01 A | 2025-09-28 A | CP09-TR1-RW-1320 SS+2d, CP09-TR1-RW-1320 FF+2d, CP09-EN-TR1-A-1520, CP09-PR-CV-DY-1120 | 100% |  |
|  | 2 | **Solid Block Retaining Walls** |  | 2025-09-01 | 2025-09-28 |  |  |  |
| CP09-TR1-RW-1340 |  | Plaing Concrete with HPDE | 2d | 2025-09-01 A | 2025-09-28 A | CP09-TR1-RW-1390 SS+2d, CP09-TR1-RW-1390 FF+2d, CP09-EN-TR1-A-1480 | 100% |  |
| CP09-TR1-RW-1350 |  | Reinforced Concrete for Footing | 4d | 2025-09-01 A | 2025-09-28 A | CP09-TR1-RW-1340 SS+1d, CP09-TR1-RW-1340 FF+1d, CP09-EN-TR1-A-1480, CP09-EN-TR1-A-1490 | 100% |  |
| CP09-TR1-RW-1360 |  | Reinforced Concrete for Tie beam | 5d | 2025-09-01 A | 2025-09-28 A | CP09-TR1-RW-1350 SS+2d, CP09-TR1-RW-1350 FF+2d | 100% |  |
| CP09-TR1-RW-1370 |  | Reinforced Concrete for Column | 3d | 2025-09-01 A | 2025-09-28 A | CP09-TR1-RW-1360 SS+2d, CP09-TR1-RW-1360 FF+2d | 100% |  |
| CP09-TR1-RW-1380 |  | Soild Block Work | 3d | 2025-09-01 A | 2025-09-28 A | CP09-TR1-RW-1370 SS+1d, CP09-TR1-RW-1370 FF+1d, CP09-EN-TR1-A-1510 | 100% |  |
| CP09-TR1-RW-1390 |  | Excavation | 3.75d | 2025-09-01 A | 2025-09-28 A | CP09-TR1-EW-1030, CP09-TR1-EW-1040 | 100% |  |
| CP09-TR1-RW-1400 |  | Reinforced Concrete for Beam | 4d | 2025-09-01 A | 2025-09-28 A | CP09-TR1-RW-1380 SS+1d, CP09-TR1-RW-1380 FF+1d | 100% |  |
| CP09-TR1-RW-1410 |  | Waterproofing & Protection | 3d | 2025-09-01 A | 2025-09-28 A | CP09-TR1-RW-1400 SS+2d, CP09-TR1-RW-1400 FF+2d | 100% |  |
| CP09-TR1-RW-1420 |  | Backfilling | 3d | 2025-09-01 A | 2025-09-28 A | CP09-TR1-RW-1410 SS+1d, CP09-TR1-RW-1410 FF+1d | 100% |  |
| CP09-TR1-RW-1430 |  | Marble Cladding | 4d | 2025-09-01 A | 2025-09-28 A | CP09-TR1-RW-1420 SS+1d, CP09-TR1-RW-1420 FF+1d, CP09-EN-TR1-A-1520, CP09-PR-CV-DY-1120 | 100% |  |
| CP09-TR1-RW-1440 |  | Marble Copping | 4d | 2025-09-01 A | 2025-09-28 A | CP09-TR1-RW-1430 SS+2d, CP09-TR1-RW-1430 FF+2d, CP09-EN-TR1-A-1520, CP09-PR-CV-DY-1120 | 100% |  |
|  | 1 | **Irrigation Works** |  | 2025-01-07 | 2026-05-31 |  |  |  |
|  | 1 | **Sub-Main & Lateral** |  | 2025-01-07 | 2025-06-20 |  |  |  |
| CP09-TR1-IR-1110 |  | Excavation for Sub-main & Lateral Pieps | 4d | 2025-01-07 A | 2025-06-20 A | CP09-EN-TR1-A-1710, CP09-TR1-HD-2380 | 100% |  |
| CP09-TR1-IR-1120 |  | Sub-main & Lateral Pieps laying out and installation | 5d | 2025-02-03 A | 2025-06-20 A | CP09-TR1-IR-1110 SS+2d, CP09-TR1-IR-1110 FF+5d, CP09-PR-IR-DY-1000 | 100% |  |
| CP09-TR1-IR-1130 |  | Sub-main & Lateral Pieps Testing | 3d | 2025-02-05 A | 2025-06-20 A | CP09-TR1-IR-1120 SS+2d, CP09-TR1-IR-1120 FF+2d | 100% |  |
| CP09-TR1-IR-1140 |  | Backfilling forSub-main & Lateral Pieps | 4d | 2025-02-06 A | 2025-06-20 A | CP09-TR1-IR-1130 SS+2d, CP09-TR1-IR-1130 FF+2d | 100% |  |
|  | 2 | **Fittings & Accessories** |  | 2025-06-01 | 2026-05-31 |  |  |  |
| CP09-TR1-IR-1180 |  | Installation of Electrical solenoid valve | 3d | 2025-06-01 A | 2026-04-28 A | CP09-TR1-IR-1170, CP09-PR-IR-DY-1050 | 100% |  |
| CP09-TR1-IR-1150 |  | Installation of Dripline | 3d | 2025-09-30 A | 2026-05-26 | CP09-PR-IR-DY-1010, CP09-TR1-IR-1130, CP09-TR1-SF-1170 | 98% | -103d |
| CP09-TR1-IR-1160 |  | Installation of Sprinklers | 3d | 2025-09-30 A | 2026-05-28 | CP09-TR1-IR-1150 SS+2d, CP09-PR-IR-DY-1040, CP09-TR1-IR-1150 FF+2d | 50% | -103d |
| CP09-TR1-IR-1170 |  | Installation Valves & Rings | 5d | 2025-10-13 A | 2026-05-31 | CP09-TR1-IR-1160 SS+2d, CP09-PR-IR-DY-1030, CP09-PR-IR-DY-1020, CP09-TR1-IR-1160 FF+2d | 50% | -103d |
| CP09-TR1-IR-1200 |  | Installation of Controller decoder cables | 5d | 2025-10-13 A | 2025-10-17 A | CP09-TR1-IR-1190 SF, CP09-PR-IR-DY-1070 | 100% |  |
| CP09-TR1-IR-1190 |  | Installation of Controller (decoder system plastic pedestal) | 2d | 2025-11-24 A | 2025-11-28 A | CP09-TR1-IR-1170, CP09-TR1-IR-1180 SS, CP09-PR-IR-DY-1060 | 100% |  |
| CP09-TR1-IR-1210 |  | Installation of Decoder one station | 3d | 2026-04-24 A | 2026-04-28 A | CP09-TR1-IR-1200 SS, CP09-PR-IR-DY-1080 | 100% |  |
|  | 4 | **Electrical Works** |  | 2025-06-01 | 2026-05-28 |  |  |  |
|  | 1 | **Power Cable & Pillars** |  | 2025-06-01 | 2026-05-28 |  |  |  |
| CP09-TR1-EL-1040 |  | Excavation | 5d | 2025-06-01 A | 2026-05-28 | CP09-TR1-EW-1030, CP09-TR1-EW-1040, CP09-TR1-IR-1140, CP09-EN-TR1-A-1670 | 100% | -101d |
| CP09-TR1-EL-1050 |  | Installation of Power Cables | 4d | 2025-09-30 A | 2025-10-04 A | CP09-TR1-EL-1040 SS+2d, CP09-TR1-EL-1040 FF+2d, CP09-EN-TR1-A-1670, CP09-EN-TR1-A-1680, CP09-PR-EL-DY-1060 | 100% |  |
| CP09-TR1-EL-1060 |  | Backfilling for Power Cables | 4d | 2025-09-30 A | 2025-10-04 A | CP09-TR1-EL-1050 SS+2d, CP09-TR1-EL-1050 FF+2d | 100% |  |
| CP09-TR1-EL-1070 |  | Installation of Connecting Pillars | 3d | 2025-09-30 A | 2025-10-04 A | CP09-TR1-HD-2130 SS+3d, CP09-PR-EL-DY-1070 | 100% |  |
|  | 3 | **Hardscape** |  | 2025-02-12 | 2026-06-14 |  |  |  |
|  | 6 | **Concrete Curb** |  | 2025-02-12 | 2025-10-04 |  |  |  |
| CP09-TR1-HD-2080 |  | Excavation | 2d | 2025-02-12 A | 2025-08-08 A | CP09-TR1-EW-1030 SS+3d, CP09-TR1-EW-1040 SS+3d, CP09-TR1-EW-1050 SS+3d, CP09-TR1-EW-1040 FF+3d, CP09-TR1-EW-1030 FF+3d, CP09-TR1-EW-1050 FF+3d | 100% |  |
| CP09-TR1-HD-2090 |  | Plains Concrete with HDPE waterproofing | 2d | 2025-02-13 A | 2025-08-08 A | CP09-TR1-HD-2080, CP09-EN-TR1-A-1600 | 100% |  |
| CP09-TR1-HD-2360 |  | Under Paving Reinforced Concrete Curb | 4d | 2025-02-15 A | 2025-08-08 A | CP09-TR1-HD-2090 SS+1.88d, CP09-TR1-HD-2090 FF+1.88d | 100% |  |
| CP09-TR1-HD-2380 |  | Instal Flush Curb | 3d | 2025-09-30 A | 2025-10-04 A | CP09-EN-TR1-A-1600, CP09-PR-HD-DY-1080, CP09-TR1-HD-2360 SS+3d, CP09-TR1-HD-2360 SF+3d, CP09-TR1-HD-2360 FS+3d, CP09-TR1-HD-2360 FF+3d | 100% |  |
|  | 1 | **Side wake & Plazes** |  | 2025-02-18 | 2026-04-10 |  |  |  |
|  | 8 | **Interlocking Paving** |  | 2025-09-30 | 2025-10-04 |  |  |  |
| CP09-TR1-HD-2100 |  | Crush Stone for Interlock Types IL-(01,02,06,07) | 4d | 2025-09-30 A | 2025-10-04 A | CP09-EN-TR1-A-1610, CP09-TR1-EW-1030, CP09-TR1-EW-1040, CP09-TR1-IR-1140, CP09-TR1-EL-1060, CP09-PR-HD-DY-1090 | 100% |  |
| CP09-TR1-HD-2110 |  | Sand Layer for Interlock Types IL-(01,02,06,07) | 4d | 2025-09-30 A | 2025-10-04 A | CP09-TR1-HD-2100 SS+2d, CP09-TR1-HD-2100 FF+2d, CP09-EN-TR1-A-1610 | 100% |  |
| CP09-TR1-HD-2120 |  | Motar Bed Interlock Types IL-(03,04,08,09,10) | 3d | 2025-09-30 A | 2025-10-04 A | CP09-TR1-HD-2110 SS, CP09-EN-TR1-A-1610 | 100% |  |
| CP09-TR1-HD-2130 |  | Interlocking Paving | 5d | 2025-09-30 A | 2025-10-04 A | CP09-TR1-HD-2110 SS+2d, CP09-TR1-HD-2120 SS+2d, CP09-TR1-HD-2110 FF+2d, CP09-TR1-HD-2120 FF+2d, CP09-EN-TR1-A-1610, CP09-PR-HD-DY-1180 | 100% |  |
|  | 2 | **Concrete in Situ** |  | 2025-02-26 | 2025-09-12 |  |  |  |
|  | 1 | **Slab on Garde** |  | 2025-02-26 | 2025-09-12 |  |  |  |
| CP09-TR1-HD-1870 |  | Plain Concrete with HDPE | 2d | 2025-02-26 A | 2025-09-12 A | CP09-TR1-EW-1030, CP09-TR1-EW-1040, CP09-TR1-IR-1140, CP09-TR1-EL-1060, CP09-EN-TR1-A-1530 | 100% |  |
| CP09-TR1-HD-1880 |  | Reinfored Concrete slab on grade | 3d | 2025-05-01 A | 2025-09-12 A | CP09-TR1-HD-1870 SS+1d, CP09-TR1-HD-1870 FF+1d | 100% |  |
| CP09-TR1-HD-1890 |  | Waterproofing & Screed | 2d | 2025-07-06 A | 2025-09-12 A | CP09-TR1-HD-1880 SS+1d, CP09-TR1-HD-1880 FF+1d | 100% |  |
|  | 2 | **Concrete In-situ w./Exposed Aggregate Finish** |  | 2025-07-06 | 2025-09-12 |  |  |  |
| CP09-TR1-HD-1900 |  | Concrete casting (including Joints & Wire Mish) | 3d | 2025-07-06 A | 2025-09-12 A | CP09-TR1-HD-1890 SS+1d, CP09-TR1-HD-2380, CP09-EN-TR1-A-1530, CP09-PR-HD-DY-1000, CP09-TR1-HD-1890 FF+1d | 100% |  |
| CP09-TR1-HD-1910 |  | Finishing Concrete Surface | 2d | 2025-07-06 A | 2025-09-12 A | CP09-TR1-HD-1900, CP09-TR1-RW-1320, CP09-TR1-RW-1330, CP09-TR1-RW-1430, CP09-TR1-RW-1440 | 100% |  |
|  | 1 | **Marble Paving** |  | 2025-02-18 | 2025-10-24 |  |  |  |
|  | 1 | **Slab on Garde** |  | 2025-02-18 | 2025-08-08 |  |  |  |
| CP09-TR1-HD-1820 |  | Plain Concrete with HDPE | 2d | 2025-02-18 A | 2025-03-11 A | CP09-TR1-EW-1030, CP09-TR1-EW-1050, CP09-TR1-IR-1140, CP09-TR1-EL-1060, CP09-EN-TR1-A-1540 | 100% |  |
| CP09-TR1-HD-1830 |  | Reinfored Concrete slab on grade | 3d | 2025-05-07 A | 2025-08-08 A | CP09-TR1-HD-1820 SS+1d, CP09-TR1-HD-1820 FF+1d | 100% |  |
| CP09-TR1-HD-1840 |  | Waterproofing & Screed | 2d | 2025-07-06 A | 2025-08-08 A | CP09-TR1-HD-1830 SS+1d, CP09-TR1-HD-1830 FF+1d | 100% |  |
|  | 2 | **Marble Tiles** |  | 2025-04-20 | 2025-10-24 |  |  |  |
| CP09-TR1-HD-1850 |  | Marble Fixiation | 3d | 2025-04-20 A | 2025-09-19 A | CP09-TR1-HD-1840 SS+1d, CP09-TR1-HD-2380, CP09-EN-TR1-A-1540, CP09-PR-HD-DY-1010, CP09-TR1-HD-1840 FF+1d | 100% |  |
| CP09-TR1-HD-1860 |  | Marble Surfcae Finishing | 2d | 2025-09-24 A | 2025-10-24 A | CP09-TR1-HD-1850, CP09-TR1-HD-1910 SS | 100% |  |
|  | 3 | **Wooden Floor Boards** |  |  |  |  |  |  |
|  | 1 | **Slab on Garde** |  |  |  |  |  |  |
|  | 2 | **Wood- Plastic Composit** |  |  |  |  |  |  |
|  | 4 | **Gravel layer** |  | 2025-09-30 | 2026-04-10 |  |  |  |
|  | 1 | **Slab on Garde** |  | 2025-09-30 | 2026-04-10 |  |  |  |
| CP09-TR1-HD-1970 |  | Plain Concrete with HDPE | 2d | 2025-09-30 A | 2025-10-04 A | CP09-TR1-EW-1030, CP09-TR1-EW-1040, CP09-TR1-IR-1140, CP09-TR1-EL-1060, CP09-EN-TR1-A-1560 | 100% |  |
| CP09-TR1-HD-1990 |  | Mortar bed | 2d | 2026-03-31 A | 2026-04-10 A | CP09-TR1-HD-1970 SS+1d, CP09-TR1-HD-1970 FF+1d | 100% |  |
|  | 2 | **Gravel Layer, w./Earth Colors** |  | 2026-04-06 | 2026-04-10 |  |  |  |
| CP09-TR1-HD-2000 |  | Furnish & install Garvel Layer | 3d | 2026-04-06 A | 2026-04-10 A | CP09-TR1-HD-1990, CP09-TR1-HD-2380, CP09-EN-TR1-A-1560, CP09-PR-HD-DY-1030 | 100% |  |

| ID | WBS | Task | Duration | Start | Finish | Predecessors | Complete | Total float |
| --- | --- | --- | --- | --- | --- | --- | --- | --- |
|  | 5 | **Crushed Stone** |  | 2025-09-30 | 2026-04-10 |  |  |  |
|  | 1 | **Slab on Garde** |  | 2025-09-30 | 2026-04-10 |  |  |  |
| CP09-TR1-HD-2010 |  | Geotextile membrane | 2.81d | 2025-09-30 A | 2025-10-04 A | CP09-TR1-EW-1030, CP09-TR1-EW-1040, CP09-TR1-IR-1140, CP09-TR1-EL-1060, CP09-EN-TR1-A-1570 | 100% |  |
| CP09-TR1-HD-2030 |  | Gravel Fix sheets | 2.81d | 2026-03-31 A | 2026-04-10 A | CP09-TR1-HD-2010 | 100% |  |
|  | 2 | **Crushed Dolomite Stone** |  | 2026-04-06 | 2026-04-10 |  |  |  |
| CP09-TR1-HD-2040 |  | Furnish & Install Crushed Dolomite stone , w./ mixed colors | 4d | 2026-04-06 A | 2026-04-10 A | CP09-TR1-HD-2030 FF, CP09-TR1-HD-2030 SS, CP09-TR1-HD-2000 SS, CP09-TR1-HD-2380, CP09-EN-TR1-A-1570, CP09-PR-HD-DY-1040 | 100% |  |
|  | 6 | **Loose Gravel** |  | 2026-04-06 | 2026-04-10 |  |  |  |
|  | 2 | **Loose Gravel 50mm** |  | 2026-04-06 | 2026-04-10 |  |  |  |
| CP09-TR1-HD-2050 |  | Furnish & Install loose gravel w./earth colors. | 4d | 2026-04-06 A | 2026-04-10 A | CP09-TR1-HD-2380, CP09-TR1-IR-1140, CP09-TR1-EL-1060, CP09-EN-TR1-A-1580, CP09-PR-HD-DY-1050 | 100% |  |
|  | 7 | **Clean Sand Layer** |  | 2025-09-30 | 2026-04-10 |  |  |  |
|  | 1 | **Kids & Fitness Area** |  | 2025-09-30 | 2026-04-10 |  |  |  |
| CP09-TR1-HD-2060 |  | Geotextile Sheets | 3d | 2025-09-30 A | 2026-04-10 A | CP09-TR1-EW-1030, CP09-TR1-EW-1040, CP09-TR1-HD-2380, CP09-TR1-IR-1140, CP09-TR1-EL-1060, CP09-EN-TR1-A-1590 | 100% |  |
| CP09-TR1-HD-2070 |  | Install Clean sand layer | 3d | 2025-09-30 A | 2026-04-10 A | CP09-TR1-HD-2060, CP09-TR1-HD-2050, CP09-TR1-HD-2380, CP09-EN-TR1-A-1590, CP09-PR-HD-DY-1070 | 100% |  |
|  | 2 | **Site Improvments** |  | 2025-09-30 | 2026-06-14 |  |  |  |
|  | 1 | **Marble Steps** |  | 2025-09-30 | 2025-10-04 |  |  |  |
| CP09-TR1-HD-2140 |  | Reinforecd Concrete Step. | 4d | 2025-09-30 A | 2025-10-04 A | CP09-TR1-EW-1030, CP09-TR1-EW-1040, CP09-EN-TR1-A-1620, CP09-TR1-IR-1140, CP09-TR1-EL-1060 | 100% |  |
| CP09-TR1-HD-2150 |  | Install Marble Blocks | 3d | 2025-09-30 A | 2025-10-04 A | CP09-TR1-HD-2140 SS+2d, CP09-TR1-HD-2140 FF+2d, CP09-PR-HD-DY-1100 | 100% |  |
| CP09-TR1-HD-2160 |  | Finishing Marble Surface | 2d | 2025-09-30 A | 2025-10-04 A | CP09-TR1-HD-2150, CP09-TR1-RW-1320, CP09-TR1-RW-1330, CP09-TR1-RW-1430, CP09-TR1-RW-1440 | 100% |  |
|  | 2 | **Curvelinear Block Seat** |  | 2025-09-30 | 2026-04-28 |  |  |  |
| CP09-TR1-HD-2170 |  | Excavation | 2d | 2025-09-30 A | 2025-12-29 A | CP09-TR1-EW-1030, CP09-TR1-EW-1040, CP09-EN-TR1-A-1630 | 100% |  |
| CP09-TR1-HD-2180 |  | Plaing Concrete with HPDE | 2d | 2025-09-30 A | 2025-12-29 A | CP09-TR1-HD-2170 | 100% |  |
| CP09-TR1-HD-2190 |  | Reinforced Concrete for Footing | 4d | 2025-09-30 A | 2025-12-29 A | CP09-TR1-HD-2180 SS+2d, CP09-TR1-HD-2180 FF+2d | 100% |  |
| CP09-TR1-HD-2200 |  | Reinforced Concrete for beam | 3d | 2025-09-30 A | 2025-12-29 A | CP09-TR1-HD-2190 SS+3d, CP09-TR1-HD-2190 FF+3d | 100% |  |
| CP09-TR1-HD-2210 |  | Waterproofing & Protection | 2d | 2025-12-25 A | 2025-12-29 A | CP09-TR1-HD-2200 SS+2d, CP09-TR1-HD-2200 FF+2d | 100% |  |
| CP09-TR1-HD-2220 |  | Backfilling | 2d | 2025-12-25 A | 2025-12-29 A | CP09-TR1-HD-2210 SS+2d, CP09-TR1-HD-2210 FF+2d | 100% |  |
| CP09-TR1-HD-2230 |  | Marble Capping | 2d | 2026-04-24 A | 2026-04-28 A | CP09-TR1-RW-1430, CP09-TR1-RW-1440, CP09-TR1-RW-1320, CP09-TR1-RW-1330, CP09-TR1-HD-2220 SS+1d, CP09-PR-HD-DY-1110, CP09-TR1-HD-2220 FF+1d | 100% |  |
|  | 4 | **Handrails** |  | 2026-06-10 | 2026-06-14 |  |  |  |
| CP09-TR1-HD-2390 |  | Install & Fix Stainless Handrail (500 mm height) | 3d | 2026-06-10 | 2026-06-13 | CP09-TR1-HD-2150, CP09-TR1-HD-2230, CP09-EN-TR1-A-1650, CP09-PR-HD-DY-1160 |  | -138d |
| CP09-TR1-HD-2400 |  | Install & Fix Glass Handrail (900mm height) | 4d | 2026-06-10 | 2026-06-14 | CP09-TR1-HD-2150, CP09-TR1-HD-2230, CP09-EN-TR1-A-1650, CP09-PR-HD-DY-1170 |  | -139d |
|  | 8 | **Sinage** |  | 2025-09-30 | 2026-04-28 |  |  |  |
| CP09-TR1-SN-2520 |  | Excavation | 7d | 2025-09-30 A | 2025-10-04 A | CP09-TR1-RW-1420, CP09-TR1-RW-1310, CP09-TR1-HD-2130, CP09-EN-TR1-A-1690 | 100% |  |
| CP09-TR1-SN-2530 |  | Plain Concrete with HDPE | 5d | 2025-09-30 A | 2025-10-04 A | CP09-TR1-SN-2520 SS+1d, CP09-TR1-SN-2520 FF+1d | 100% |  |
| CP09-TR1-SN-2540 |  | Reinforced Concrete | 10d | 2025-09-30 A | 2025-10-04 A | CP09-TR1-SN-2530 SS+2d, CP09-TR1-SN-2530 FF+2d | 100% |  |
| CP09-TR1-SN-2550 |  | Waterproofing | 5d | 2025-09-30 A | 2025-10-04 A | CP09-TR1-SN-2540 SS+3d, CP09-TR1-SN-2540 FF+3d | 100% |  |
| CP09-TR1-SN-2560 |  | Grouting | 6d | 2025-09-30 A | 2025-10-04 A | CP09-TR1-SN-2550 SS+2d, CP09-TR1-SN-2550 FF+2d | 100% |  |
| CP09-TR1-SN-2610 |  | RULES SIGN | 10d | 2025-09-30 A | 2025-10-04 A | CP09-PR-SN-DY-1030, CP09-TR1-SN-2560 | 100% |  |
| CP09-TR1-SN-2620 |  | IDENTIFICATION SIGN | 5d | 2025-11-24 A | 2026-04-28 A | CP09-TR1-SN-2570, CP09-TR1-SN-2580, CP09-TR1-SN-2610, CP09-PR-SN-DY-1040, CP09-TR1-SN-2560 FF | 100% |  |
| CP09-TR1-SN-2570 |  | STREET DIRECTIONAL SIGN | 10d | 2026-02-16 A | 2026-04-28 A | CP09-PR-SN-DY-1000, CP09-TR1-SN-2560 FS+1d | 100% |  |
| CP09-TR1-SN-2600 |  | UNIT ID SIGN (BACK YARD) | 5d | 2026-02-16 A | 2026-04-28 A | CP09-TR1-SN-2570, CP09-TR1-SN-2580, CP09-TR1-SN-2610, CP09-PR-SN-DY-1020, CP09-TR1-SN-2560 FF | 100% |  |
| CP09-TR1-SN-2580 |  | DIRECTIONAL SIGN FOR VEHICULAR | 10d | 2026-02-22 A | 2026-04-28 A | CP09-TR1-SN-2560, CP09-PR-SN-DY-1010 | 100% |  |
| CP09-TR1-SN-2590 |  | UNIT ID SIGN (FRONT YARD) | 5d | 2026-02-22 A | 2026-04-28 A | CP09-TR1-SN-2570, CP09-TR1-SN-2580, CP09-TR1-SN-2610, CP09-TR1-SN-2560, CP09-PR-SN-DY-1020 | 100% |  |
|  | 7 | **Landscape Furntiure** |  | 2025-09-01 | 2026-06-01 |  |  |  |
| CP09-TR1-FN-2480 |  | Install & Fix tensile Teflon Tent | 15d | 2025-09-01 A | 2026-06-01 | CP09-TR1-HD-2390, CP09-TR1-HD-2400, CP09-TR1-HD-2380 FF, CP09-PR-HD-DY-1020 FF, CP09-PR-HD-A-1020 FF+7d, CP09-TR1-EW-1030 FF+3d, CP09-TR1-EW-1040 FF+3d, CP09-TR1-IR-1140 FF+3d, CP09-TR1-EL-1060 FF+3d, CP09-TR1-HD-2130, CP09-TR1-HD-2050 FF, CP09-TR1-HD-2040 FF, CP09-TR1-HD-2000 FF, CP09-TR1-HD-1860 FF, CP09-TR1-HD-1910 FF, CP09-EN-TR1-A-1660, CP09-PR-FN-DY-1070 | 50% | -127.5d |
| CP09-TR1-FN-2420 |  | Install & Fix Crcular Cast-iron tree grate | 10d | 2025-11-24 A | 2025-11-28 A | CP09-TR1-HD-2390, CP09-TR1-HD-2400, CP09-TR1-HD-2380 FF, CP09-PR-HD-DY-1020 FF, CP09-PR-HD-A-1020 FF+7d, CP09-TR1-EW-1030 FF+3d, CP09-TR1-EW-1040 FF+3d, CP09-TR1-IR-1140 FF+3d, CP09-TR1-EL-1060 FF+3d, CP09-TR1-HD-2130, CP09-TR1-HD-2050 FF, CP09-TR1-HD-2040 FF, CP09-TR1-HD-2000 FF, CP09-TR1-HD-1860 FF, CP09-TR1-HD-1910 FF, CP09-EN-TR1-A-1660, CP09-PR-FN-DY-1010 | 100% |  |
| CP09-TR1-FN-2440 |  | Install & Fix Pitch Pine Benchs | 7d | 2025-11-24 A | 2026-01-23 A | CP09-TR1-HD-2390, CP09-TR1-HD-2400, CP09-TR1-HD-2380 FF, CP09-PR-HD-DY-1020 FF, CP09-PR-HD-A-1020 FF+7d, CP09-TR1-EW-1030 FF+3d, CP09-TR1-EW-1040 FF+3d, CP09-TR1-IR-1140 FF+3d, CP09-TR1-EL-1060 FF+3d, CP09-TR1-HD-2130 FF, CP09-TR1-HD-2050 FF, CP09-TR1-HD-2040 FF, CP09-TR1-HD-2000 FF, CP09-TR1-HD-1860 FF, CP09-TR1-HD-1910 FF, CP09-EN-TR1-A-1660, CP09-PR-FN-DY-1030 | 100% |  |
| CP09-TR1-FN-2450 |  | Install & Fix Polyester Hammocks | 10d | 2025-11-24 A | 2025-11-28 A | CP09-TR1-HD-2390, CP09-TR1-HD-2400, CP09-TR1-HD-2380 FF, CP09-PR-HD-DY-1020 FF, CP09-PR-HD-A-1020 FF+7d, CP09-TR1-EW-1030 FF+3d, CP09-TR1-EW-1040 FF+3d, CP09-TR1-IR-1140 FF+3d, CP09-TR1-EL-1060 FF+3d, CP09-TR1-HD-2130, CP09-TR1-HD-2050 FF, CP09-TR1-HD-2040 FF, CP09-TR1-HD-2000 FF, CP09-TR1-HD-1860 FF, CP09-TR1-HD-1910 FF, CP09-EN-TR1-A-1660, CP09-PR-FN-DY-1040 | 100% |  |
| CP09-TR1-FN-2460 |  | Install & Fix Adult Play Swing | 10d | 2025-11-24 A | 2025-11-28 A | CP09-TR1-HD-2390, CP09-TR1-HD-2400, CP09-TR1-HD-2380 FF, CP09-PR-HD-DY-1020 FF, CP09-PR-HD-A-1020 FF+7d, CP09-TR1-EW-1030 FF+3d, CP09-TR1-EW-1040 FF+3d, CP09-TR1-IR-1140 FF+3d, CP09-TR1-EL-1060 FF+3d, CP09-TR1-HD-2130, CP09-TR1-HD-2050 FF, CP09-TR1-HD-2040 FF, CP09-TR1-HD-2000 FF, CP09-TR1-HD-1860 FF, CP09-TR1-HD-1910 FF, CP09-EN-TR1-A-1660, CP09-PR-FN-DY-1050 | 100% |  |
| CP09-TR1-FN-2470 |  | Install & Fix Aluminum Trash Bin | 10d | 2025-11-24 A | 2026-01-23 A | CP09-TR1-HD-2390, CP09-TR1-HD-2400, CP09-TR1-HD-2380 FF, CP09-PR-HD-DY-1020 FF, CP09-PR-HD-A-1020 FF+7d, CP09-TR1-EW-1030 FF+3d, CP09-TR1-EW-1040 FF+3d, CP09-TR1-IR-1140 FF+3d, CP09-TR1-EL-1060 FF+3d, CP09-TR1-HD-2130, CP09-TR1-HD-2050 FF, CP09-TR1-HD-2040 FF, CP09-TR1-HD-2000 FF, CP09-TR1-HD-1860 FF, CP09-TR1-HD-1910 FF, CP09-EN-TR1-A-1660, CP09-PR-FN-DY-1060 | 100% |  |
| CP09-TR1-FN-2410 |  | Install & Fix Pitch Pine Picnic Table | 7d | 2026-04-24 A | 2026-04-28 A | CP09-TR1-HD-2390, CP09-TR1-HD-2400, CP09-TR1-HD-2380 FF, CP09-PR-HD-DY-1020 FF, CP09-PR-HD-A-1020 FF+7d, CP09-TR1-EW-1030 FF+3d, CP09-TR1-EW-1040 FF+3d, CP09-TR1-IR-1140 FF+3d, CP09-TR1-EL-1060 FF+3d, CP09-TR1-HD-2130, CP09-TR1-HD-2050, CP09-TR1-HD-2040, CP09-TR1-HD-2000, CP09-TR1-HD-1860 FF, CP09-TR1-HD-1910 FF, CP09-EN-TR1-A-1660, CP09-PR-FN-DY-1000 | 100% |  |
| CP09-TR1-FN-2490 |  | Lanscape Edging ( Rubber) | 15d | 2026-04-24 A | 2026-04-28 A | CP09-TR1-HD-2390, CP09-TR1-HD-2400, CP09-TR1-HD-2380 FF, CP09-PR-HD-DY-1020 FF, CP09-PR-HD-A-1020 FF+7d, CP09-TR1-EW-1030 FF+3d, CP09-TR1-EW-1040 FF+3d, CP09-TR1-IR-1140 FF+3d, CP09-TR1-EL-1060 FF+3d, CP09-TR1-HD-2130, CP09-TR1-HD-2050 FF, CP09-TR1-HD-2040 FF, CP09-TR1-HD-2000 FF, CP09-TR1-HD-1860 FF, CP09-TR1-HD-1910 FF, CP09-EN-TR1-A-1660, CP09-PR-FN-DY-1080 | 100% |  |
|  | 10 | **Play Field Equipment** |  | 2026-03-02 | 2026-05-28 |  |  |  |
| CP09-TR1-PE-2510 |  | Kids playground equipment | 5d | 2026-03-02 A | 2026-04-28 A | CP09-TR1-HD-2070, CP09-PR-PE-DY-1040, CP09-PR-PE-DY-1050, CP09-PR-PE-DY-1060, CP09-PR-PE-DY-1070, CP09-PR-PE-DY-1080, CP09-PR-PE-DY-1090, CP09-PR-PE-DY-1100 | 100% |  |
| CP09-TR1-PE-2500 |  | Fitness areas equipment | 5d | 2026-05-24 | 2026-05-28 | CP09-TR1-HD-2070, CP09-EN-TR1-A-1700, CP09-PR-PE-DY-1000, CP09-PR-PE-DY-1010, CP09-PR-PE-DY-1020, CP09-PR-PE-DY-1030 |  | -125d |
|  | 5 | **Lighting for Softscape** |  | 2025-11-10 | 2026-07-04 |  |  |  |
|  | 1 | **Exterior Lighting** |  | 2025-11-10 | 2026-07-04 |  |  |  |
| CP09-TR1-SF-1250 |  | Install Landscape Lighting Pole | 10d | 2025-11-10 A | 2026-04-28 A | CP09-TR1-EL-1050, CP09-EN-TR1-A-1730, CP09-PR-EL-DY-1080 | 100% |  |
| CP09-TR1-SF-1260 |  | Install Bollard for Walkways | 4d | 2026-02-16 A | 2026-04-28 A | CP09-TR1-HD-2380, CP09-PR-HD-DY-1020, CP09-PR-HD-A-1020 FS+7d, CP09-TR1-EW-1030 FS+3d, CP09-TR1-EW-1040 FS+3d, CP09-TR1-IR-1140 FS+3d, CP09-TR1-EL-1060 FS+3d, CP09-TR1-EL-1050, CP09-TR1-HD-2130, CP09-TR1-HD-1910, CP09-TR1-HD-1860, CP09-TR1-HD-2000, CP09-TR1-HD-2040, CP09-TR1-HD-2050, CP09-TR1-HD-2070, CP09-EN-TR1-A-1730, CP09-PR-EL-DY-1090, CP09-TR1-SF-1250 | 100% |  |
| CP09-TR1-SF-1280 |  | Install Inground Uplight For Palms | 6d | 2026-04-24 A | 2026-04-28 A | CP09-TR1-SF-1290 SS, CP09-TR1-SF-1260 SS, CP09-EN-TR1-A-1730, CP09-PR-EL-DY-1120 | 100% |  |
| CP09-TR1-SF-1290 |  | Install Projectors for Trees | 4d | 2026-04-24 A | 2026-04-28 A | CP09-TR1-SF-1180, CP09-TR1-SF-1190, CP09-TR1-SF-1200, CP09-TR1-SF-1210, CP09-TR1-SF-1220, CP09-TR1-SF-1230, CP09-TR1-SF-1240, CP09-EN-TR1-A-1730, CP09-PR-EL-DY-1130 | 100% |  |
| CP09-TR1-SF-1270 |  | Install Diffused Wall Recessed Step | 6d | 2026-06-28 | 2026-07-04 | CP09-TR1-SF-1260 SS+3d, CP09-EN-TR1-A-1730, CP09-PR-EL-DY-1110 |  | -156d |
|  | 2 | **Outlet Lighting Fixtures** |  | 2026-04-24 | 2026-04-28 |  |  |  |
| CP09-TR1-SF-1310 |  | Install outlet lighting fixtures | 5d | 2026-04-24 A | 2026-04-28 A | CP09-TR1-SF-1260, CP09-EN-TR1-A-1730, CP09-PR-EL-DY-1150 | 100% |  |
|  | 2 | **Softscape** |  | 2025-08-04 | 2026-05-30 |  |  |  |
|  | 1 | **Planting** |  | 2025-08-04 | 2026-05-30 |  |  |  |
| CP09-TR1-SF-1200 |  | Ground Covers | 6d | 2025-08-04 A | 2026-05-26 | CP09-TR1-SF-1170, CP09-TR1-SF-1160, CP09-TR1-SF-1180 SS+3d, CP09-TR1-SF-1180 FF+3d, CP09-PR-PN-DY-1070 | 50% | -123d |
| CP09-TR1-SF-1190 |  | Shrubs | 6d | 2025-09-01 A | 2026-05-26 | CP09-TR1-SF-1170, CP09-TR1-SF-1160, CP09-TR1-SF-1180 SS+3d, CP09-TR1-SF-1180 FF+3d, CP09-PR-PN-DY-1060 | 50% | -123d |
| CP09-TR1-SF-1160 |  | Sweet sand for all plants | 7d | 2025-09-30 A | 2026-04-10 A | CP09-TR1-EW-1050, CP09-TR1-HD-2380, CP09-TR1-HD-2130, CP09-EN-TR1-A-1720, CP09-PR-PN-DY-1000 | 100% |  |
| CP09-TR1-SF-1170 |  | Organic Manure | 7d | 2025-09-30 A | 2026-04-10 A | CP09-TR1-SF-1160 SS+5d, CP09-EN-TR1-A-1720, CP09-PR-PN-DY-1010 | 100% |  |
| CP09-TR1-SF-1210 |  | Succulents | 6d | 2025-09-30 A | 2026-04-28 A | CP09-TR1-SF-1170, CP09-TR1-SF-1160, CP09-TR1-SF-1180 SS+3d, CP09-TR1-SF-1180 FF+3d, CP09-PR-PN-DY-1080 | 100% |  |
| CP09-TR1-SF-1220 |  | Vines & Climbers | 6d | 2025-09-30 A | 2026-04-28 A | CP09-TR1-SF-1170, CP09-TR1-SF-1160, CP09-TR1-SF-1180 SS+3d, CP09-TR1-SF-1180 FF+3d, CP09-PR-PN-DY-1030 | 100% |  |

| ID | WBS | Task | Duration | Start | Finish | Predecessors | Complete | Total float |
| --- | --- | --- | --- | --- | --- | --- | --- | --- |
| CP09-TR1-SF-1230 |  | Ornamental grass | 6d | 2025-09-30 A | 2026-05-30 | CP09-TR1-SF-1170, CP09-TR1-SF-1160, CP09-TR1-SF-1180 SS+3d, CP09-TR1-SF-1180 FF+3d, CP09-PR-PN-DY-1050 | 50% | -126d |
| CP09-TR1-SF-1240 |  | Lawn | 6d | 2025-09-30 A | 2026-05-30 | CP09-TR1-SF-1170, CP09-TR1-SF-1160, CP09-TR1-SF-1180 SS+3d, CP09-TR1-SF-1180 FF+3d, CP09-PR-PN-DY-1040 | 50% | -126d |
| CP09-TR1-SF-1180 |  | Large Trees | 7d | 2025-11-24 A | 2026-04-28 A | CP09-PR-PN-DY-1020, CP09-TR1-IR-1160, CP09-TR1-IR-1170, CP09-TR1-IR-1180, CP09-TR1-IR-1190, CP09-TR1-IR-1200, CP09-TR1-IR-1150, CP09-TR1-IR-1210 | 100% |  |
|  | 17 | **Terrace # 02** |  | 2024-12-14 | 2026-07-04 |  |  |  |
|  | 6 | **Earth Work** |  | 2025-09-30 | 2025-10-28 |  |  |  |
|  | 1 | **Grading works** |  | 2025-09-30 | 2025-10-28 |  |  |  |
| CP09-TR2-EW-1060 |  | Excavation work to Reduce Level | 6d | 2025-09-30 A | 2025-10-28 A | CP09-EN-TR2-A-1740, CP09-CLD-1000, CP09-MS-1010 FS+4d | 100% |  |
| CP09-TR2-EW-1070 |  | Filling works to make up levels with Compacting | 6d | 2025-09-30 A | 2025-10-28 A | CP09-EN-TR2-A-1740, CP09-MS-1010, CP09-CLD-1000, CP09-TR2-EW-1060 SS+4.69d | 100% |  |
|  | 2 | **Planting** |  | 2025-09-30 | 2025-10-28 |  |  |  |
| CP09-TR2-EW-1080 |  | Excavation works for Planting Beds | 6d | 2025-09-30 A | 2025-10-28 A | CP09-TR2-EW-1060 SS, CP09-TR2-EW-1070 SS, CP09-EN-TR2-A-1740 | 100% |  |
|  | 9 | **Retaining & Cheek Walls** |  | 2024-12-14 | 2026-04-28 |  |  |  |
|  | 1 | **Soild Block Work Cheek Walls** |  | 2024-12-14 | 2026-04-28 |  |  |  |
| CP09-TR2-RW-1500 |  | Excavation | 3.75d | 2024-12-14 A | 2024-12-18 A | CP09-TR2-EW-1060, CP09-TR2-EW-1070 | 100% |  |
| CP09-TR2-RW-1450 |  | Plaing Concrete with HPDE | 2d | 2024-12-19 A | 2025-04-02 A | CP09-EN-TR2-A-1750, CP09-TR2-RW-1500 SS+2.81d, CP09-TR2-RW-1500 FF+2.81d | 100% |  |
| CP09-TR2-RW-1460 |  | Reinforced Concrete for Footing | 4d | 2025-01-26 A | 2025-04-05 A | CP09-EN-TR2-A-1760, CP09-EN-TR2-A-1750, CP09-TR2-RW-1450 SS+2d, CP09-TR2-RW-1450 FF+2d | 100% |  |
| CP09-TR2-RW-1470 |  | Reinforced Concrete for Tie beam | 4.69d | 2025-01-28 A | 2025-04-05 A | CP09-TR2-RW-1460 SS+2d, CP09-TR2-RW-1460 FF+2d | 100% |  |
| CP09-TR2-RW-1480 |  | Reinforced Concrete for Column | 3d | 2025-02-03 A | 2025-04-15 A | CP09-TR2-RW-1470 SS+2.81d, CP09-TR2-RW-1470 FF+2.81d | 100% |  |
| CP09-TR2-RW-1490 |  | Soild Block Work | 3d | 2025-05-18 A | 2025-11-28 A | CP09-EN-TR2-A-1780, CP09-PR-CV-DY-1020, CP09-TR2-RW-1480 SS+2d, CP09-TR2-RW-1480 FF+2d | 100% |  |
| CP09-TR2-RW-1510 |  | Reinforced Concrete for Beam | 4d | 2025-10-24 A | 2025-11-28 A | CP09-TR2-RW-1490 SS+2d, CP09-TR2-RW-1490 FF+2d | 100% |  |
| CP09-TR2-RW-1520 |  | Waterproofing & Protection | 3d | 2025-11-10 A | 2025-11-28 A | CP09-EN-TR2-A-1770, CP09-TR2-RW-1510 SS+2d, CP09-TR2-RW-1510 FF+2d | 100% |  |
| CP09-TR2-RW-1530 |  | Backfilling | 3d | 2025-11-10 A | 2025-11-28 A | CP09-TR2-RW-1520 SS+2d, CP09-TR2-RW-1520 FF+2d | 100% |  |
| CP09-TR2-RW-1540 |  | Marble Cladding | 4d | 2026-04-24 A | 2026-04-28 A | CP09-EN-TR2-A-1790, CP09-PR-CV-DY-1120, CP09-TR2-RW-1530 SS+1d, CP09-TR2-RW-1530 FF+1d | 100% |  |
| CP09-TR2-RW-1550 |  | Marble Copping | 4d | 2026-04-24 A | 2026-04-28 A | CP09-EN-TR2-A-1790, CP09-PR-CV-DY-1120, CP09-TR2-RW-1540 SS+2d, CP09-TR2-RW-1540 FF+2d | 100% |  |
|  | 2 | **Solid Block Retaining Walls** |  | 2024-12-14 | 2026-04-28 |  |  |  |
| CP09-TR2-RW-1610 |  | Excavation | 3.75d | 2024-12-14 A | 2024-12-18 A | CP09-TR2-EW-1060, CP09-TR2-EW-1070 | 100% |  |
| CP09-TR2-RW-1560 |  | Plaing Concrete with HPDE | 2d | 2024-12-19 A | 2025-04-02 A | CP09-EN-TR2-A-1750, CP09-TR2-RW-1610 SS+2d, CP09-TR2-RW-1610 FF+2d | 100% |  |
| CP09-TR2-RW-1570 |  | Reinforced Concrete for Footing | 4d | 2025-01-26 A | 2025-04-05 A | CP09-EN-TR2-A-1750, CP09-EN-TR2-A-1760, CP09-TR2-RW-1560 SS+1d, CP09-TR2-RW-1560 FF+1d | 100% |  |
| CP09-TR2-RW-1580 |  | Reinforced Concrete for Tie beam | 5d | 2025-01-28 A | 2025-04-05 A | CP09-TR2-RW-1570 SS+2d, CP09-TR2-RW-1570 FF+2d | 100% |  |
| CP09-TR2-RW-1590 |  | Reinforced Concrete for Column | 3d | 2025-02-03 A | 2025-04-15 A | CP09-TR2-RW-1580 SS+2d, CP09-TR2-RW-1580 FF+2d | 100% |  |
| CP09-TR2-RW-1600 |  | Soild Block Work | 3d | 2025-09-30 A | 2025-11-28 A | CP09-EN-TR2-A-1780, CP09-TR2-RW-1590 SS+1d, CP09-TR2-RW-1590 FF+1d | 100% |  |
| CP09-TR2-RW-1620 |  | Reinforced Concrete for Beam | 4d | 2025-09-30 A | 2025-10-04 A | CP09-TR2-RW-1600 SS+1d, CP09-TR2-RW-1600 FF+1d | 100% |  |
| CP09-TR2-RW-1630 |  | Waterproofing & Protection | 3d | 2025-11-24 A | 2025-11-28 A | CP09-TR2-RW-1620 SS+2d, CP09-TR2-RW-1620 FF+2d | 100% |  |
| CP09-TR2-RW-1640 |  | Backfilling | 3d | 2025-11-24 A | 2025-11-28 A | CP09-TR2-RW-1630 SS+1d, CP09-TR2-RW-1630 FF+1d | 100% |  |
| CP09-TR2-RW-1650 |  | Marble Cladding | 4d | 2026-04-24 A | 2026-04-28 A | CP09-EN-TR2-A-1790, CP09-PR-CV-DY-1120, CP09-TR2-RW-1640 SS+1d, CP09-TR2-RW-1640 FF+1d | 100% |  |
| CP09-TR2-RW-1660 |  | Marble Copping | 4d | 2026-04-24 A | 2026-04-28 A | CP09-EN-TR2-A-1790, CP09-PR-CV-DY-1120, CP09-TR2-RW-1650 SS+2d, CP09-TR2-RW-1650 FF+2d | 100% |  |
|  | 1 | **Irrigation Works** |  | 2025-10-13 | 2026-06-04 |  |  |  |
|  | 1 | **Sub-Main & Lateral** |  | 2025-10-13 | 2026-04-28 |  |  |  |
| CP09-TR2-IR-1220 |  | Excavation for Sub-main & Lateral Pieps | 4d | 2025-10-13 A | 2026-04-28 A | CP09-EN-TR2-A-1980, CP09-TR2-HD-3040 | 100% |  |
| CP09-TR2-IR-1230 |  | Sub-main & Lateral Pieps laying out and installation | 5d | 2025-11-03 A | 2026-04-28 A | CP09-TR2-IR-1220 SS+2d, CP09-TR2-IR-1220 FF+5d, CP09-PR-IR-DY-1000 | 100% |  |
| CP09-TR2-IR-1240 |  | Sub-main & Lateral Pieps Testing | 3d | 2026-02-16 A | 2026-04-28 A | CP09-TR2-IR-1230 SS+2d, CP09-TR2-IR-1230 FF+2d | 100% |  |
| CP09-TR2-IR-1250 |  | Backfilling forSub-main & Lateral Pieps | 4d | 2026-02-16 A | 2026-04-28 A | CP09-TR2-IR-1240 SS+2d, CP09-TR2-IR-1240 FF+2d | 100% |  |
|  | 2 | **Fittings & Accessories** |  | 2026-02-16 | 2026-06-04 |  |  |  |
| CP09-TR2-IR-1310 |  | Installation of Controller decoder cables | 5d | 2026-02-16 A | 2026-04-28 A | CP09-TR2-IR-1300 SF, CP09-PR-IR-DY-1070 | 100% |  |
| CP09-TR2-IR-1260 |  | Installation of Dripline | 3d | 2026-03-09 A | 2026-05-26 | CP09-PR-IR-DY-1010, CP09-TR2-IR-1240, CP09-TR2-SF-1330 | 50% | -131d |
| CP09-TR2-IR-1290 |  | Installation of Electrical solenoid valve | 3d | 2026-03-09 A | 2026-05-26 | CP09-TR2-IR-1280, CP09-PR-IR-DY-1050 | 60% | -123d |
| CP09-TR2-IR-1320 |  | Installation of Decoder one station | 3d | 2026-05-24 | 2026-05-26 | CP09-TR2-IR-1310 SS, CP09-PR-IR-DY-1080 |  | -99d |
| CP09-TR2-IR-1270 |  | Installation of Sprinklers | 3d | 2026-05-26 | 2026-05-28 | CP09-TR2-IR-1260 SS+2d, CP09-PR-IR-DY-1040, CP09-TR2-IR-1260 FF+2d |  | -131d |
| CP09-TR2-IR-1280 |  | Installation Valves & Rings | 5d | 2026-05-28 | 2026-06-02 | CP09-TR2-IR-1270 SS+2d, CP09-PR-IR-DY-1030, CP09-PR-IR-DY-1020, CP09-TR2-IR-1270 FF+2d |  | -131d |
| CP09-TR2-IR-1300 |  | Installation of Controller (decoder system plastic pedestal) | 2d | 2026-06-03 | 2026-06-04 | CP09-TR2-IR-1280, CP09-TR2-IR-1290 SS, CP09-PR-IR-DY-1060 |  | -131d |
|  | 4 | **Electrical Works** |  | 2025-10-13 | 2026-06-30 |  |  |  |
|  | 1 | **Power Cable & Pillars** |  | 2025-10-13 | 2026-06-30 |  |  |  |
| CP09-TR2-EL-1080 |  | Excavation | 5d | 2025-10-13 A | 2026-01-23 A | CP09-TR2-EW-1060, CP09-TR2-EW-1070, CP09-TR2-IR-1250, CP09-EN-TR2-A-1940 | 100% |  |
| CP09-TR2-EL-1090 |  | Installation of Power Cables | 4d | 2025-10-13 A | 2026-01-23 A | CP09-TR2-EL-1080 SS+2d, CP09-TR2-EL-1080 FF+2d, CP09-EN-TR2-A-1940, CP09-EN-TR2-A-1950, CP09-PR-EL-DY-1060 | 100% |  |
| CP09-TR2-EL-1100 |  | Backfilling for Power Cables | 4d | 2025-10-13 A | 2026-01-23 A | CP09-TR2-EL-1090 SS+2d, CP09-TR2-EL-1090 FF+2d | 100% |  |
| CP09-TR2-EL-1110 |  | Installation of Connecting Pillars | 3d | 2026-06-28 | 2026-06-30 | CP09-PR-EL-DY-1070, CP09-TR2-HD-2920 SS+3d |  | -147d |
|  | 3 | **Hardscape** |  | 2025-09-30 | 2026-06-16 |  |  |  |
|  | 6 | **Concrete Curb** |  | 2025-10-24 | 2026-04-10 |  |  |  |
| CP09-TR2-HD-2870 |  | Excavation | 2d | 2025-10-24 A | 2025-12-12 A | CP09-TR2-EW-1080 SS+3d, CP09-TR2-EW-1070 FF+3d, CP09-TR2-EW-1060 FF+3d, CP09-TR2-EW-1080 FF+3d, CP09-TR2-EW-1060 SS+3d, CP09-TR2-EW-1070 SS+3d | 100% |  |
| CP09-TR2-HD-2880 |  | Plains Concrete with HDPE waterproofing | 2d | 2025-10-24 A | 2025-12-12 A | CP09-EN-TR2-A-1870, CP09-TR2-HD-2870 | 100% |  |
| CP09-TR2-HD-3030 |  | Under Paving Reinforced Concrete Curb | 4d | 2025-10-24 A | 2025-12-12 A | CP09-TR2-HD-2880 SS+1.88d, CP09-TR2-HD-2880 FF+1.88d | 100% |  |
| CP09-TR2-HD-3040 |  | Instal Flush Curb | 3d | 2026-03-31 A | 2026-04-10 A | CP09-EN-TR2-A-1870, CP09-PR-HD-DY-1080, CP09-TR2-HD-3030 SS+3d, CP09-TR2-HD-3030 SF+3d, CP09-TR2-HD-3030 FS+3d, CP09-TR2-HD-3030 FF+3d | 100% |  |
|  | 1 | **Side wake & Plazes** |  | 2025-09-30 | 2026-05-08 |  |  |  |
|  | 8 | **Interlocking Paving** |  | 2025-12-08 | 2026-01-09 |  |  |  |
| CP09-TR2-HD-2890 |  | Crush Stone for Interlock Types IL-(01,02,06,07) | 4d | 2025-12-08 A | 2026-01-09 A | CP09-EN-TR2-A-1880, CP09-TR2-EW-1060, CP09-TR2-EW-1070, CP09-TR2-IR-1250, CP09-TR2-EL-1100, CP09-PR-HD-DY-1090 | 100% |  |
| CP09-TR2-HD-2900 |  | Sand Layer for Interlock Types IL-(01,02,06,07) | 4d | 2025-12-08 A | 2026-01-09 A | CP09-EN-TR2-A-1880, CP09-TR2-HD-2890 SS+2d, CP09-TR2-HD-2890 FF+2d | 100% |  |
| CP09-TR2-HD-2910 |  | Motar Bed Interlock Types IL-(03,04,08,09,10) | 3d | 2025-12-08 A | 2026-01-09 A | CP09-EN-TR2-A-1880, CP09-TR2-HD-2900 SS | 100% |  |
| CP09-TR2-HD-2920 |  | Interlocking Paving | 5d | 2025-12-08 A | 2026-01-09 A | CP09-TR2-HD-2910 SS+2d, CP09-TR2-HD-2900 FF+2d, CP09-TR2-HD-2910 FF+2d, CP09-EN-TR2-A-1880, CP09-PR-HD-DY-1180, CP09-TR2-HD-2900 SS+2d | 100% |  |
|  | 2 | **Concrete in Situ** |  | 2026-02-16 | 2026-04-10 |  |  |  |
|  | 1 | **Slab on Garde** |  | 2026-02-16 | 2026-04-10 |  |  |  |
| CP09-TR2-HD-2690 |  | Reinfored Concrete slab on grade | 3d | 2026-02-16 A | 2026-04-10 A | CP09-TR2-HD-2680 FF+1d, CP09-TR2-HD-2680 SS+1d | 100% |  |

| ID | WBS | Task | Duration | Start | Finish | Predecessors | Complete | Total float |
| --- | --- | --- | --- | --- | --- | --- | --- | --- |
| CP09-TR2-HD-2680 |  | Plain Concrete with HDPE | 2d | 2026-02-22 A | 2026-04-10 A | CP09-TR2-IR-1250, CP09-TR2-EL-1100, CP09-EN-TR2-A-1800, CP09-TR2-EW-1060, CP09-TR2-EW-1070 | 100% |  |
| CP09-TR2-HD-2700 |  | Waterproofing & Screed | 2d | 2026-02-22 A | 2026-04-10 A | CP09-TR2-HD-2690 FF+1d, CP09-TR2-HD-2690 SS+1d | 100% |  |
|  | 2 | **Concrete In-situ w./Exposed Aggregate Finish** |  | 2026-02-16 | 2026-04-10 |  |  |  |
| CP09-TR2-HD-2720 |  | Finishing Concrete Surface | 2d | 2026-02-16 A | 2026-04-10 A | CP09-TR2-HD-2710, CP09-TR2-RW-1540, CP09-TR2-RW-1550, CP09-TR2-RW-1650, CP09-TR2-RW-1660 | 100% |  |
| CP09-TR2-HD-2710 |  | Concrete casting (including Joints & Wire Mish) | 3d | 2026-02-22 A | 2026-04-10 A | CP09-EN-TR2-A-1800, CP09-PR-HD-DY-1000, CP09-TR2-HD-2700 FF+1d, CP09-TR2-HD-2700 SS+1d, CP09-TR2-HD-3040 | 100% |  |
|  | 1 | **Marble Paving** |  | 2025-10-13 | 2026-01-29 |  |  |  |
|  | 1 | **Slab on Garde** |  | 2025-10-13 | 2025-11-28 |  |  |  |
| CP09-TR2-HD-2630 |  | Plain Concrete with HDPE | 2d | 2025-10-13 A | 2025-11-28 A | CP09-TR2-IR-1250, CP09-TR2-EL-1100, CP09-EN-TR2-A-1810, CP09-TR2-EW-1060, CP09-TR2-EW-1080 | 100% |  |
| CP09-TR2-HD-2640 |  | Reinfored Concrete slab on grade | 3d | 2025-10-13 A | 2025-11-28 A | CP09-TR2-HD-2630 FF+1d, CP09-TR2-HD-2630 SS+1d | 100% |  |
| CP09-TR2-HD-2650 |  | Waterproofing & Screed | 2d | 2025-11-03 A | 2025-11-28 A | CP09-TR2-HD-2640 FF+1d, CP09-TR2-HD-2640 SS+1d | 100% |  |
|  | 2 | **Marble Tiles** |  | 2025-10-24 | 2026-01-29 |  |  |  |
| CP09-TR2-HD-2660 |  | Marble Fixiation | 3d | 2025-10-24 A | 2026-01-29 A | CP09-EN-TR2-A-1810, CP09-PR-HD-DY-1010, CP09-TR2-HD-2650 FF+1d, CP09-TR2-HD-2650 SS+1d, CP09-TR2-HD-3040 | 100% |  |
| CP09-TR2-HD-2670 |  | Marble Surfcae Finishing | 2d | 2025-11-17 A | 2026-01-29 A | CP09-TR2-HD-2660, CP09-TR2-HD-2720 SS | 100% |  |
|  | 3 | **Wooden Floor Boards** |  |  |  |  |  |  |
|  | 1 | **Slab on Garde** |  |  |  |  |  |  |
|  | 2 | **Wood- Plastic Composit** |  |  |  |  |  |  |
|  | 4 | **Gravel layer** |  | 2025-09-30 | 2026-05-08 |  |  |  |
|  | 1 | **Slab on Garde** |  | 2025-09-30 | 2026-05-08 |  |  |  |
| CP09-TR2-HD-2780 |  | Plain Concrete with HDPE | 2d | 2025-09-30 A | 2025-10-04 A | CP09-TR2-IR-1250, CP09-TR2-EL-1100, CP09-EN-TR2-A-1830, CP09-TR2-EW-1060, CP09-TR2-EW-1070 | 100% |  |
| CP09-TR2-HD-2790 |  | Mortar bed | 2d | 2026-04-30 A | 2026-05-08 A | CP09-TR2-HD-2780 SS+1d, CP09-TR2-HD-2780 FF+1d | 100% |  |
|  | 2 | **Gravel Layer, w./Earth Colors** |  | 2026-05-04 | 2026-05-08 |  |  |  |
| CP09-TR2-HD-2800 |  | Furnish & install Garvel Layer | 3d | 2026-05-04 A | 2026-05-08 A | CP09-EN-TR2-A-1830, CP09-PR-HD-DY-1030, CP09-TR2-HD-2790, CP09-TR2-HD-3040 | 100% |  |
|  | 5 | **Crushed Stone** |  | 2026-04-30 | 2026-05-08 |  |  |  |
|  | 1 | **Slab on Garde** |  | 2026-04-30 | 2026-05-08 |  |  |  |
| CP09-TR2-HD-2810 |  | Geotextile membrane | 2.81d | 2026-04-30 A | 2026-05-08 A | CP09-TR2-IR-1250, CP09-TR2-EL-1100, CP09-EN-TR2-A-1840, CP09-TR2-EW-1060, CP09-TR2-EW-1070 | 100% |  |
| CP09-TR2-HD-2820 |  | Gravel fix sheets | 2.81d | 2026-05-04 A | 2026-05-08 A | CP09-TR2-HD-2810 | 100% |  |
|  | 2 | **Crushed Dolomite Stone** |  | 2026-05-04 | 2026-05-08 |  |  |  |
| CP09-TR2-HD-2830 |  | Furnish & Install Crushed Dolomite stone , w./ mixed colors | 4d | 2026-05-04 A | 2026-05-08 A | CP09-EN-TR2-A-1840, CP09-PR-HD-DY-1040, CP09-TR2-HD-2820 FF, CP09-TR2-HD-2820 SS, CP09-TR2-HD-2800 SS, CP09-TR2-HD-3040 | 100% |  |
|  | 6 | **Loose Gravel** |  | 2026-05-04 | 2026-05-08 |  |  |  |
|  | 2 | **Loose Gravel 50mm** |  | 2026-05-04 | 2026-05-08 |  |  |  |
| CP09-TR2-HD-2840 |  | Furnish & Install loose gravel w./earth colors. | 4d | 2026-05-04 A | 2026-05-08 A | CP09-TR2-IR-1250, CP09-TR2-EL-1100, CP09-EN-TR2-A-1850, CP09-PR-HD-DY-1050, CP09-TR2-HD-3040 | 100% |  |
|  | 7 | **Clean Sand Layer** |  | 2026-03-09 | 2026-04-10 |  |  |  |
|  | 1 | **Kids & Fitness Area** |  | 2026-03-09 | 2026-04-10 |  |  |  |
| CP09-TR2-HD-2850 |  | Geotextile Sheets | 3d | 2026-03-09 A | 2026-04-10 A | CP09-TR2-HD-3040, CP09-TR2-IR-1250, CP09-TR2-EL-1100, CP09-EN-TR2-A-1860, CP09-TR2-EW-1060, CP09-TR2-EW-1070 | 100% |  |
| CP09-TR2-HD-2860 |  | Install Clean sand layer | 3d | 2026-03-09 A | 2026-04-10 A | CP09-EN-TR2-A-1860, CP09-PR-HD-DY-1070, CP09-TR2-HD-2850, CP09-TR2-HD-2840, CP09-TR2-HD-3040 | 100% |  |
|  | 2 | **Site Improvments** |  | 2025-11-10 | 2026-06-16 |  |  |  |
|  | 1 | **Marble Steps** |  | 2025-12-08 | 2026-02-06 |  |  |  |
| CP09-TR2-HD-2930 |  | Reinforecd Concrete Step. | 4d | 2025-12-08 A | 2026-02-06 A | CP09-TR2-EW-1060, CP09-TR2-EW-1070, CP09-EN-TR2-A-1890, CP09-TR2-IR-1250, CP09-TR2-EL-1100 | 100% |  |
| CP09-TR2-HD-2940 |  | Install Marble Blocks | 3d | 2025-12-08 A | 2026-02-06 A | CP09-TR2-HD-2930 SS+2d, CP09-TR2-HD-2930 FF+2d, CP09-PR-HD-DY-1100 | 100% |  |
| CP09-TR2-HD-2950 |  | Finishing Marble Surface | 2d | 2025-12-08 A | 2026-02-06 A | CP09-TR2-HD-2940, CP09-TR2-RW-1540, CP09-TR2-RW-1550, CP09-TR2-RW-1650, CP09-TR2-RW-1660 | 100% |  |
|  | 2 | **Curvelinear Block Seat** |  | 2025-11-10 | 2026-06-11 |  |  |  |
| CP09-TR2-HD-2960 |  | Excavation | 2d | 2025-11-10 A | 2025-11-21 A | CP09-TR2-EW-1060, CP09-TR2-EW-1070, CP09-EN-TR2-A-1900 | 100% |  |
| CP09-TR2-HD-2970 |  | Plaing Concrete with HPDE | 2d | 2025-11-10 A | 2025-11-21 A | CP09-TR2-HD-2960 | 100% |  |
| CP09-TR2-HD-2980 |  | Reinforced Concrete for Footing | 4d | 2025-11-10 A | 2025-11-21 A | CP09-TR2-HD-2970 SS+2d, CP09-TR2-HD-2970 FF+2d | 100% |  |
| CP09-TR2-HD-2990 |  | Reinforced Concrete for Beam | 3d | 2025-11-10 A | 2025-11-21 A | CP09-TR2-HD-2980 SS+3d, CP09-TR2-HD-2980 FF+3d | 100% |  |
| CP09-TR2-HD-3000 |  | Waterproofing & Protection | 2d | 2025-11-10 A | 2025-11-21 A | CP09-TR2-HD-2990 SS+2d, CP09-TR2-HD-2990 FF+2d | 100% |  |
| CP09-TR2-HD-3010 |  | Backfilling | 2d | 2025-12-22 A | 2025-12-26 A | CP09-TR2-HD-3000 SS+2d, CP09-TR2-HD-3000 FF+2d | 100% |  |
| CP09-TR2-HD-3020 |  | Marble Capping | 2d | 2026-06-10 | 2026-06-11 | CP09-TR2-RW-1650, CP09-TR2-RW-1660, CP09-TR2-RW-1540, CP09-TR2-RW-1550, CP09-TR2-HD-3010 SS+1d, CP09-PR-HD-DY-1110, CP09-TR2-HD-3010 FF+1d |  | -135d |
|  | 4 | **Handrails** |  | 2026-06-13 | 2026-06-16 |  |  |  |
| CP09-TR2-HD-3050 |  | Install & Fix Stainless Handrail (500 mm height) | 3d | 2026-06-13 | 2026-06-15 | CP09-TR2-HD-2940, CP09-TR2-HD-3020, CP09-EN-TR2-A-1920, CP09-PR-HD-DY-1160 |  | -134d |
| CP09-TR2-HD-3060 |  | Install & Fix Glass Handrail (900mm height) | 4d | 2026-06-13 | 2026-06-16 | CP09-TR2-HD-2940, CP09-TR2-HD-3020, CP09-EN-TR2-A-1920, CP09-PR-HD-DY-1170 |  | -135d |
|  | 8 | **Sinage** |  | 2025-09-30 | 2026-04-28 |  |  |  |
| CP09-TR2-SN-3180 |  | Excavation | 2d | 2025-09-30 A | 2026-04-24 A | CP09-TR2-HD-2920, CP09-EN-TR2-A-1960 | 100% |  |
| CP09-TR2-SN-3190 |  | Plain Concrete with HDPE | 3d | 2025-09-30 A | 2026-04-24 A | CP09-TR2-SN-3180 SS+1d, CP09-TR2-SN-3180 FF+1d | 100% |  |
| CP09-TR2-SN-3200 |  | Reinforced Concrete | 6d | 2025-09-30 A | 2026-04-24 A | CP09-TR2-SN-3190 SS+2d, CP09-TR2-SN-3190 FF+2d | 100% |  |
| CP09-TR2-SN-3220 |  | Grouting | 6d | 2025-09-30 A | 2026-04-24 A | CP09-TR2-SN-3210 SS+1d, CP09-TR2-SN-3210 FF+1d | 100% |  |
| CP09-TR2-SN-3210 |  | Waterproofing | 2d | 2025-12-08 A | 2026-04-24 A | CP09-TR2-SN-3200 SS+3d, CP09-TR2-SN-3200 FF+3d | 100% |  |
| CP09-TR2-SN-3230 |  | STREET DIRECTIONAL SIGN | 2d | 2026-03-02 A | 2026-04-24 A | CP09-PR-SN-DY-1000, CP09-TR2-SN-3220 FF+1d | 100% |  |
| CP09-TR2-SN-3240 |  | DIRECTIONAL SIGN FOR VEHICULAR | 2d | 2026-03-02 A | 2026-04-24 A | CP09-TR2-SN-3220, CP09-PR-SN-DY-1010 | 100% |  |
| CP09-TR2-SN-3270 |  | RULES SIGN | 2d | 2026-03-02 A | 2026-04-24 A | CP09-PR-SN-DY-1030, CP09-TR2-SN-3220 FF | 100% |  |
| CP09-TR2-SN-3280 |  | IDENTIFICATION SIGN | 2d | 2026-03-02 A | 2026-04-24 A | CP09-PR-SN-DY-1040, CP09-TR2-SN-3220 FF | 100% |  |
| CP09-TR2-SN-3250 |  | UNIT ID SIGN (FRONT YARD) | 2d | 2026-04-24 A | 2026-04-28 A | CP09-TR2-SN-3220, CP09-PR-SN-DY-1020 | 100% |  |
| CP09-TR2-SN-3260 |  | UNIT ID SIGN (BACK YARD) | 4d | 2026-04-24 A | 2026-04-28 A | CP09-PR-SN-DY-1020, CP09-TR2-SN-3220 FF | 100% |  |
|  | 7 | **Landscape Furntiure** |  | 2026-03-02 | 2026-05-26 |  |  |  |
| CP09-TR2-FN-3100 |  | Install & Fix Pitch Pine Benchs | 4d | 2026-03-02 A | 2026-04-28 A | CP09-TR2-HD-2920 FF, CP09-TR2-HD-2840 FF, CP09-TR2-HD-2830 FF, CP09-TR2-HD-2800 FF, CP09-TR2-HD-2670 FF, CP09-TR2-HD-2720 FF, CP09-EN-TR2-A-1930, CP09-PR-FN-DY-1030, CP09-TR2-HD-3040 FF, CP09-PR-HD-DY-1020 FF, CP09-PR-HD-A-1020 FF+7d, CP09-TR2-EW-1060 FF+3d, CP09-TR2-EW-1070 FF+3d, CP09-TR2-IR-1250 FF+3d, CP09-TR2-EL-1100 FF+3d | 100% |  |
| CP09-TR2-FN-3130 |  | Install & Fix Aluminum Trash Bin | 2.81d | 2026-03-02 A | 2026-04-28 A | CP09-TR2-HD-2920, CP09-TR2-HD-2840 FF, CP09-TR2-HD-2830 FF, CP09-TR2-HD-2800 FF, CP09-TR2-HD-2670 FF, CP09-TR2-HD-2720 FF, CP09-EN-TR2-A-1930, CP09-PR-FN-DY-1060, CP09-TR2-HD-3040 FF, CP09-PR-HD-DY-1020 FF, CP09-PR-HD-A-1020 FF+7d, CP09-TR2-EW-1060 FF+3d, CP09-TR2-EW-1070 FF+3d, CP09-TR2-IR-1250 FF+3d, CP09-TR2-EL-1100 FF+3d | 100% |  |
| CP09-TR2-FN-3150 |  | Lanscape Edging ( Rubber) | 2.81d | 2026-03-02 A | 2026-04-28 A | CP09-TR2-HD-2920, CP09-TR2-HD-2840 FF, CP09-TR2-HD-2830 FF, CP09-TR2-HD-2800 FF, CP09-TR2-HD-2670 FF, CP09-TR2-HD-2720 FF, CP09-EN-TR2-A-1930, CP09-PR-FN-DY-1080, CP09-TR2-HD-3040 FF, CP09-PR-HD-DY-1020 FF, CP09-PR-HD-A-1020 FF+7d, CP09-TR2-EW-1060 FF+3d, CP09-TR2-EW-1070 FF+3d, CP09-TR2-IR-1250 FF+3d, CP09-TR2-EL-1100 FF+3d | 100% |  |
| CP09-TR2-FN-3070 |  | Install & Fix Pitch Pine Picnic Table | 4d | 2026-04-24 A | 2026-04-28 A | CP09-TR2-HD-2920, CP09-TR2-HD-2840, CP09-TR2-HD-2830, CP09-TR2-HD-2800, CP09-TR2-HD-2670 FF, CP09-TR2-HD-2720 FF, CP09-EN-TR2-A-1930, CP09-PR-FN-DY-1000, CP09-TR2-HD-3040 FF, CP09-PR-HD-DY-1020 FF, CP09-PR-HD-A-1020 FF+7d, CP09-TR2-EW-1060 FF+3d, CP09-TR2-EW-1070 FF+3d, CP09-TR2-IR-1250 FF+3d, CP09-TR2-EL-1100 FF+3d | 100% |  |
| CP09-TR2-FN-3080 |  | Install & Fix Crcular Cast-iron tree grate | 3.75d | 2026-04-24 A | 2026-04-28 A | CP09-TR2-HD-2920, CP09-TR2-HD-2840 FF, CP09-TR2-HD-2830 FF, CP09-TR2-HD-2800 FF, CP09-TR2-HD-2670 FF, CP09-TR2-HD-2720 FF, CP09-EN-TR2-A-1930, CP09-PR-FN-DY-1010, CP09-TR2-HD-3040 FF, CP09-PR-HD-DY-1020 FF, CP09-PR-HD-A-1020 FF+7d, CP09-TR2-EW-1060 FF+3d, CP09-TR2-EW-1070 FF+3d, CP09-TR2-IR-1250 FF+3d, CP09-TR2-EL-1100 FF+3d | 100% |  |
| CP09-TR2-FN-3110 |  | Install & Fix Polyester Hammocks | 4d | 2026-04-24 A | 2026-04-28 A | CP09-TR2-HD-2920, CP09-TR2-HD-2840 FF, CP09-TR2-HD-2830 FF, CP09-TR2-HD-2800 FF, CP09-TR2-HD-2670 FF, CP09-TR2-HD-2720 FF, CP09-EN-TR2-A-1930, CP09-PR-FN-DY-1040, CP09-TR2-HD-3040 FF, CP09-PR-HD-DY-1020 FF, CP09-PR-HD-A-1020 FF+7d, CP09-TR2-EW-1060 FF+3d, CP09-TR2-EW-1070 FF+3d, CP09-TR2-IR-1250 FF+3d, CP09-TR2-EL-1100 FF+3d | 100% |  |

| ID | WBS | Task | Duration | Start | Finish | Predecessors | Complete | Total float |
| --- | --- | --- | --- | --- | --- | --- | --- | --- |
| CP09-TR2-FN-3120 |  | Install & Fix Adult Play Swing | 4d | 2026-04-24 A | 2026-04-28 A | CP09-TR2-HD-2920, CP09-TR2-HD-2840 FF, CP09-TR2-HD-2830 FF, CP09-TR2-HD-2800 FF, CP09-TR2-HD-2670 FF, CP09-TR2-HD-2720 FF, CP09-EN-TR2-A-1930, CP09-PR-FN-DY-1050, CP09-TR2-HD-3040 FF, CP09-PR-HD-DY-1020 FF, CP09-PR-HD-A-1020 FF+7d, CP09-TR2-EW-1060 FF+3d, CP09-TR2-EW-1070 FF+3d, CP09-TR2-IR-1250 FF+3d, CP09-TR2-EL-1100 FF+3d | 100% |  |
| CP09-TR2-FN-3140 |  | Install & Fix tensile Teflon Tent | 2.81d | 2026-05-24 | 2026-05-26 | CP09-TR2-HD-2920, CP09-TR2-HD-2840 FF, CP09-TR2-HD-2830 FF, CP09-TR2-HD-2800 FF, CP09-TR2-HD-2670 FF, CP09-TR2-HD-2720 FF, CP09-EN-TR2-A-1930, CP09-PR-FN-DY-1070, CP09-TR2-HD-3040 FF, CP09-PR-HD-DY-1020 FF, CP09-PR-HD-A-1020 FF+7d, CP09-TR2-EW-1060 FF+3d, CP09-TR2-EW-1070 FF+3d, CP09-TR2-IR-1250 FF+3d, CP09-TR2-EL-1100 FF+3d |  | -122.81d |
|  | 10 | **Play Field Equipment** |  | 2025-09-24 | 2026-05-28 |  |  |  |
| CP09-TR2-PE-3170 |  | Kids playground equipment | 5d | 2025-09-24 A | 2026-04-28 A | CP09-TR2-HD-2860, CP09-PR-PE-DY-1040, CP09-PR-PE-DY-1050, CP09-PR-PE-DY-1060, CP09-PR-PE-DY-1070, CP09-PR-PE-DY-1080, CP09-PR-PE-DY-1090, CP09-PR-PE-DY-1100 | 100% |  |
| CP09-TR2-PE-3160 |  | Fitness areas equipment | 5d | 2026-05-24 | 2026-05-28 | CP09-TR2-HD-2860, CP09-EN-TR2-A-1970, CP09-PR-PE-DY-1000, CP09-PR-PE-DY-1010, CP09-PR-PE-DY-1020, CP09-PR-PE-DY-1030 |  | -125d |
|  | 5 | **Lighting for Softscape** |  | 2026-03-02 | 2026-07-04 |  |  |  |
|  | 1 | **Exterior Lighting** |  | 2026-03-02 | 2026-07-04 |  |  |  |
| CP09-TR2-SF-1420 |  | Install Bollard for Walkways | 4d | 2026-03-02 A | 2026-04-28 A | CP09-TR2-EL-1090, CP09-TR2-HD-2920, CP09-TR2-HD-2720, CP09-TR2-HD-2670, CP09-TR2-HD-2800, CP09-TR2-HD-2830, CP09-TR2-HD-2840, CP09-TR2-HD-2860, CP09-EN-TR2-A-2000, CP09-PR-EL-DY-1090, CP09-TR2-SF-1410, CP09-TR2-HD-3040, CP09-PR-HD-DY-1020, CP09-PR-HD-A-1020 FS+7d, CP09-TR2-EW-1060 FS+3d, CP09-TR2-EW-1070 FS+3d, CP09-TR2-IR-1250 FS+3d, CP09-TR2-EL-1100 FS+3d | 100% |  |
| CP09-TR2-SF-1410 |  | Install Landscape Lighting Pole | 10d | 2026-04-24 A | 2026-04-28 A | CP09-TR2-EL-1090, CP09-EN-TR2-A-2000, CP09-PR-EL-DY-1080 | 100% |  |
| CP09-TR2-SF-1430 |  | Install Diffused Wall Recessed Step | 6d | 2026-06-28 | 2026-07-04 | CP09-TR2-SF-1420 SS+3d, CP09-EN-TR2-A-2000, CP09-PR-EL-DY-1110 |  | -156d |
| CP09-TR2-SF-1440 |  | Install Inground Uplight For Palms | 6d | 2026-06-28 | 2026-07-04 | CP09-TR2-SF-1450 SS, CP09-TR2-SF-1420 SS, CP09-EN-TR2-A-2000, CP09-PR-EL-DY-1120 |  | -156d |
| CP09-TR2-SF-1450 |  | Install Projectors for Trees | 4d | 2026-06-28 | 2026-07-01 | CP09-TR2-SF-1340, CP09-TR2-SF-1350, CP09-TR2-SF-1360, CP09-TR2-SF-1370, CP09-TR2-SF-1380, CP09-TR2-SF-1390, CP09-TR2-SF-1400, CP09-EN-TR2-A-2000, CP09-PR-EL-DY-1130 |  | -156d |
|  | 2 | **Outlet Lighting Fixtures** |  | 2026-04-24 | 2026-04-28 |  |  |  |
| CP09-TR2-SF-1470 |  | Install outlet lighting fixtures | 5d | 2026-04-24 A | 2026-04-28 A | CP09-TR2-SF-1420, CP09-EN-TR2-A-2000, CP09-PR-EL-DY-1150 | 100% |  |
|  | 2 | **Softscape** |  | 2025-12-22 | 2026-06-03 |  |  |  |
|  | 1 | **Planting** |  | 2025-12-22 | 2026-06-03 |  |  |  |
| CP09-TR2-SF-1320 |  | Sweet sand for all plants | 7d | 2025-12-22 A | 2026-04-10 A | CP09-TR2-EW-1080, CP09-TR2-HD-3040, CP09-TR2-HD-2920, CP09-EN-TR2-A-1990, CP09-PR-PN-DY-1000 | 100% |  |
| CP09-TR2-SF-1330 |  | Organic Manure | 7d | 2025-12-22 A | 2026-04-10 A | CP09-TR2-SF-1320 SS+5d, CP09-EN-TR2-A-1990, CP09-PR-PN-DY-1010 | 100% |  |
| CP09-TR2-SF-1340 |  | Large Trees | 7d | 2026-03-09 A | 2026-05-31 | CP09-PR-PN-DY-1020, CP09-TR2-IR-1270, CP09-TR2-IR-1280, CP09-TR2-IR-1290, CP09-TR2-IR-1300, CP09-TR2-IR-1310, CP09-TR2-IR-1260, CP09-TR2-IR-1320 | 60% | -136d |
| CP09-TR2-SF-1350 |  | Shrubs | 6d | 2026-04-06 A | 2026-06-03 | CP09-TR2-SF-1330, CP09-TR2-SF-1320, CP09-TR2-SF-1340 SS+3d, CP09-TR2-SF-1340 FF+3d, CP09-PR-PN-DY-1060 | 20% | -136d |
| CP09-TR2-SF-1360 |  | Ground Covers | 6d | 2026-04-06 A | 2026-06-03 | CP09-TR2-SF-1330, CP09-TR2-SF-1320, CP09-TR2-SF-1340 SS+3d, CP09-TR2-SF-1340 FF+3d, CP09-PR-PN-DY-1070 | 20% | -136d |
| CP09-TR2-SF-1370 |  | Succulents | 6d | 2026-04-24 A | 2026-06-03 | CP09-TR2-SF-1330, CP09-TR2-SF-1320, CP09-TR2-SF-1340 SS+3d, CP09-TR2-SF-1340 FF+3d, CP09-PR-PN-DY-1080 | 20% | -136d |
| CP09-TR2-SF-1380 |  | Vines & Climbers | 6d | 2026-04-24 A | 2026-06-03 | CP09-TR2-SF-1330, CP09-TR2-SF-1320, CP09-TR2-SF-1340 SS+3d, CP09-TR2-SF-1340 FF+3d, CP09-PR-PN-DY-1030 | 20% | -136d |
| CP09-TR2-SF-1390 |  | Ornamental grass | 6d | 2026-04-24 A | 2026-06-03 | CP09-TR2-SF-1330, CP09-TR2-SF-1320, CP09-TR2-SF-1340 SS+3d, CP09-TR2-SF-1340 FF+3d, CP09-PR-PN-DY-1050 | 20% | -136d |
| CP09-TR2-SF-1400 |  | Lawn | 6d | 2026-04-24 A | 2026-06-03 | CP09-TR2-SF-1330, CP09-TR2-SF-1320, CP09-TR2-SF-1340 SS+3d, CP09-TR2-SF-1340 FF+3d, CP09-PR-PN-DY-1040 | 20% | -136d |
|  | 2 | **Terrace # 03** |  | 2024-02-10 | 2026-07-23 |  |  |  |
|  | 8 | **Swimming Pool-SP01 & Mechnical Room-MR-01** |  | 2024-02-10 | 2026-07-06 |  |  |  |
|  | 1 | **Structure Works for Swimming Pool** |  | 2024-02-10 | 2026-03-06 |  |  |  |
| CP09-TR3-SW-1000 |  | Excvation up to Formation Level | 1d | 2024-02-10 A | 2024-05-14 A | CP09-MS-1010, CP09-CLD-1000 | 100% |  |
| CP09-TR3-SW-1010 |  | Plain Concret for For Raft | 2.81d | 2024-08-04 A | 2024-08-31 A | CP09-TR3-SW-1000, CP09-EN-TR3-A-1000, CP09-PR-CV-DY-1000 SS | 100% |  |
| CP09-TR3-SW-1020 |  | Water Proofing with screed | 1.88d | 2024-08-31 A | 2024-09-02 A | CP09-TR3-SW-1010, CP09-EN-TR3-A-1020, CP09-PR-CV-DY-1010 SS | 100% |  |
| CP09-TR3-SW-1030 |  | Reinforcement concrete for Raft | 4.69d | 2024-09-13 A | 2024-12-11 A | CP09-TR3-SW-1020, CP09-EN-TR3-A-1000, CP09-EN-TR3-A-1010, CP09-PR-CV-DY-1130 | 100% |  |
| CP09-TR3-SW-1040 |  | Water Proofing for Raft with screed | 3.75d | 2024-12-12 A | 2024-12-15 A | CP09-TR3-SW-1030, CP09-EN-TR3-A-1020, CP09-PR-CV-DY-1010 SS | 100% |  |
| CP09-TR3-SW-1050 |  | Reinforcement Concrete for Walls | 6.56d | 2024-12-16 A | 2025-03-15 A | CP09-TR3-SW-1040 | 100% |  |
| CP09-TR3-SW-1060 |  | External Waterproofing for Walls | 5d | 2025-09-30 A | 2026-01-16 A | CP09-TR3-SW-1050 | 100% |  |
| CP09-TR3-SW-1070 |  | Protection Block Works | 5d | 2026-03-02 A | 2026-03-06 A | CP09-TR3-SW-1060, CP09-PR-CV-DY-1020 SS | 100% |  |
| CP09-TR3-SW-1080 |  | Backfilling | 5.62d | 2026-03-02 A | 2026-03-06 A | CP09-TR3-SW-1070, CP09-TR3-SW-1230 FF | 100% |  |
|  | 3 | **Finishing Works for Swimming Pool** |  | 2026-04-13 | 2026-06-18 |  |  |  |
| CP09-TR3-SW-1100 |  | Granite for Pool Edg | 3.75d | 2026-04-13 A | 2026-04-28 A | CP09-TR3-SW-1090, CP09-EN-TR3-A-1050, CP09-PR-CV-DY-1040 | 100% |  |
| CP09-TR3-SW-1110 |  | Garnite for Drinage Grate | 3.75d | 2026-04-13 A | 2026-04-28 A | CP09-TR3-SW-1100 SS, CP09-EN-TR3-A-1050 | 100% |  |
| CP09-TR3-SW-1120 |  | Granite for Pool Coping | 3.75d | 2026-04-13 A | 2026-04-28 A | CP09-TR3-SW-1100, CP09-EN-TR3-A-1050 | 100% |  |
| CP09-TR3-SW-1090 |  | Mosaics Tiles | 11.25d | 2026-05-11 A | 2026-06-06 | CP09-TR3-SW-1070, CP09-TR3-SW-1080, CP09-EN-TR3-A-1040, CP09-PR-CV-DY-1030 | 80% | -138.06d |
| CP09-TR3-SW-1130 |  | Stanless Steel Ladders | 2.81d | 2026-06-10 | 2026-06-13 | CP09-TR3-SW-1090, CP09-TR3-SW-1100, CP09-TR3-SW-1110, CP09-TR3-SW-1120, CP09-EN-TR3-A-1070, CP09-EN-TR3-A-1060, CP09-PR-CV-DY-1050 |  | -141.81d |
| CP09-TR3-SW-1140 |  | Stanless Steel Handrial | 5d | 2026-06-13 | 2026-06-18 | CP09-TR3-SW-1130, CP09-EN-TR3-A-1070, CP09-PR-CV-DY-1060 |  | -141.81d |
|  | 4 | **Machine Room_MR01** |  | 2024-02-10 | 2026-06-14 |  |  |  |
| CP09-TR3-SW-1150 |  | Excvation up to Formation Level | 3.75d | 2024-02-10 A | 2024-05-18 A | CP09-TR3-SW-1000 SS | 100% |  |
| CP09-TR3-SW-1160 |  | Plain Concret for For Raft | 2.81d | 2024-09-04 A | 2024-10-22 A | CP09-TR3-SW-1150, CP09-EN-TR3-A-1000 | 100% |  |
| CP09-TR3-SW-1170 |  | Water Proofing with screed | 1.88d | 2024-10-23 A | 2024-12-30 A | CP09-TR3-SW-1160, CP09-EN-TR3-A-1020, CP09-PR-CV-DY-1010 | 100% |  |
| CP09-TR3-SW-1180 |  | Reinforcement concrete for Raft | 3d | 2025-01-02 A | 2025-03-13 A | CP09-TR3-SW-1170, CP09-EN-TR3-A-1000, CP09-EN-TR3-A-1010 | 100% |  |
| CP09-TR3-SW-1190 |  | Water Proofing for Raft with screed | 3.75d | 2025-03-15 A | 2025-04-02 A | CP09-TR3-SW-1180 | 100% |  |
| CP09-TR3-SW-1200 |  | Reinforcement Concrete for Walls & Columns | 9.38d | 2025-05-10 A | 2025-06-20 A | CP09-TR3-SW-1190 | 100% |  |
| CP09-TR3-SW-1210 |  | Reinforcement Concrete for Slab | 11.25d | 2025-09-30 A | 2025-10-04 A | CP09-TR3-SW-1200 | 100% |  |
| CP09-TR3-SW-1250 |  | Plaster for Internal Walls | 6d | 2025-11-17 A | 2025-11-21 A | CP09-TR3-SW-1220, CP09-EN-TR3-A-1370, CP09-PR-CV-DY-1070 | 100% |  |
| CP09-TR3-SW-1260 |  | Emulsion Paint for Internal Wall | 6d | 2025-11-24 A | 2025-11-28 A | CP09-TR3-SW-1250, CP09-TR3-SW-1310, CP09-PR-CV-DY-1080 | 100% |  |
| CP09-TR3-SW-1220 |  | External Waterproofing with Protection | 5d | 2025-12-01 A | 2026-01-29 A | CP09-TR3-SW-1210 | 100% |  |
| CP09-TR3-SW-1270 |  | Epoxy for flooring | 3d | 2026-02-09 A | 2026-05-26 | CP09-TR3-SW-1260, CP09-TR3-SW-1280, CP09-TR3-SW-1240, CP09-TR3-SW-1320, CP09-TR3-SW-1360, CP09-TR3-SW-1350, CP09-PR-CV-DY-1110 | 80% | -122d |
| CP09-TR3-SW-1230 |  | Backfilling | 5d | 2026-02-22 A | 2026-03-06 A | CP09-TR3-SW-1220 | 100% |  |
| CP09-TR3-SW-1280 |  | Metal Works | 5d | 2026-05-24 | 2026-05-28 | CP09-TR3-SW-1260 |  | -101d |
| CP09-TR3-SW-1240 |  | Drainage Gravel including Geotextile & Geocomposit | 3.75d | 2026-06-10 | 2026-06-14 | CP09-TR3-SW-1260, CP09-PR-CV-DY-1090, CP09-PR-CV-DY-1100 |  | -114.75d |
|  | 2 | **MEP Works for Swimmimg Pool & Machine Room** |  | 2026-02-22 | 2026-07-06 |  |  |  |
|  | 1 | **Mechnical Works** |  | 2026-02-22 | 2026-05-15 |  |  |  |
| CP09-TR3-SW-1300 |  | UPVC pipes, fitting, valves, | 5d | 2026-02-22 A | 2026-05-15 A | CP09-TR3-SW-1250, CP09-EN-TR3-A-1080, CP09-PR-ME-DY-1000, CP09-PR-ME-DY-1010 | 100% |  |
| CP09-TR3-SW-1320 |  | Mechnical Equipment (Valves, Pumps, Filtters, Controllers ,Dosinng,& Ventilation exahust fan) | 15d | 2026-05-11 A | 2026-05-15 A | CP09-TR3-SW-1260, CP09-TR3-SW-1300, CP09-EN-TR3-A-1080, CP09-PR-ME-DY-1020, CP09-PR-ME-DY-1030, CP09-PR-ME-DY-1040, CP09-PR-ME-DY-1050, CP09-PR-ME-DY-1060, CP09-PR-ME-DY-1070, CP09-PR-ME-DY-1080 | 100% |  |
|  | 2 | **Electrical Works-SW** |  | 2026-06-10 | 2026-07-06 |  |  |  |
| CP09-TR3-SW-1310 |  | Conduits, Cable tray | 6d | 2026-06-10 | 2026-06-17 | CP09-TR3-SW-1250, CP09-EN-TR3-A-1090, CP09-PR-EL-DY-1000, CP09-PR-EL-DY-1010 |  | -156.06d |
| CP09-TR3-SW-1330 |  | Panel boards | 4d | 2026-06-17 | 2026-06-22 | CP09-TR3-SW-1310, CP09-TR3-SW-1260, CP09-EN-TR3-A-1090, CP09-PR-EL-DY-1020 |  | -156.06d |
| CP09-TR3-SW-1340 |  | Power Cables & Wires | 5d | 2026-06-22 | 2026-06-28 | CP09-TR3-SW-1330, CP09-TR3-SW-1310, CP09-EN-TR3-A-1090, CP09-PR-EL-DY-1030 |  | -156.06d |
| CP09-TR3-SW-1350 |  | Earthing System | 5d | 2026-06-22 | 2026-06-28 | CP09-TR3-SW-1340 SS, CP09-PR-EL-DY-1040 |  | -126.06d |
| CP09-TR3-SW-1360 |  | (Lighting Outlets , Switches, Fixture ) | 7d | 2026-06-28 | 2026-07-06 | CP09-TR3-SW-1310, CP09-TR3-SW-1340, CP09-TR3-SW-1330, CP09-PR-EL-DY-1050, CP09-PR-EL-DY-1140 |  | -156.06d |
|  | 6 | **Earth Work** |  | 2025-09-30 | 2026-02-13 |  |  |  |

| ID | WBS | Task | Duration | Start | Finish | Predecessors | Complete | Total float |
| --- | --- | --- | --- | --- | --- | --- | --- | --- |
|  | 1 | **Grading works** |  | 2025-09-30 | 2026-02-06 |  |  |  |
| CP09-TR3-EW-1000 |  | Excavation work to Reduce Level | 6d | 2025-09-30 A | 2026-02-06 A | CP09-TR3-SW-1150 SS+4d, CP09-EN-TR3-A-1100, CP09-CLD-1000 | 100% |  |
| CP09-TR3-EW-1010 |  | Filling works to make up levels with Compacting | 6d | 2025-09-30 A | 2026-02-06 A | CP09-TR3-SW-1150, CP09-TR3-EW-1000 SS+4.69d, CP09-EN-TR3-A-1100 | 100% |  |
|  | 2 | **Planting** |  | 2025-09-30 | 2026-02-13 |  |  |  |
| CP09-TR3-EW-1020 |  | Excavation works for Planting Beds | 6d | 2025-09-30 A | 2026-02-13 A | CP09-TR3-EW-1000 SS, CP09-TR3-EW-1010 SS, CP09-EN-TR3-A-1100 | 100% |  |
|  | 9 | **Retaining & Cheek Walls** |  | 2024-12-16 | 2026-06-23 |  |  |  |
|  | 1 | **Soild Block Work Cheek Walls** |  | 2024-12-16 | 2026-06-23 |  |  |  |
| CP09-TR3-RW-1010 |  | Excavation | 3.75d | 2024-12-16 A | 2024-12-21 A | CP09-TR2-RW-1470, CP09-TR3-EW-1000, CP09-TR3-EW-1010 | 100% |  |
| CP09-TR3-RW-1030 |  | Plaing Concrete with HPDE | 4.69d | 2025-01-19 A | 2025-04-02 A | CP09-TR3-RW-1010 SS+2.81d, CP09-TR3-RW-1010 FF+2.81d, CP09-EN-TR3-A-1110 | 100% |  |
| CP09-TR3-RW-1050 |  | Reinforced Concrete for Footing | 6.56d | 2025-02-03 A | 2025-04-05 A | CP09-TR3-RW-1030 SS+2.81d, CP09-TR3-RW-1030 FF+2.81d, CP09-EN-TR3-A-1120, CP09-EN-TR3-A-1110 | 100% |  |
| CP09-TR3-RW-1080 |  | Reinforced Concrete for Tie beam | 4.69d | 2025-03-17 A | 2025-04-05 A | CP09-TR3-RW-1050 SS+2.81d, CP09-TR3-RW-1050 FF+2.81d | 100% |  |
| CP09-TR3-RW-1100 |  | Reinforced Concrete for Column | 5.62d | 2025-03-20 A | 2026-05-25 | CP09-TR3-RW-1080 SS+2.81d, CP09-TR3-RW-1080 FF+2.81d | 100% | -97.8d |
| CP09-TR3-RW-1120 |  | Soild Block Work | 5.62d | 2025-12-08 A | 2025-12-12 A | CP09-TR3-RW-1100 SS+5.62d, CP09-TR3-RW-1100 FF+5.62d, CP09-EN-TR3-A-1140, CP09-PR-CV-DY-1020 | 100% |  |
| CP09-TR3-RW-1140 |  | Reinforced Concrete for Beam | 7.5d | 2025-12-08 A | 2025-12-12 A | CP09-TR3-RW-1120 SS+3.75d, CP09-TR3-RW-1120 FF+3.75d | 100% |  |
| CP09-TR3-RW-1160 |  | Waterproofing & Protection | 6.56d | 2025-12-22 A | 2025-12-26 A | CP09-TR3-RW-1140 SS+7.5d, CP09-TR3-RW-1140 FF+7.5d, CP09-EN-TR3-A-1130 | 100% |  |
| CP09-TR3-RW-1180 |  | Backfilling | 5.62d | 2025-12-22 A | 2025-12-26 A | CP09-TR3-RW-1160 SS+2.81d, CP09-TR3-RW-1160 FF+2.81d | 100% |  |
| CP09-TR3-RW-1200 |  | Marble Cladding | 10d | 2026-06-07 | 2026-06-17 | CP09-TR3-RW-1180 SS+5.62d, CP09-TR3-RW-1180 FF+5.62d, CP09-EN-TR3-A-1150, CP09-PR-CV-DY-1120 |  | -171.94d |
| CP09-TR3-RW-1220 |  | Marble Copping | 10d | 2026-06-11 | 2026-06-23 | CP09-TR3-RW-1200 SS+4.69d, CP09-TR3-RW-1200 FF+4.69d, CP09-EN-TR3-A-1150, CP09-PR-CV-DY-1120 |  | -171.94d |
|  | 2 | **Solid Block Retaining Walls** |  | 2024-12-16 | 2026-06-23 |  |  |  |
| CP09-TR3-RW-1020 |  | Excavation | 3.75d | 2024-12-16 A | 2024-12-21 A | CP09-TR3-RW-1010, CP09-TR3-EW-1000, CP09-TR3-EW-1010 | 100% |  |
| CP09-TR3-RW-1040 |  | Plaing Concrete with HPDE | 5d | 2025-01-19 A | 2025-04-02 A | CP09-TR3-RW-1020 SS+2.81d, CP09-TR3-RW-1020 FF+2.81d, CP09-EN-TR3-A-1110 | 100% |  |
| CP09-TR3-RW-1060 |  | Reinforced Concrete for Footing | 6.56d | 2025-02-03 A | 2025-04-05 A | CP09-TR3-RW-1040 SS+2.81d, CP09-TR3-RW-1040 FF+2.81d, CP09-EN-TR3-A-1110, CP09-EN-TR3-A-1120 | 100% |  |
| CP09-TR3-RW-1070 |  | Reinforced Concrete for Tie beam | 5d | 2025-03-17 A | 2025-04-05 A | CP09-TR3-RW-1060 SS+2.81d, CP09-TR3-RW-1060 FF+2.81d | 100% |  |
| CP09-TR3-RW-1090 |  | Reinforced Concrete for Column | 5.62d | 2025-09-30 A | 2025-10-04 A | CP09-TR3-RW-1070 SS+2.81d, CP09-TR3-RW-1070 FF+2.81d | 100% |  |
| CP09-TR3-RW-1110 |  | Soild Block Work | 5.62d | 2025-09-30 A | 2025-10-04 A | CP09-TR3-RW-1090 SS+5.62d, CP09-TR3-RW-1090 FF+5.62d, CP09-EN-TR3-A-1140 | 100% |  |
| CP09-TR3-RW-1130 |  | Reinforced Concrete for Beam | 7.5d | 2025-09-30 A | 2025-10-04 A | CP09-TR3-RW-1110 SS+3.75d, CP09-TR3-RW-1110 FF+3.75d | 100% |  |
| CP09-TR3-RW-1150 |  | Waterproofing & Protection | 6.56d | 2025-09-30 A | 2025-10-04 A | CP09-TR3-RW-1130 SS+7.5d, CP09-TR3-RW-1130 FF+7.5d | 100% |  |
| CP09-TR3-RW-1170 |  | Backfilling | 5.62d | 2025-11-17 A | 2025-11-21 A | CP09-TR3-RW-1150 SS+2.81d, CP09-TR3-RW-1150 FF+2.81d | 100% |  |
| CP09-TR3-RW-1190 |  | Marble Cladding | 10d | 2026-06-07 | 2026-06-17 | CP09-TR3-RW-1170 SS+4.69d, CP09-TR3-RW-1170 FF+4.69d, CP09-EN-TR3-A-1150, CP09-PR-CV-DY-1120 |  | -171.94d |
| CP09-TR3-RW-1210 |  | Marble Copping | 10d | 2026-06-11 | 2026-06-23 | CP09-TR3-RW-1190 SS+4.69d, CP09-TR3-RW-1190 FF+4.69d, CP09-EN-TR3-A-1150, CP09-PR-CV-DY-1120 |  | -171.94d |
|  | 1 | **Irrigation Works** |  | 2026-02-22 | 2026-06-18 |  |  |  |
|  | 1 | **Sub-Main & Lateral** |  | 2026-02-22 | 2026-04-28 |  |  |  |
| CP09-TR3-IR-1000 |  | Excavation for Sub-main & Lateral Pieps | 4d | 2026-02-22 A | 2026-04-28 A | CP09-EN-TR3-A-1340, CP09-TR3-HD-1050 | 100% |  |
| CP09-TR3-IR-1010 |  | Sub-main & Lateral Pieps laying out and installation | 5d | 2026-02-22 A | 2026-04-28 A | CP09-TR3-IR-1000 SS+2d, CP09-TR3-IR-1000 FF+5d, CP09-PR-IR-DY-1000 | 100% |  |
| CP09-TR3-IR-1020 |  | Sub-main & Lateral Pieps Testing | 3d | 2026-02-22 A | 2026-04-28 A | CP09-TR3-IR-1010 SS+2d, CP09-TR3-IR-1010 FF+2d | 100% |  |
| CP09-TR3-IR-1030 |  | Backfilling forSub-main & Lateral Pieps | 4d | 2026-02-22 A | 2026-04-28 A | CP09-TR3-IR-1020 SS+2d, CP09-TR3-IR-1020 FF+2d | 100% |  |
|  | 2 | **Fittings & Accessories** |  | 2026-04-24 | 2026-06-18 |  |  |  |
| CP09-TR3-IR-1040 |  | Installation of Dripline | 6d | 2026-04-24 A | 2026-06-01 | CP09-TR3-IR-1020, CP09-TR3-SF-1020 FF, CP09-PR-IR-DY-1010 | 75% | -142d |
| CP09-TR3-IR-1090 |  | Installation of Controller decoder cables | 6d | 2026-04-24 A | 2026-04-28 A | CP09-TR3-IR-1080, CP09-PR-IR-DY-1070 | 100% |  |
| CP09-TR3-IR-1100 |  | Installation of Decoder one station | 3d | 2026-05-24 | 2026-05-26 | CP09-TR3-IR-1090, CP09-PR-IR-DY-1080 |  | -122d |
| CP09-TR3-IR-1050 |  | Installation of Sprinklers | 5d | 2026-06-02 | 2026-06-07 | CP09-TR3-IR-1040, CP09-PR-IR-DY-1040 |  | -142d |
| CP09-TR3-IR-1060 |  | Installation Valves & Rings | 4d | 2026-06-08 | 2026-06-11 | CP09-TR3-IR-1050, CP09-PR-IR-DY-1030, CP09-PR-IR-DY-1020 |  | -142d |
| CP09-TR3-IR-1070 |  | Installation of Electrical solenoid valve | 6d | 2026-06-08 | 2026-06-14 | CP09-TR3-IR-1060 SS, CP09-PR-IR-DY-1050 |  | -138d |
| CP09-TR3-IR-1080 |  | Installation of Controller (decoder system plastic pedestal) | 6d | 2026-06-13 | 2026-06-18 | CP09-TR3-IR-1060, CP09-TR3-IR-1070 SS, CP09-PR-IR-DY-1060 |  | -142d |
|  | 4 | **Electrical Works** |  | 2024-09-16 | 2026-06-30 |  |  |  |
|  | 1 | **Power Cable & Pillars** |  | 2024-09-16 | 2026-06-30 |  |  |  |
| CP09-TR3-EL-1000 |  | Excavation | 5d | 2024-09-16 A | 2026-03-06 A | CP09-TR3-EW-1000, CP09-TR3-EW-1010, CP09-TR3-IR-1030, CP09-EN-TR3-A-1300 | 100% |  |
| CP09-TR3-EL-1010 |  | Installation of Power Cables | 4d | 2024-12-23 A | 2026-03-06 A | CP09-TR3-EL-1000 SS+2d, CP09-TR3-EL-1000 FF+2d, CP09-EN-TR3-A-1300, CP09-EN-TR3-A-1310, CP09-PR-EL-DY-1060 | 100% |  |
| CP09-TR3-EL-1020 |  | Backfilling for Power Cables | 4d | 2024-12-29 A | 2026-03-06 A | CP09-TR3-EL-1010 SS+2d, CP09-TR3-EL-1010 FF+2d | 100% |  |
| CP09-TR3-EL-1030 |  | Installation of Connecting Pillars | 3d | 2026-06-28 | 2026-06-30 | CP09-TR3-HD-1260, CP09-PR-EL-DY-1070 |  | -152d |
|  | 3 | **Hardscape** |  | 2024-10-24 | 2026-07-06 |  |  |  |
|  | 6 | **Concrete Curb** |  | 2025-11-03 | 2026-05-26 |  |  |  |
| CP09-TR3-HD-1010 |  | Excavation | 2d | 2025-11-03 A | 2025-12-26 A | CP09-TR3-EW-1000, CP09-TR3-EW-1010, CP09-TR3-EW-1020 | 100% |  |
| CP09-TR3-HD-1020 |  | Plains Concrete with HDPE waterproofing | 2d | 2025-11-03 A | 2025-12-26 A | CP09-TR3-HD-1010, CP09-EN-TR3-A-1230 | 100% |  |
| CP09-TR3-HD-1030 |  | Under Paving Reinforced Concrete Curb | 4d | 2025-11-03 A | 2025-12-26 A | CP09-TR3-HD-1020 SS+1.88d, CP09-TR3-HD-1020 FF+1.88d | 100% |  |
| CP09-TR3-HD-1050 |  | Instal precast Flush Curb | 3d | 2026-05-24 | 2026-05-26 | CP09-EN-TR3-A-1230, CP09-PR-HD-DY-1080, CP09-TR3-HD-1030 SS+3d, CP09-TR3-HD-1030 SF+3d, CP09-TR3-HD-1030 FS+3d, CP09-TR3-HD-1030 FF+3d |  | -156.62d |
|  | 1 | **Side wake & Plazes** |  | 2024-10-24 | 2026-06-25 |  |  |  |
|  | 8 | **Interlocking Paving** |  | 2025-12-22 | 2026-01-23 |  |  |  |
| CP09-TR3-HD-1120 |  | Crush Stone for Interlock Types IL-(01,02,06,07) | 6.56d | 2025-12-22 A | 2026-01-23 A | CP09-EN-TR3-A-1240, CP09-TR3-EW-1000, CP09-TR3-EW-1010, CP09-TR3-IR-1030, CP09-TR3-EL-1020, CP09-PR-HD-DY-1090 | 100% |  |
| CP09-TR3-HD-1240 |  | Sand Layer for Interlock Types IL-(01,02,06,07) | 5.62d | 2025-12-22 A | 2026-01-23 A | CP09-TR3-HD-1120 SS+2.81d, CP09-TR3-HD-1120 FF+2.81d, CP09-EN-TR3-A-1240 | 100% |  |
| CP09-TR3-HD-1250 |  | Motar Bed Interlock Types IL-(03,04,08,09,10) | 5.62d | 2025-12-22 A | 2026-01-23 A | CP09-TR3-HD-1240 SS, CP09-EN-TR3-A-1240 | 100% |  |
| CP09-TR3-HD-1260 |  | Interlocking Paving | 7.5d | 2025-12-22 A | 2026-01-23 A | CP09-TR3-HD-1240 SS+2.81d, CP09-TR3-HD-1250 SS+2.81d, CP09-TR3-HD-1240 FF+2.81d, CP09-TR3-HD-1250 FF+2.81d, CP09-EN-TR3-A-1240, CP09-PR-HD-DY-1180 | 100% |  |
|  | 2 | **Concrete in Situ** |  | 2025-09-30 | 2026-06-03 |  |  |  |
|  | 1 | **Slab on Garde** |  | 2025-09-30 | 2026-05-30 |  |  |  |
| CP09-TR3-HD-1070 |  | Plain Concrete with HDPE | 3.75d | 2025-09-30 A | 2026-05-27 | CP09-TR3-EW-1000, CP09-TR3-EW-1010, CP09-TR3-IR-1030, CP09-TR3-EL-1020, CP09-EN-TR3-A-1160 | 90% | -99.75d |
| CP09-TR3-HD-1230 |  | Reinfored Concrete slab on grade | 5.62d | 2026-02-22 A | 2026-05-30 | CP09-TR3-HD-1070 | 90% | -101.62d |
| CP09-TR3-HD-1330 |  | Waterproofing & Screed | 3.75d | 2026-02-22 A | 2026-05-27 | CP09-TR3-HD-1230 | 90% | -99.75d |
|  | 2 | **Concrete In-situ w./Exposed Aggregate Finish** |  | 2026-02-22 | 2026-06-03 |  |  |  |
| CP09-TR3-HD-1390 |  | Concrete casting (including Joints & Wire Mish) | 9.38d | 2026-02-22 A | 2026-06-03 | CP09-TR3-HD-1330, CP09-TR3-HD-1050, CP09-EN-TR3-A-1160, CP09-PR-HD-DY-1000 | 90% | -105.38d |
| CP09-TR3-HD-1520 |  | Finishing Concrete Surface | 5d | 2026-02-22 A | 2026-05-28 | CP09-TR3-HD-1390, CP09-TR3-RW-1200, CP09-TR3-RW-1220, CP09-TR3-RW-1190, CP09-TR3-RW-1210 | 90% | -142.75d |

| ID | WBS | Task | Duration | Start | Finish | Predecessors | Complete | Total float |
| --- | --- | --- | --- | --- | --- | --- | --- | --- |
|  | 1 | **Marble Paving** |  | 2024-10-24 | 2026-05-31 |  |  |  |
|  | 1 | **Slab on Garde** |  | 2024-10-24 | 2026-05-30 |  |  |  |
| CP09-TR3-HD-1060 |  | Plain Concrete with HDPE | 3.75d | 2024-10-24 A | 2026-05-27 | CP09-TR3-EW-1000, CP09-TR3-EW-1020, CP09-TR3-IR-1030, CP09-TR3-EL-1020, CP09-EN-TR3-A-1170 | 95% | -99.75d |
| CP09-TR3-HD-1220 |  | Reinfored Concrete slab on grade | 5.62d | 2026-02-22 A | 2026-05-30 | CP09-TR3-HD-1060 | 95% | -101.62d |
| CP09-TR3-HD-1320 |  | Waterproofing & Screed | 5d | 2026-02-22 A | 2026-05-28 | CP09-TR3-HD-1220 | 95% | -101d |
|  | 2 | **Marble Tiles** |  | 2025-09-30 | 2026-05-31 |  |  |  |
| CP09-TR3-HD-1420 |  | Marble Fixiation | 7d | 2025-09-30 A | 2026-05-31 | CP09-TR3-HD-1320, CP09-TR3-HD-1050, CP09-EN-TR3-A-1170, CP09-PR-HD-DY-1010 | 95% | -103d |
| CP09-TR3-HD-1530 |  | Marble Surfcae Finishing | 4d | 2026-04-13 A | 2026-05-27 | CP09-TR3-HD-1420, CP09-TR3-HD-1520 SS | 95% | -141.75d |
|  | 3 | **Wooden Floor Boards** |  | 2026-04-13 | 2026-06-08 |  |  |  |
|  | 1 | **Slab on Garde** |  | 2026-04-13 | 2026-04-28 |  |  |  |
| CP09-TR3-HD-1080 |  | Plain Concrete with HDPE | 2.81d | 2026-04-13 A | 2026-04-17 A | CP09-TR3-HD-1220, CP09-TR3-EW-1000, CP09-TR3-EW-1010, CP09-TR3-IR-1030, CP09-TR3-EL-1020, CP09-EN-TR3-A-1180 | 100% |  |
| CP09-TR3-HD-1160 |  | Reinfored Concrete slab on grade | 5d | 2026-04-13 A | 2026-04-28 A | CP09-TR3-HD-1080 | 100% |  |
| CP09-TR3-HD-1290 |  | Waterproofing & Screed | 2.81d | 2026-04-13 A | 2026-04-28 A | CP09-TR3-HD-1160 | 100% |  |
|  | 2 | **Wood- Plastic Composit** |  | 2026-05-27 | 2026-06-08 |  |  |  |
| CP09-TR3-HD-1350 |  | WPC Installation | 6.56d | 2026-05-27 | 2026-06-03 | CP09-TR3-HD-1290, CP09-TR3-HD-1050, CP09-EN-TR3-A-1180, CP09-PR-HD-DY-1020 |  | -147.31d |
| CP09-TR3-HD-1600 |  | WPC surface finishing & Accessories | 3.75d | 2026-06-03 | 2026-06-08 | CP09-TR3-HD-1350, CP09-TR3-HD-1530, CP09-TR3-HD-1520 |  | -147.31d |
|  | 4 | **Gravel layer** |  | 2026-05-24 | 2026-06-17 |  |  |  |
|  | 1 | **Slab on Garde** |  | 2026-05-24 | 2026-06-01 |  |  |  |
| CP09-TR3-HD-1090 |  | Plain Concrete with HDPE | 2.81d | 2026-05-24 | 2026-05-26 | CP09-TR3-HD-1080, CP09-TR3-EW-1000, CP09-TR3-EW-1010, CP09-TR3-IR-1030, CP09-TR3-EL-1020, CP09-EN-TR3-A-1190 |  | -154.94d |
| CP09-TR3-HD-1170 |  | Mortar bed | 5d | 2026-05-26 | 2026-06-01 | CP09-TR3-HD-1090 |  | -154.94d |
|  | 2 | **Gravel Layer, w./Earth Colors** |  | 2026-06-10 | 2026-06-17 |  |  |  |
| CP09-TR3-HD-1360 |  | Furnish & install Garvel Layer | 6.56d | 2026-06-10 | 2026-06-17 | CP09-TR3-HD-1050, CP09-EN-TR3-A-1190, CP09-PR-HD-DY-1030, CP09-TR3-HD-1170 |  | -162.12d |
|  | 5 | **Crushed Stone** |  | 2026-05-11 | 2026-06-25 |  |  |  |
|  | 1 | **Slab on Garde** |  | 2026-05-11 | 2026-05-28 |  |  |  |
| CP09-TR3-HD-1100 |  | Geotextile membrane | 2.81d | 2026-05-11 A | 2026-05-26 | CP09-TR3-HD-1160, CP09-TR3-EW-1000, CP09-TR3-EW-1010, CP09-TR3-IR-1030, CP09-TR3-EL-1020, CP09-EN-TR3-A-1200 | 75% | -98.81d |
| CP09-TR3-HD-1180 |  | Gravel fix sheets | 5d | 2026-05-11 A | 2026-05-28 | CP09-TR3-HD-1100 | 75% | -140.56d |
|  | 2 | **Crushed Dolomite Stone** |  | 2026-06-17 | 2026-06-25 |  |  |  |
| CP09-TR3-HD-1450 |  | Furnish & Install Crushed Dolomite stone , w./ mixed colors | 6.56d | 2026-06-17 | 2026-06-25 | CP09-TR3-HD-1180 FF, CP09-TR3-HD-1360, CP09-TR3-HD-1050, CP09-EN-TR3-A-1200, CP09-PR-HD-DY-1040, CP09-TR3-HD-1180 SS |  | -162.12d |
|  | 6 | **Loose Gravel** |  | 2026-06-10 | 2026-06-17 |  |  |  |
|  | 2 | **Loose Gravel 50mm** |  | 2026-06-10 | 2026-06-17 |  |  |  |
| CP09-TR3-HD-1460 |  | Furnish & Install loose gravel w./earth colors. | 6.56d | 2026-06-10 | 2026-06-17 | CP09-TR3-HD-1160, CP09-TR3-HD-1050, CP09-TR3-IR-1030, CP09-TR3-EL-1020, CP09-EN-TR3-A-1210, CP09-PR-HD-DY-1050 |  | -155.56d |
|  | 7 | **Clean Sand Layer** |  | 2026-03-09 | 2026-04-28 |  |  |  |
|  | 1 | **Kids & Fitness Area** |  | 2026-03-09 | 2026-04-28 |  |  |  |
| CP09-TR3-HD-1110 |  | Geotextile Sheets | 5d | 2026-03-09 A | 2026-04-28 A | CP09-TR3-HD-1160, CP09-TR3-EW-1000, CP09-TR3-EW-1010, CP09-TR3-HD-1050, CP09-TR3-IR-1030, CP09-TR3-EL-1020, CP09-EN-TR3-A-1220 | 100% |  |
| CP09-TR3-HD-1540 |  | Install Clean sand layer | 9.38d | 2026-03-09 A | 2026-04-28 A | CP09-TR3-HD-1110, CP09-TR3-HD-1460, CP09-TR3-HD-1050, CP09-EN-TR3-A-1220, CP09-PR-HD-DY-1070 | 100% |  |
|  | 2 | **Site Improvments** |  | 2026-04-06 | 2026-07-06 |  |  |  |
|  | 1 | **Marble Steps** |  | 2026-05-24 | 2026-06-29 |  |  |  |
| CP09-TR3-HD-1130 |  | Reinforecd Concrete Step. | 7d | 2026-05-24 | 2026-05-31 | CP09-TR3-RW-1180, CP09-TR3-RW-1170, CP09-TR3-EW-1000, CP09-TR3-EW-1010, CP09-EN-TR3-A-1250, CP09-TR3-IR-1030, CP09-TR3-EL-1020 |  | -152.44d |
| CP09-TR3-HD-1190 |  | Install Marble Blocks | 10d | 2026-05-26 | 2026-06-07 | CP09-TR3-HD-1130 SS+2.81d, CP09-TR3-HD-1130 FF+2.81d, CP09-PR-HD-DY-1100 |  | -152.44d |
| CP09-TR3-HD-1340 |  | Finishing Marble Surface | 5d | 2026-06-23 | 2026-06-29 | CP09-TR3-HD-1190, CP09-TR3-RW-1200, CP09-TR3-RW-1220, CP09-TR3-RW-1190, CP09-TR3-RW-1210 |  | -150.69d |
|  | 2 | **Curvelinear Block Seat** |  | 2026-04-06 | 2026-06-30 |  |  |  |
| CP09-TR3-HD-1140 |  | Excavation | 2.81d | 2026-04-06 A | 2026-04-28 A | CP09-TR3-EW-1000, CP09-TR3-EW-1010, CP09-EN-TR3-A-1260, CP09-TR3-EL-1020 | 100% |  |
| CP09-TR3-HD-1200 |  | Plaing Concrete with HPDE | 3.75d | 2026-04-06 A | 2026-04-28 A | CP09-TR3-HD-1140 | 100% |  |
| CP09-TR3-HD-1270 |  | Reinforced Concrete for Footing | 5.62d | 2026-04-06 A | 2026-04-28 A | CP09-TR3-HD-1200 | 100% |  |
| CP09-TR3-HD-1380 |  | Reinforced Concrete for beam | 5d | 2026-04-06 A | 2026-04-28 A | CP09-TR3-HD-1270 | 100% |  |
| CP09-TR3-HD-1470 |  | Waterproofing & Protection | 3.75d | 2026-04-06 A | 2026-04-28 A | CP09-TR3-HD-1380 | 100% |  |
| CP09-TR3-HD-1500 |  | Backfilling | 2.81d | 2026-04-06 A | 2026-04-28 A | CP09-TR3-HD-1470 | 100% |  |
| CP09-TR3-HD-1550 |  | Marble Capping | 5.62d | 2026-06-23 | 2026-06-30 | CP09-TR3-RW-1190, CP09-TR3-RW-1210, CP09-TR3-RW-1200, CP09-TR3-RW-1220, CP09-TR3-HD-1500, CP09-PR-HD-DY-1110 |  | -171.94d |
|  | 3 | **Pools Shower-01** |  | 2026-05-27 | 2026-07-06 |  |  |  |
| CP09-TR3-HD-1150 |  | Plain Concrete Basin | 2d | 2026-05-27 | 2026-05-28 | CP09-TR3-HD-1050, CP09-EN-TR3-A-1270, CP09-TR3-EL-1020 |  | -156.62d |
| CP09-TR3-HD-1210 |  | R.Concrete Basin | 3.75d | 2026-05-30 | 2026-06-02 | CP09-TR3-HD-1150 |  | -156.62d |
| CP09-TR3-HD-1280 |  | Solid Block Work | 4d | 2026-06-02 | 2026-06-07 | CP09-TR3-HD-1210 |  | -156.62d |
| CP09-TR3-HD-1370 |  | Water Proofing | 2d | 2026-06-07 | 2026-06-09 | CP09-TR3-HD-1280 |  | -156.62d |
| CP09-TR3-HD-1400 |  | Backfilling | 2.81d | 2026-06-09 | 2026-06-13 | CP09-TR3-HD-1370 |  | -156.62d |
| CP09-TR3-HD-1430 |  | Mica Stone Cladding | 2.81d | 2026-06-13 | 2026-06-16 | CP09-TR3-HD-1400, CP09-PR-HD-DY-1120 |  | -156.62d |
| CP09-TR3-HD-1490 |  | Mica Stone Capping | 1.88d | 2026-06-16 | 2026-06-18 | CP09-TR3-HD-1430, CP09-PR-HD-DY-1120 |  | -156.62d |
| CP09-TR3-HD-1510 |  | Drainage Cover with Geotextile | 2.81d | 2026-06-18 | 2026-06-22 | CP09-TR3-HD-1490, CP09-PR-HD-DY-1060 |  | -156.62d |
| CP09-TR3-HD-1570 |  | Blast stone blocks for Flooring | 3d | 2026-06-22 | 2026-06-25 | CP09-TR3-HD-1510, CP09-PR-HD-DY-1130 |  | -156.62d |
| CP09-TR3-HD-1590 |  | Blast Stone Blocks Capping | 3d | 2026-06-25 | 2026-06-29 | CP09-TR3-HD-1570, CP09-PR-HD-DY-1130 |  | -156.62d |
| CP09-TR3-HD-1690 |  | Loose Rounded Pebbles | 3.75d | 2026-06-29 | 2026-07-02 | CP09-TR3-HD-1590, CP09-PR-HD-DY-1140 |  | -156.62d |
| CP09-TR3-HD-1810 |  | Shower Head Fixation | 2.81d | 2026-07-02 | 2026-07-06 | CP09-TR3-HD-1690, CP09-TR3-HD-1570, CP09-TR3-HD-1590, CP09-PR-HD-DY-1150 |  | -156.62d |
|  | 4 | **Handrails** |  | 2026-06-30 | 2026-07-06 |  |  |  |
| CP09-TR3-HD-1610 |  | Install & Fix Stainless Handrail (500 mm height) | 5.62d | 2026-06-30 | 2026-07-06 | CP09-TR3-HD-1190, CP09-TR3-HD-1550, CP09-EN-TR3-A-1280, CP09-PR-HD-DY-1160 |  | -171.94d |
| CP09-TR3-HD-1620 |  | Install & Fix Glass Handrail (900mm height) | 5.62d | 2026-06-30 | 2026-07-06 | CP09-TR3-HD-1190, CP09-TR3-HD-1550, CP09-EN-TR3-A-1280, CP09-PR-HD-DY-1170 |  | -171.94d |
|  | 7 | **Sinage** |  | 2026-02-16 | 2026-06-03 |  |  |  |
| CP09-TR3-SN-1480 |  | Reinforced Concrete | 10d | 2026-02-16 A | 2026-04-28 A | CP09-TR3-SN-1440 SS+2d, CP09-TR3-SN-1440 FF+2d | 100% |  |
| CP09-TR3-SN-1560 |  | Waterproofing | 5d | 2026-02-16 A | 2026-04-28 A | CP09-TR3-SN-1480 SS+3d, CP09-TR3-SN-1480 FF+3d | 100% |  |
| CP09-TR3-SN-1410 |  | Excavation | 7d | 2026-02-22 A | 2026-04-28 A | CP09-TR3-RW-1180, CP09-TR3-RW-1170, CP09-TR3-HD-1260, CP09-EN-TR3-A-1320 | 100% |  |
| CP09-TR3-SN-1440 |  | Plain Concrete with HDPE | 5d | 2026-02-22 A | 2026-04-28 A | CP09-TR3-SN-1410 SS+2d, CP09-TR3-SN-1410 FF+2d | 100% |  |
| CP09-TR3-SN-1580 |  | Grouting | 5d | 2026-02-22 A | 2026-04-28 A | CP09-TR3-SN-1560 SS+2d, CP09-TR3-SN-1560 FF+2d | 100% |  |

| ID | WBS | Task | Duration | Start | Finish | Predecessors | Complete | Total float |
| --- | --- | --- | --- | --- | --- | --- | --- | --- |
| CP09-TR3-SN-1630 |  | STREET DIRECTIONAL SIGN | 10d | 2026-03-02 A | 2026-04-28 A | CP09-TR3-SN-1580, CP09-PR-SN-DY-1000 | 100% |  |
| CP09-TR3-SN-1640 |  | DIRECTIONAL SIGN FOR VEHICULAR | 10d | 2026-03-02 A | 2026-04-28 A | CP09-TR3-SN-1580, CP09-PR-SN-DY-1010 | 100% |  |
| CP09-TR3-SN-1670 |  | RULES SIGN | 10d | 2026-03-02 A | 2026-04-28 A | CP09-TR3-SN-1580, CP09-PR-SN-DY-1030 | 100% |  |
| CP09-TR3-SN-1680 |  | IDENTIFICATION SIGN | 10d | 2026-03-02 A | 2026-04-28 A | CP09-TR3-SN-1630, CP09-TR3-SN-1640, CP09-TR3-SN-1670, CP09-TR3-SN-1580, CP09-PR-SN-DY-1040 | 100% |  |
| CP09-TR3-SN-1650 |  | UNIT ID SIGN (FRONT YARD) | 10d | 2026-05-24 | 2026-06-03 | CP09-TR3-SN-1630, CP09-TR3-SN-1640, CP09-TR3-SN-1670, CP09-TR3-SN-1580, CP09-PR-SN-DY-1020 |  | -129d |
| CP09-TR3-SN-1660 |  | UNIT ID SIGN (BACK YARD) | 10d | 2026-05-24 | 2026-06-03 | CP09-TR3-SN-1630, CP09-TR3-SN-1640, CP09-TR3-SN-1670, CP09-TR3-SN-1580, CP09-PR-SN-DY-1020 |  | -129d |
|  | 5 | **Landscape Furntiure** |  | 2026-04-24 | 2026-07-23 |  |  |  |
| CP09-TR3-FN-1700 |  | Install & Fix Pitch Pine Picnic Table | 10d | 2026-04-24 A | 2026-04-28 A | CP09-TR3-HD-1610, CP09-TR3-HD-1620, CP09-TR3-HD-1260, CP09-TR3-HD-1460, CP09-TR3-HD-1450, CP09-TR3-HD-1360, CP09-TR3-HD-1600, CP09-TR3-HD-1530, CP09-TR3-HD-1520, CP09-EN-TR3-A-1290, CP09-PR-FN-DY-1000 | 100% |  |
| CP09-TR3-FN-1710 |  | Install & Fix Crcular Cast-iron tree grate | 10d | 2026-04-24 A | 2026-04-28 A | CP09-TR3-HD-1610, CP09-TR3-HD-1620, CP09-TR3-HD-1260, CP09-TR3-HD-1460, CP09-TR3-HD-1450, CP09-TR3-HD-1360, CP09-TR3-HD-1600, CP09-TR3-HD-1530, CP09-TR3-HD-1520, CP09-EN-TR3-A-1290, CP09-PR-FN-DY-1010 | 100% |  |
| CP09-TR3-FN-1720 |  | Install & Fix Aluminium Cabana for Pool Shading | 10d | 2026-04-24 A | 2026-04-28 A | CP09-TR3-HD-1610, CP09-TR3-HD-1620, CP09-TR3-HD-1260, CP09-TR3-HD-1460, CP09-TR3-HD-1450, CP09-TR3-HD-1360, CP09-TR3-HD-1600, CP09-TR3-HD-1530, CP09-TR3-HD-1520, CP09-EN-TR3-A-1290, CP09-PR-FN-DY-1020 | 100% |  |
| CP09-TR3-FN-1730 |  | Install & Fix Pitch Pine Benchs | 10d | 2026-04-24 A | 2026-04-28 A | CP09-TR3-HD-1610, CP09-TR3-HD-1620, CP09-TR3-HD-1260, CP09-TR3-HD-1460, CP09-TR3-HD-1450, CP09-TR3-HD-1360, CP09-TR3-HD-1600, CP09-TR3-HD-1530, CP09-TR3-HD-1520, CP09-EN-TR3-A-1290, CP09-PR-FN-DY-1030 | 100% |  |
| CP09-TR3-FN-1740 |  | Install & Fix Polyester Hammocks | 10d | 2026-04-24 A | 2026-04-28 A | CP09-TR3-HD-1610, CP09-TR3-HD-1620, CP09-TR3-HD-1260, CP09-TR3-HD-1460, CP09-TR3-HD-1450, CP09-TR3-HD-1360, CP09-TR3-HD-1600, CP09-TR3-HD-1530, CP09-TR3-HD-1520, CP09-EN-TR3-A-1290, CP09-PR-FN-DY-1040 | 100% |  |
| CP09-TR3-FN-1750 |  | Install & Fix Adult Play Swing | 10d | 2026-04-24 A | 2026-04-28 A | CP09-TR3-HD-1610, CP09-TR3-HD-1620, CP09-TR3-HD-1260, CP09-TR3-HD-1460, CP09-TR3-HD-1450, CP09-TR3-HD-1360, CP09-TR3-HD-1600, CP09-TR3-HD-1530, CP09-TR3-HD-1520, CP09-EN-TR3-A-1290, CP09-PR-FN-DY-1050 | 100% |  |
| CP09-TR3-FN-1760 |  | Install & Fix Aluminum Trash Bin | 15d | 2026-04-24 A | 2026-04-28 A | CP09-TR3-HD-1610, CP09-TR3-HD-1620, CP09-TR3-HD-1260, CP09-TR3-HD-1460, CP09-TR3-HD-1450, CP09-TR3-HD-1360, CP09-TR3-HD-1600, CP09-TR3-HD-1530, CP09-TR3-HD-1520, CP09-EN-TR3-A-1290, CP09-PR-FN-DY-1060 | 100% |  |
| CP09-TR3-FN-1780 |  | Lanscape Edging ( Rubber) | 12d | 2026-04-24 A | 2026-04-28 A | CP09-TR3-HD-1610, CP09-TR3-HD-1620, CP09-TR3-HD-1260, CP09-TR3-HD-1460, CP09-TR3-HD-1450, CP09-TR3-HD-1360, CP09-TR3-HD-1600, CP09-TR3-HD-1530, CP09-TR3-HD-1520, CP09-EN-TR3-A-1290, CP09-PR-FN-DY-1080 | 100% |  |
| CP09-TR3-FN-1770 |  | Install & Fix tensile Teflon Tent | 15d | 2026-07-06 | 2026-07-23 | CP09-TR3-HD-1610, CP09-TR3-HD-1620, CP09-TR3-HD-1260, CP09-TR3-HD-1460, CP09-TR3-HD-1450, CP09-TR3-HD-1360, CP09-TR3-HD-1600, CP09-TR3-HD-1530, CP09-TR3-HD-1520, CP09-EN-TR3-A-1290, CP09-PR-FN-DY-1070 |  | -171.94d |
|  | 10 | **Play Field Equipment** |  | 2026-02-16 | 2026-06-09 |  |  |  |
| CP09-TR3-PE-1800 |  | Kids playground equipment | 15d | 2026-02-16 A | 2026-04-28 A | CP09-TR3-FN-1700, CP09-TR3-FN-1760, CP09-TR3-HD-1540, CP09-PR-PE-DY-1040, CP09-PR-PE-DY-1050, CP09-PR-PE-DY-1060, CP09-PR-PE-DY-1070, CP09-PR-PE-DY-1080, CP09-PR-PE-DY-1090, CP09-PR-PE-DY-1100 | 100% |  |
| CP09-TR3-PE-1790 |  | Fitness areas equipment | 15d | 2026-05-24 | 2026-06-09 | CP09-TR3-FN-1760, CP09-TR3-HD-1540, CP09-EN-TR3-A-1330, CP09-PR-PE-DY-1000, CP09-PR-PE-DY-1010, CP09-PR-PE-DY-1020, CP09-PR-PE-DY-1030 |  | -134d |
|  | 11 | **Lighting for Softscape** |  | 2026-05-24 | 2026-07-13 |  |  |  |
|  | 1 | **Exterior Lighting** |  | 2026-05-24 | 2026-07-11 |  |  |  |
| CP09-TR3-SF-1000 |  | Install Landscape Lighting Pole | 21d | 2026-05-24 | 2026-06-16 | CP09-TR3-HD-1260, CP09-TR3-EL-1010, CP09-EN-TR3-A-1360, CP09-PR-EL-DY-1080 |  | -155d |
| CP09-TR3-SF-1060 |  | Install Bollard for Walkways | 10d | 2026-06-25 | 2026-07-07 | CP09-TR3-EL-1010, CP09-TR3-HD-1260, CP09-TR3-HD-1520, CP09-TR3-HD-1530, CP09-TR3-HD-1600, CP09-TR3-HD-1360, CP09-TR3-HD-1450, CP09-TR3-HD-1460, CP09-TR3-HD-1540, CP09-EN-TR3-A-1360, CP09-PR-EL-DY-1090, CP09-TR3-SF-1000 |  | -162.12d |
| CP09-TR3-SF-1150 |  | Install Surface Mountaed Down Light for Pool Cabans | 7d | 2026-06-28 | 2026-07-05 | CP09-TR3-FN-1720, CP09-EN-TR3-A-1360, CP09-PR-EL-DY-1100 |  | -156d |
| CP09-TR3-SF-1110 |  | Install Diffused Wall Recessed Step | 7d | 2026-06-29 | 2026-07-07 | CP09-TR3-SF-1060 SS+3d, CP09-EN-TR3-A-1360, CP09-PR-EL-DY-1110 |  | -157.12d |
| CP09-TR3-SF-1130 |  | Install Inground Uplight For Palms | 6d | 2026-07-05 | 2026-07-11 | CP09-TR3-SF-1140 SS, CP09-TR3-SF-1060 SS, CP09-EN-TR3-A-1360, CP09-PR-EL-DY-1120 |  | -161d |
| CP09-TR3-SF-1140 |  | Install Projectors for Trees | 4d | 2026-07-05 | 2026-07-08 | CP09-TR3-SF-1030, CP09-TR3-SF-1080, CP09-TR3-SF-1090, CP09-TR3-SF-1100, CP09-TR3-SF-1040, CP09-TR3-SF-1070, CP09-TR3-SF-1050, CP09-EN-TR3-A-1360, CP09-PR-EL-DY-1130 |  | -161d |
|  | 2 | **Outlet Lighting Fixtures** |  | 2026-07-07 | 2026-07-13 |  |  |  |
| CP09-TR3-SF-1120 |  | Install outlet lighting fixtures | 5d | 2026-07-07 | 2026-07-13 | CP09-TR3-SF-1060, CP09-EN-TR3-A-1360, CP09-PR-EL-DY-1150 |  | -162.12d |
|  | 2 | **Softscape** |  | 2026-02-16 | 2026-07-04 |  |  |  |
|  | 1 | **Planting** |  | 2026-02-16 | 2026-07-04 |  |  |  |
| CP09-TR3-SF-1020 |  | Organic Manure | 8d | 2026-02-16 A | 2026-06-01 | CP09-TR3-SF-1010 SS+5d, CP09-EN-TR3-A-1350, CP09-PR-PN-DY-1010 | 95% | -143d |
| CP09-TR3-SF-1010 |  | Sweet sand for all plants | 10d | 2026-02-22 A | 2026-06-03 | CP09-TR3-EW-1020, CP09-TR3-HD-1050, CP09-TR3-HD-1260, CP09-EN-TR3-A-1350, CP09-PR-PN-DY-1000 | 95% | -145d |
| CP09-TR3-SF-1030 |  | Large Trees | 7d | 2026-04-13 A | 2026-05-31 | CP09-TR3-IR-1040, CP09-TR3-IR-1050, CP09-TR3-IR-1060, CP09-TR3-IR-1070, CP09-TR3-IR-1080, CP09-TR3-IR-1090, CP09-TR3-IR-1100, CP09-TR3-SF-1020, CP09-TR3-SF-1010, CP09-PR-PN-DY-1020 | 70% | -135d |
| CP09-TR3-SF-1080 |  | Shrubs | 10d | 2026-04-13 A | 2026-06-03 | CP09-TR3-SF-1020, CP09-TR3-SF-1010, CP09-TR3-SF-1030 SS+3d, CP09-TR3-SF-1030 FF+3d, CP09-PR-PN-DY-1060 | 80% | -135d |
| CP09-TR3-SF-1090 |  | Ground Covers | 10d | 2026-04-13 A | 2026-06-03 | CP09-TR3-SF-1020, CP09-TR3-SF-1010, CP09-TR3-SF-1030 SS+3d, CP09-TR3-SF-1030 FF+3d, CP09-PR-PN-DY-1070 | 80% | -135d |
| CP09-TR3-SF-1050 |  | Lawn | 10d | 2026-04-24 A | 2026-06-03 | CP09-TR3-SF-1020, CP09-TR3-SF-1010, CP09-TR3-SF-1030 SS+3d, CP09-TR3-SF-1030 FF+3d, CP09-PR-PN-DY-1040 | 80% | -135d |
| CP09-TR3-SF-1100 |  | Succulents | 10d | 2026-05-04 A | 2026-06-03 | CP09-TR3-SF-1020, CP09-TR3-SF-1010, CP09-TR3-SF-1030 SS+3d, CP09-TR3-SF-1030 FF+3d, CP09-PR-PN-DY-1080 | 80% | -135d |
| CP09-TR3-SF-1040 |  | Vines & Climbers | 10d | 2026-06-04 | 2026-06-15 | CP09-TR3-SF-1020, CP09-TR3-SF-1010, CP09-TR3-SF-1030 SS+3d, CP09-TR3-SF-1030 FF+3d, CP09-PR-PN-DY-1030 |  | -145d |
| CP09-TR3-SF-1070 |  | Ornamental grass | 10d | 2026-06-23 | 2026-07-04 | CP09-TR3-SF-1020, CP09-TR3-SF-1010, CP09-TR3-SF-1030 SS+3d, CP09-TR3-SF-1030 FF+3d, CP09-PR-PN-DY-1050 |  | -161d |
|  | 4 | **Terrace # 04** |  | 2024-02-14 | 2026-08-17 |  |  |  |
|  | 8 | **Swimming Pool-SP02 & Mechnical Room-MR-02** |  | 2024-02-14 | 2026-07-06 |  |  |  |
|  | 1 | **Structure Works for Swimming Pool** |  | 2024-02-14 | 2026-04-24 |  |  |  |
| CP09-TR4-SW-1370 |  | Excvation up to Formation Level | 4d | 2024-02-14 A | 2024-05-18 A | CP09-MS-1010, CP09-CLD-1000, CP09-TR3-SW-1000 | 100% |  |
| CP09-TR4-SW-1380 |  | Plain Concret for For Raft | 2.81d | 2024-09-02 A | 2024-09-05 A | CP09-EN-TR2-A-1740, CP09-TR4-SW-1370, CP09-EN-TR4-A-1380, CP09-PR-CV-DY-1000 SS, CP09-TR3-SW-1050, CP09-PR-CV-DY-1010 SS, CP09-PR-CV-A-1010 SS, CP09-PR-CV-DY-1130, CP09-CLD-1010, CP09-MS-1010, CP09-EN-TR1-A-1470, CP09-CLD-1000 | 100% |  |
| CP09-TR4-SW-1390 |  | Water Proofing with screed | 1.88d | 2024-09-05 A | 2024-09-08 A | CP09-TR4-SW-1380, CP09-EN-TR4-A-1400, CP09-PR-CV-DY-1010 SS | 100% |  |
| CP09-TR4-SW-1400 |  | Reinforcement concrete for Raft | 4.69d | 2024-09-16 A | 2024-12-22 A | CP09-TR4-SW-1390, CP09-EN-TR4-A-1380, CP09-EN-TR4-A-1390, CP09-PR-CV-DY-1130 | 100% |  |
| CP09-TR4-SW-1410 |  | Water Proofing for Raft with screed | 3.75d | 2024-12-23 A | 2024-12-28 A | CP09-TR4-SW-1400, CP09-EN-TR4-A-1400, CP09-PR-CV-DY-1010 SS | 100% |  |
| CP09-TR4-SW-1420 |  | Reinforcement Concrete for Walls | 6.56d | 2025-05-18 A | 2025-06-20 A | CP09-TR4-SW-1410 | 100% |  |
| CP09-TR4-SW-1430 |  | External Waterproofing for Walls | 5d | 2025-11-17 A | 2026-02-06 A | CP09-TR4-SW-1420 | 100% |  |
| CP09-TR4-SW-1440 |  | Protection Block Works | 5d | 2026-03-02 A | 2026-03-06 A | CP09-TR4-SW-1430, CP09-PR-CV-DY-1020 SS | 100% |  |
| CP09-TR4-SW-1450 |  | Backfilling | 5.62d | 2026-03-02 A | 2026-04-24 A | CP09-TR4-SW-1440, CP09-TR4-SW-1600 FF | 100% |  |
|  | 3 | **Finishing Works for Swimming Pool** |  | 2026-05-11 | 2026-06-28 |  |  |  |
| CP09-TR4-SW-1470 |  | Granite for Pool Edg | 3.75d | 2026-05-11 A | 2026-05-27 | CP09-TR4-SW-1460, CP09-EN-TR4-A-1420, CP09-PR-CV-DY-1040 | 75% | -130.56d |
| CP09-TR4-SW-1480 |  | Garnite for Drinage Grate | 3.75d | 2026-05-11 A | 2026-05-27 | CP09-TR4-SW-1470 SS, CP09-EN-TR4-A-1420 | 75% | -130.56d |
| CP09-TR4-SW-1490 |  | Granite for Pool Coping | 3.75d | 2026-05-11 A | 2026-05-27 | CP09-TR4-SW-1470, CP09-EN-TR4-A-1420 | 75% | -130.56d |
| CP09-TR4-SW-1460 |  | Mosaics Tiles | 8d | 2026-06-10 | 2026-06-18 | CP09-TR4-SW-1440, CP09-TR4-SW-1450, CP09-EN-TR4-A-1410, CP09-PR-CV-DY-1030 |  | -149.81d |
| CP09-TR4-SW-1500 |  | Stanless Steel Ladders | 2.81d | 2026-06-20 | 2026-06-22 | CP09-TR4-SW-1460, CP09-TR4-SW-1470, CP09-TR4-SW-1480, CP09-TR4-SW-1490, CP09-EN-TR4-A-1440, CP09-EN-TR4-A-1430, CP09-PR-CV-DY-1050 |  | -149.81d |
| CP09-TR4-SW-1510 |  | Stanless Steel Handrial | 5d | 2026-06-22 | 2026-06-28 | CP09-TR4-SW-1500, CP09-EN-TR4-A-1440, CP09-PR-CV-DY-1060 |  | -149.81d |
|  | 4 | **Machine Room_MR02** |  | 2024-08-18 | 2026-06-14 |  |  |  |
| CP09-TR4-SW-1520 |  | Excvation up to Formation Level | 3.75d | 2024-08-18 A | 2024-08-21 A | CP09-TR4-SW-1370 SS | 100% |  |
| CP09-TR4-SW-1530 |  | Plain Concret for For Raft | 2.81d | 2024-11-02 A | 2024-11-04 A | CP09-TR4-SW-1520, CP09-EN-TR4-A-1380 | 100% |  |
| CP09-TR4-SW-1540 |  | Water Proofing with screed | 1.88d | 2024-11-05 A | 2024-11-06 A | CP09-TR4-SW-1530, CP09-EN-TR4-A-1400, CP09-PR-CV-DY-1010 | 100% |  |
| CP09-TR4-SW-1550 |  | Reinforcement concrete for Raft | 5.62d | 2024-11-07 A | 2025-04-02 A | CP09-TR4-SW-1540, CP09-EN-TR4-A-1380, CP09-EN-TR4-A-1390 | 100% |  |
| CP09-TR4-SW-1570 |  | Reinforcement Concrete for Walls & Columns | 9.38d | 2025-05-11 A | 2025-06-20 A | CP09-TR4-SW-1560 | 100% |  |
| CP09-TR4-SW-1560 |  | Water Proofing for Raft with screed | 3.75d | 2025-09-30 A | 2025-12-12 A | CP09-TR4-SW-1550 | 100% |  |
| CP09-TR4-SW-1580 |  | Reinforcement Concrete for Slab | 11.25d | 2025-10-13 A | 2025-10-17 A | CP09-TR4-SW-1570 | 100% |  |
| CP09-TR4-SW-1590 |  | External Waterproofing with Protection | 5d | 2026-01-12 A | 2026-02-06 A | CP09-TR4-SW-1580 | 100% |  |
| CP09-TR4-SW-1690 |  | Plaster for Internal Walls | 6d | 2026-02-02 A | 2026-02-06 A | CP09-TR4-SW-1590, CP09-EN-TR4-A-1740, CP09-PR-CV-DY-1070 | 100% |  |
| CP09-TR4-SW-1700 |  | Emulsion Paint for Internal Wall | 6d | 2026-02-02 A | 2026-02-06 A | CP09-TR4-SW-1690, CP09-TR4-SW-1640, CP09-PR-CV-DY-1080 | 100% |  |

| ID | WBS | Task | Duration | Start | Finish | Predecessors | Complete | Total float |
| --- | --- | --- | --- | --- | --- | --- | --- | --- |
| CP09-TR4-SW-1710 |  | Epoxy for flooring | 3d | 2026-02-16 A | 2026-05-26 | CP09-TR4-SW-1700, CP09-TR4-SW-1720, CP09-TR4-SW-1610, CP09-TR4-SW-1630, CP09-TR4-SW-1670, CP09-TR4-SW-1680, CP09-PR-CV-DY-1110 | 80% | -122d |
| CP09-TR4-SW-1600 |  | Backfilling | 5d | 2026-04-24 A | 2026-04-28 A | CP09-TR4-SW-1590 | 100% |  |
| CP09-TR4-SW-1720 |  | Metal Works | 5d | 2026-05-24 | 2026-05-28 | CP09-TR4-SW-1700 |  | -101d |
| CP09-TR4-SW-1610 |  | Drainage Gravel including Geotextile & Geocomposit | 3.75d | 2026-06-10 | 2026-06-14 | CP09-TR4-SW-1700, CP09-PR-CV-DY-1090, CP09-PR-CV-DY-1100 |  | -114.75d |
|  | 2 | **MEP Works for Swimmimg Pool & Machine Room** |  | 2025-09-30 | 2026-07-06 |  |  |  |
|  | 1 | **Mechnical Works** |  | 2025-09-30 | 2026-06-21 |  |  |  |
| CP09-TR4-SW-1620 |  | UPVC pipes, fitting, valves, | 10d | 2025-09-30 A | 2026-06-03 | CP09-TR4-SW-1690, CP09-EN-TR4-A-1450, CP09-PR-ME-DY-1000, CP09-PR-ME-DY-1010 | 60% | -144d |
| CP09-TR4-SW-1630 |  | Mechnical Equipment (Valves, Pumps, Filtters, Controllers ,Dosinng,& Ventilation exahust fan) | 15d | 2026-06-04 | 2026-06-21 | CP09-TR4-SW-1700, CP09-TR4-SW-1620, CP09-EN-TR4-A-1450, CP09-PR-ME-DY-1020, CP09-PR-ME-DY-1030, CP09-PR-ME-DY-1040, CP09-PR-ME-DY-1050, CP09-PR-ME-DY-1060, CP09-PR-ME-DY-1070, CP09-PR-ME-DY-1080 |  | -144d |
|  | 2 | **Electrical Works-SW** |  | 2026-06-10 | 2026-07-06 |  |  |  |
| CP09-TR4-SW-1640 |  | Conduits, Cable tray | 5d | 2026-06-10 | 2026-06-16 | CP09-TR4-SW-1690, CP09-EN-TR4-A-1460, CP09-PR-EL-DY-1000, CP09-PR-EL-DY-1010 |  | -156.06d |
| CP09-TR4-SW-1650 |  | Panel boards | 5d | 2026-06-16 | 2026-06-22 | CP09-TR4-SW-1640, CP09-TR4-SW-1700, CP09-EN-TR4-A-1460, CP09-PR-EL-DY-1020 |  | -156.06d |
| CP09-TR4-SW-1660 |  | Power Cables & Wires | 5d | 2026-06-22 | 2026-06-28 | CP09-TR4-SW-1650, CP09-TR4-SW-1640, CP09-EN-TR4-A-1460, CP09-PR-EL-DY-1030 |  | -156.06d |
| CP09-TR4-SW-1680 |  | Earthing System | 5d | 2026-06-22 | 2026-06-28 | CP09-TR4-SW-1660 SS, CP09-PR-EL-DY-1040 |  | -126.06d |
| CP09-TR4-SW-1670 |  | (Lighting Outlets , Switches, Fixture ) | 7d | 2026-06-28 | 2026-07-06 | CP09-TR4-SW-1640, CP09-TR4-SW-1660, CP09-TR4-SW-1650, CP09-PR-EL-DY-1050, CP09-PR-EL-DY-1140 |  | -156.06d |
|  | 6 | **Earth Work** |  | 2025-09-24 | 2026-02-26 |  |  |  |
|  | 1 | **Grading works** |  | 2025-09-24 | 2026-02-26 |  |  |  |
| CP09-TR4-EW-1030 |  | Excavation work to Reduce Level | 6d | 2025-09-24 A | 2026-02-26 A | CP09-TR4-SW-1520 SS, CP09-EN-TR4-A-1470, CP09-CLD-1000 | 100% |  |
| CP09-TR4-EW-1040 |  | Filling works to make up levels with Compacting | 6d | 2025-09-30 A | 2026-02-26 A | CP09-TR4-SW-1520, CP09-TR4-EW-1030 SS+4.69d, CP09-EN-TR4-A-1470 | 100% |  |
|  | 2 | **Planting** |  | 2025-09-30 | 2026-02-26 |  |  |  |
| CP09-TR4-EW-1050 |  | Excavation works for Planting Beds | 6d | 2025-09-30 A | 2026-02-26 A | CP09-TR4-EW-1030 SS, CP09-TR4-EW-1040 SS, CP09-EN-TR4-A-1470 | 100% |  |
|  | 9 | **Retaining & Cheek Walls** |  | 2025-09-24 | 2026-06-23 |  |  |  |
|  | 1 | **Soild Block Work Cheek Walls** |  | 2026-02-16 | 2026-06-23 |  |  |  |
| CP09-TR4-RW-1230 |  | Plaing Concrete with HPDE | 4.69d | 2026-02-16 A | 2026-04-10 A | CP09-TR4-RW-1280 SS+2.81d, CP09-TR4-RW-1280 FF+2.81d, CP09-EN-TR4-A-1480 | 100% |  |
| CP09-TR4-RW-1240 |  | Reinforced Concrete for Footing | 6.56d | 2026-02-16 A | 2026-04-10 A | CP09-TR4-RW-1230 SS+2.81d, CP09-TR4-RW-1230 FF+2.81d, CP09-EN-TR4-A-1490, CP09-EN-TR4-A-1480 | 100% |  |
| CP09-TR4-RW-1250 |  | Reinforced Concrete for Tie beam | 4.69d | 2026-02-22 A | 2026-04-10 A | CP09-TR4-RW-1240 SS+2.81d, CP09-TR4-RW-1240 FF+2.81d | 100% |  |
| CP09-TR4-RW-1260 |  | Reinforced Concrete for Column | 5.62d | 2026-02-22 A | 2026-04-10 A | CP09-TR4-RW-1250 SS+2.81d, CP09-TR4-RW-1250 FF+2.81d | 100% |  |
| CP09-TR4-RW-1270 |  | Soild Block Work | 5.62d | 2026-02-22 A | 2026-04-10 A | CP09-TR4-RW-1260 SS+5.62d, CP09-TR4-RW-1260 FF+5.62d, CP09-EN-TR4-A-1510, CP09-PR-CV-DY-1020 | 100% |  |
| CP09-TR4-RW-1280 |  | Excavation | 7d | 2026-02-22 A | 2026-04-10 A | CP09-TR4-EW-1030, CP09-TR4-EW-1040 | 100% |  |
| CP09-TR4-RW-1290 |  | Reinforced Concrete for beam | 7.5d | 2026-02-22 A | 2026-04-10 A | CP09-TR4-RW-1270 SS+3.75d, CP09-TR4-RW-1270 FF+3.75d | 100% |  |
| CP09-TR4-RW-1300 |  | Waterproofing & Protection | 6.56d | 2026-04-06 A | 2026-04-10 A | CP09-TR4-RW-1290 SS+7.5d, CP09-TR4-RW-1290 FF+7.5d, CP09-EN-TR4-A-1500 | 100% |  |
| CP09-TR4-RW-1310 |  | Backfilling | 5.62d | 2026-04-06 A | 2026-04-10 A | CP09-TR4-RW-1300 SS+2.81d, CP09-TR4-RW-1300 FF+2.81d | 100% |  |
| CP09-TR4-RW-1320 |  | Marble Cladding | 10d | 2026-06-07 | 2026-06-17 | CP09-TR4-RW-1310 SS+5.62d, CP09-TR4-RW-1310 FF+5.62d, CP09-EN-TR4-A-1520, CP09-PR-CV-DY-1120 |  | -192.94d |
| CP09-TR4-RW-1330 |  | Marble Copping | 10d | 2026-06-11 | 2026-06-23 | CP09-TR4-RW-1320 SS+4.69d, CP09-TR4-RW-1320 FF+4.69d, CP09-EN-TR4-A-1520, CP09-PR-CV-DY-1120 |  | -192.94d |
|  | 2 | **Solid Block Retaining Walls** |  | 2025-09-24 | 2026-06-23 |  |  |  |
| CP09-TR4-RW-1350 |  | Reinforced Concrete for Footing | 6d | 2025-09-24 A | 2026-01-09 A | CP09-TR4-RW-1340 SS+2.81d, CP09-TR4-RW-1340 FF+2.81d, CP09-EN-TR4-A-1480, CP09-EN-TR4-A-1490 | 100% |  |
| CP09-TR4-RW-1340 |  | Plaing Concrete with HPDE | 5d | 2025-09-30 A | 2025-10-04 A | CP09-TR4-RW-1390 SS+2.81d, CP09-TR4-RW-1390 FF+2.81d, CP09-EN-TR4-A-1480 | 100% |  |
| CP09-TR4-RW-1360 |  | Reinforced Concrete for Tie beam | 5d | 2025-09-30 A | 2026-01-09 A | CP09-TR4-RW-1350 SS+2.81d, CP09-TR4-RW-1350 FF+2.81d | 100% |  |
| CP09-TR4-RW-1370 |  | Reinforced Concrete for Column | 5.62d | 2025-09-30 A | 2026-01-09 A | CP09-TR4-RW-1360 SS+2.81d, CP09-TR4-RW-1360 FF+2.81d | 100% |  |
| CP09-TR4-RW-1380 |  | Soild Block Work | 5.62d | 2025-09-30 A | 2025-10-04 A | CP09-TR4-RW-1370 SS+5.62d, CP09-TR4-RW-1370 FF+5.62d, CP09-EN-TR4-A-1510 | 100% |  |
| CP09-TR4-RW-1390 |  | Excavation | 3.75d | 2025-09-30 A | 2025-10-17 A | CP09-TR4-RW-1280, CP09-TR4-EW-1030, CP09-TR4-EW-1040 | 100% |  |
| CP09-TR4-RW-1400 |  | Reinforced Concrete for Beam | 7d | 2025-09-30 A | 2026-01-09 A | CP09-TR4-RW-1380 SS+3.75d, CP09-TR4-RW-1380 FF+3.75d | 100% |  |
| CP09-TR4-RW-1410 |  | Waterproofing & Protection | 6.56d | 2026-02-16 A | 2026-04-10 A | CP09-TR4-RW-1400 SS+7.5d, CP09-TR4-RW-1400 FF+7.5d | 100% |  |
| CP09-TR4-RW-1420 |  | Backfilling | 5.62d | 2026-04-06 A | 2026-04-10 A | CP09-TR4-RW-1410 SS+2.81d, CP09-TR4-RW-1410 FF+2.81d | 100% |  |
| CP09-TR4-RW-1430 |  | Marble Cladding | 10d | 2026-06-07 | 2026-06-17 | CP09-TR4-RW-1420 SS+4.69d, CP09-TR4-RW-1420 FF+4.69d, CP09-EN-TR4-A-1520, CP09-PR-CV-DY-1120 |  | -192.94d |
| CP09-TR4-RW-1440 |  | Marble Copping | 10d | 2026-06-11 | 2026-06-23 | CP09-TR4-RW-1430 SS+4.69d, CP09-TR4-RW-1430 FF+4.69d, CP09-EN-TR4-A-1520, CP09-PR-CV-DY-1120 |  | -192.94d |
|  | 1 | **Irrigation Works** |  | 2026-02-22 | 2026-06-07 |  |  |  |
|  | 1 | **Sub-Main & Lateral** |  | 2026-02-22 | 2026-06-07 |  |  |  |
| CP09-TR4-IR-1110 |  | Excavation for Sub-main & Lateral Pieps | 4d | 2026-02-22 A | 2026-05-27 | CP09-EN-TR4-A-1710, CP09-TR4-HD-2380 | 90% | -186.75d |
| CP09-TR4-IR-1120 |  | Sub-main & Lateral Pieps laying out and installation | 5d | 2026-02-22 A | 2026-06-02 | CP09-TR4-IR-1110 SS+2d, CP09-TR4-IR-1110 FF+5d, CP09-PR-IR-DY-1000 | 90% | -186.75d |
| CP09-TR4-IR-1130 |  | Sub-main & Lateral Pieps Testing | 3d | 2026-02-22 A | 2026-06-04 | CP09-TR4-IR-1120 SS+2d, CP09-TR4-IR-1120 FF+2d | 90% | -186.75d |
| CP09-TR4-IR-1140 |  | Backfilling forSub-main & Lateral Pieps | 4d | 2026-02-22 A | 2026-06-07 | CP09-TR4-IR-1130 SS+2d, CP09-TR4-IR-1130 FF+2d | 90% | -186.75d |
|  | 2 | **Fittings & Accessories** |  | 2026-05-18 | 2026-06-06 |  |  |  |
| CP09-TR4-IR-1150 |  | Installation of Dripline | 6d | 2026-05-18 A | 2026-05-30 | CP09-TR4-IR-1130, CP09-TR4-SF-1170, CP09-PR-IR-DY-1010 | 10% | -131d |
| CP09-TR4-IR-1200 |  | Installation of Controller decoder cables | 6d | 2026-05-18 A | 2026-05-30 | CP09-TR4-IR-1190, CP09-PR-IR-DY-1070 | 40% | -128d |
| CP09-TR4-IR-1160 |  | Installation of Sprinklers | 5d | 2026-05-24 | 2026-05-28 | CP09-TR4-IR-1150 SS, CP09-PR-IR-DY-1040 |  | -131d |
| CP09-TR4-IR-1170 |  | Installation Valves & Rings | 6d | 2026-05-24 | 2026-05-30 | CP09-TR4-IR-1160 SS, CP09-PR-IR-DY-1030, CP09-PR-IR-DY-1020 |  | -131d |
| CP09-TR4-IR-1180 |  | Installation of Electrical solenoid valve | 6d | 2026-05-24 | 2026-05-30 | CP09-TR4-IR-1170 SS, CP09-PR-IR-DY-1050 |  | -131d |
| CP09-TR4-IR-1190 |  | Installation of Controller (decoder system plastic pedestal) | 6d | 2026-05-31 | 2026-06-06 | CP09-TR4-IR-1170, CP09-TR4-IR-1180, CP09-PR-IR-DY-1060 |  | -131d |
| CP09-TR4-IR-1210 |  | Installation of Decoder one station | 3d | 2026-05-31 | 2026-06-02 | CP09-TR4-IR-1200, CP09-PR-IR-DY-1080 |  | -128d |
|  | 4 | **Electrical Works** |  | 2026-02-16 | 2026-06-30 |  |  |  |
|  | 1 | **Power Cable & Pillars** |  | 2026-02-16 | 2026-06-30 |  |  |  |
| CP09-TR4-EL-1040 |  | Excavation | 5d | 2026-02-16 A | 2026-04-28 A | CP09-TR4-EW-1030, CP09-TR4-EW-1040, CP09-TR4-IR-1140, CP09-EN-TR4-A-1670 | 100% |  |
| CP09-TR4-EL-1050 |  | Installation of Power Cables | 4d | 2026-02-16 A | 2026-04-28 A | CP09-TR4-EL-1040 SS+2d, CP09-TR4-EL-1040 FF+2d, CP09-EN-TR4-A-1670, CP09-EN-TR4-A-1680, CP09-PR-EL-DY-1060 | 100% |  |
| CP09-TR4-EL-1060 |  | Backfilling for Power Cables | 4d | 2026-02-22 A | 2026-04-28 A | CP09-TR4-EL-1050 SS+2d, CP09-TR4-EL-1050 FF+2d | 100% |  |
| CP09-TR4-EL-1070 |  | Installation of Connecting Pillars | 3d | 2026-06-28 | 2026-06-30 | CP09-TR4-HD-2130, CP09-PR-EL-DY-1070 |  | -152d |
|  | 3 | **Hardscape** |  | 2026-01-05 | 2026-07-07 |  |  |  |
|  | 6 | **Concrete Curb** |  | 2026-01-05 | 2026-05-26 |  |  |  |
| CP09-TR4-HD-2080 |  | Excavation | 2d | 2026-01-05 A | 2026-01-29 A | CP09-TR4-EW-1030, CP09-TR4-EW-1040, CP09-TR4-EW-1050 | 100% |  |
| CP09-TR4-HD-2090 |  | Plains Concrete with HDPE waterproofing | 2d | 2026-01-05 A | 2026-01-29 A | CP09-TR4-HD-2080, CP09-EN-TR4-A-1600 | 100% |  |
| CP09-TR4-HD-2360 |  | Under Paving Reinforced Concrete Curb | 4d | 2026-01-05 A | 2026-01-29 A | CP09-TR4-HD-2090 SS+1.88d, CP09-TR4-HD-2090 FF+1.88d | 100% |  |

| ID | WBS | Task | Duration | Start | Finish | Predecessors | Complete | Total float |
| --- | --- | --- | --- | --- | --- | --- | --- | --- |
| CP09-TR4-HD-2380 |  | Instal Flush Curb | 3d | 2026-05-24 | 2026-05-26 | CP09-EN-TR4-A-1600, CP09-PR-HD-DY-1080, CP09-TR4-HD-2360 SS+3d, CP09-TR4-HD-2360 FF+3d |  | -207.44d |
|  | 1 | **Side wake & Plazes** |  | 2026-01-12 | 2026-06-29 |  |  |  |
|  | 8 | **Interlocking Paving** |  | 2026-01-12 | 2026-02-20 |  |  |  |
| CP09-TR4-HD-2100 |  | Crush Stone for Interlock Types IL-(01,02,06,07) | 6.56d | 2026-01-12 A | 2026-02-20 A | CP09-EN-TR4-A-1610, CP09-TR4-EW-1030, CP09-TR4-EW-1040, CP09-TR4-IR-1140, CP09-TR4-EL-1060, CP09-PR-HD-DY-1090 | 100% |  |
| CP09-TR4-HD-2110 |  | Sand Layer for Interlock Types IL-(01,02,06,07) | 5.62d | 2026-01-12 A | 2026-02-20 A | CP09-TR4-HD-2100 SS+2.81d, CP09-TR4-HD-2100 FF+2.81d, CP09-EN-TR4-A-1610 | 100% |  |
| CP09-TR4-HD-2120 |  | Motar Bed Interlock Types IL-(03,04,08,09,10) | 5.62d | 2026-01-12 A | 2026-02-20 A | CP09-TR4-HD-2110 SS, CP09-EN-TR4-A-1610 | 100% |  |
| CP09-TR4-HD-2130 |  | Interlocking Paving | 7.5d | 2026-01-12 A | 2026-02-20 A | CP09-TR4-HD-2110 SS+2.81d, CP09-TR4-HD-2120 SS+2.81d, CP09-TR4-HD-2110 FF+2.81d, CP09-TR4-HD-2120 FF+2.81d, CP09-EN-TR4-A-1610, CP09-PR-HD-DY-1180 | 100% |  |
|  | 2 | **Concrete in Situ** |  | 2026-02-16 | 2026-06-03 |  |  |  |
|  | 1 | **Slab on Garde** |  | 2026-02-16 | 2026-05-30 |  |  |  |
| CP09-TR4-HD-1870 |  | Plain Concrete with HDPE | 3.75d | 2026-02-16 A | 2026-05-27 | CP09-TR4-EW-1030, CP09-TR4-EW-1040, CP09-TR4-IR-1140, CP09-TR4-EL-1060, CP09-EN-TR4-A-1530 | 80% | -99.75d |
| CP09-TR4-HD-1880 |  | Reinfored Concrete slab on grade | 5.62d | 2026-04-06 A | 2026-05-30 | CP09-TR4-HD-1870 | 80% | -101.62d |
| CP09-TR4-HD-1890 |  | Waterproofing & Screed | 3.75d | 2026-04-06 A | 2026-05-27 | CP09-TR4-HD-1880 | 80% | -99.75d |
|  | 2 | **Concrete In-situ w./Exposed Aggregate Finish** |  | 2026-04-13 | 2026-06-03 |  |  |  |
| CP09-TR4-HD-1900 |  | Concrete casting (including Joints & Wire Mish) | 9.38d | 2026-04-13 A | 2026-06-03 | CP09-TR4-HD-1890, CP09-TR4-HD-2380, CP09-EN-TR4-A-1530, CP09-PR-HD-DY-1000 | 80% | -105.38d |
| CP09-TR4-HD-1910 |  | Finishing Concrete Surface | 5d | 2026-04-13 A | 2026-05-28 | CP09-TR4-HD-1900, CP09-TR4-RW-1320, CP09-TR4-RW-1330, CP09-TR4-RW-1430, CP09-TR4-RW-1440 | 80% | -163.75d |
|  | 1 | **Marble Paving** |  | 2026-04-20 | 2026-04-28 |  |  |  |
|  | 1 | **Slab on Garde** |  | 2026-04-20 | 2026-04-28 |  |  |  |
| CP09-TR4-HD-1820 |  | Plain Concrete with HDPE | 3.75d | 2026-04-20 A | 2026-04-28 A | CP09-TR4-EW-1030, CP09-TR4-EW-1050, CP09-TR4-IR-1140, CP09-TR4-EL-1060, CP09-EN-TR4-A-1540 | 100% |  |
| CP09-TR4-HD-1830 |  | Reinfored Concrete slab on grade | 5.62d | 2026-04-20 A | 2026-04-28 A | CP09-TR4-HD-1820 | 100% |  |
| CP09-TR4-HD-1840 |  | Waterproofing & Screed | 5d | 2026-04-20 A | 2026-04-28 A | CP09-TR4-HD-1830 | 100% |  |
|  | 2 | **Marble Tiles** |  | 2026-04-20 | 2026-04-28 |  |  |  |
| CP09-TR4-HD-1850 |  | Marble Fixiation | 7d | 2026-04-20 A | 2026-04-28 A | CP09-TR4-HD-1840, CP09-TR4-HD-2380, CP09-EN-TR4-A-1540, CP09-PR-HD-DY-1010 | 100% |  |
| CP09-TR4-HD-1860 |  | Marble Surfcae Finishing | 4d | 2026-04-20 A | 2026-04-28 A | CP09-TR4-HD-1850, CP09-TR4-HD-1910 SS | 100% |  |
|  | 3 | **Wooden Floor Boards** |  | 2026-04-24 | 2026-06-08 |  |  |  |
|  | 1 | **Slab on Garde** |  | 2026-04-24 | 2026-05-15 |  |  |  |
| CP09-TR4-HD-1920 |  | Plain Concrete with HDPE | 2.81d | 2026-04-24 A | 2026-04-28 A | CP09-TR4-HD-1830, CP09-TR4-EW-1030, CP09-TR4-EW-1040, CP09-TR4-IR-1140, CP09-TR4-EL-1060, CP09-EN-TR4-A-1550 | 100% |  |
| CP09-TR4-HD-1930 |  | Reinfored Concrete slab on grade | 5d | 2026-04-24 A | 2026-05-15 A | CP09-TR4-HD-1920 | 100% |  |
| CP09-TR4-HD-1940 |  | Waterproofing & Screed | 2.81d | 2026-04-24 A | 2026-04-28 A | CP09-TR4-HD-1930 | 100% |  |
|  | 2 | **Wood- Plastic Composit** |  | 2026-05-27 | 2026-06-08 |  |  |  |
| CP09-TR4-HD-1950 |  | WPC Installation | 6.56d | 2026-05-27 | 2026-06-03 | CP09-TR4-HD-1940, CP09-TR4-HD-2380, CP09-EN-TR4-A-1550, CP09-PR-HD-DY-1020 |  | -168.31d |
| CP09-TR4-HD-1960 |  | WPC surface finishing & Accessories | 3.75d | 2026-06-03 | 2026-06-08 | CP09-TR4-HD-1950, CP09-TR4-HD-1860, CP09-TR4-HD-1910 |  | -168.31d |
|  | 4 | **Gravel layer** |  | 2026-06-08 | 2026-06-22 |  |  |  |
|  | 1 | **Slab on Garde** |  | 2026-06-08 | 2026-06-14 |  |  |  |
| CP09-TR4-HD-1970 |  | Plain Concrete with HDPE | 2.81d | 2026-06-08 | 2026-06-10 | CP09-TR4-HD-1920, CP09-TR4-EW-1030, CP09-TR4-EW-1040, CP09-TR4-IR-1140, CP09-TR4-EL-1060, CP09-EN-TR4-A-1560 |  | -186.75d |
| CP09-TR4-HD-1990 |  | Mortar bed | 2.81d | 2026-06-10 | 2026-06-14 | CP09-TR4-HD-1970 |  | -186.75d |
|  | 2 | **Gravel Layer, w./Earth Colors** |  | 2026-06-14 | 2026-06-22 |  |  |  |
| CP09-TR4-HD-2000 |  | Furnish & install Garvel Layer | 6.56d | 2026-06-14 | 2026-06-22 | CP09-TR4-HD-1990, CP09-TR4-HD-2380, CP09-EN-TR4-A-1560, CP09-PR-HD-DY-1030 |  | -186.75d |
|  | 5 | **Crushed Stone** |  | 2026-06-08 | 2026-06-29 |  |  |  |
|  | 1 | **Slab on Garde** |  | 2026-06-08 | 2026-06-21 |  |  |  |
| CP09-TR4-HD-2010 |  | Geotextile membrane | 5d | 2026-06-08 | 2026-06-13 | CP09-TR4-HD-1920, CP09-TR4-EW-1030, CP09-TR4-EW-1040, CP09-TR4-IR-1140, CP09-TR4-EL-1060, CP09-EN-TR4-A-1570 |  | -180d |
| CP09-TR4-HD-2030 |  | Gravel fix sheets | 7d | 2026-06-14 | 2026-06-21 | CP09-TR4-HD-2010 |  | -180d |
|  | 2 | **Crushed Dolomite Stone** |  | 2026-06-22 | 2026-06-29 |  |  |  |
| CP09-TR4-HD-2040 |  | Furnish & Install Crushed Dolomite stone , w./ mixed colors | 6.56d | 2026-06-22 | 2026-06-29 | CP09-TR4-HD-2030 FF, CP09-TR4-HD-2030 SS, CP09-TR4-HD-2000, CP09-TR4-HD-2380, CP09-EN-TR4-A-1570, CP09-PR-HD-DY-1040 |  | -186.75d |
|  | 6 | **Loose Gravel** |  | 2026-06-10 | 2026-06-17 |  |  |  |
|  | 2 | **Loose Gravel 50mm** |  | 2026-06-10 | 2026-06-17 |  |  |  |
| CP09-TR4-HD-2050 |  | Furnish & Install loose gravel w./earth colors. | 6.56d | 2026-06-10 | 2026-06-17 | CP09-TR4-HD-1930, CP09-TR4-HD-2380, CP09-TR4-IR-1140, CP09-TR4-EL-1060, CP09-EN-TR4-A-1580, CP09-PR-HD-DY-1050 |  | -176.56d |
|  | 7 | **Clean Sand Layer** |  | 2026-04-24 | 2026-06-03 |  |  |  |
|  | 1 | **Kids & Fitness Area** |  | 2026-04-24 | 2026-06-03 |  |  |  |
| CP09-TR4-HD-2060 |  | Geotextile Sheets | 5d | 2026-04-24 A | 2026-05-28 | CP09-TR4-HD-1930, CP09-TR4-EW-1030, CP09-TR4-EW-1040, CP09-TR4-HD-2380, CP09-TR4-IR-1140, CP09-TR4-EL-1060, CP09-EN-TR4-A-1590 | 90% | -101d |
| CP09-TR4-HD-2070 |  | Install Clean sand layer | 9.38d | 2026-04-24 A | 2026-06-03 | CP09-TR4-HD-2060, CP09-TR4-HD-2050, CP09-TR4-HD-2380, CP09-EN-TR4-A-1590, CP09-PR-HD-DY-1070 | 90% | -150.38d |
|  | 2 | **Site Improvments** |  | 2026-04-20 | 2026-07-07 |  |  |  |
|  | 1 | **Marble Steps** |  | 2026-04-24 | 2026-06-29 |  |  |  |
| CP09-TR4-HD-2140 |  | Reinforecd Concrete Step. | 10d | 2026-04-24 A | 2026-04-28 A | CP09-TR4-RW-1310, CP09-TR4-RW-1420, CP09-TR4-EW-1030, CP09-TR4-EW-1040, CP09-EN-TR4-A-1620, CP09-TR4-IR-1140, CP09-TR4-EL-1060 | 100% |  |
| CP09-TR4-HD-2150 |  | Install Marble Blocks | 6.56d | 2026-05-24 | 2026-05-31 | CP09-TR4-HD-2140 SS+2.81d, CP09-TR4-HD-2140 FF+2.81d, CP09-PR-HD-DY-1100 |  | -167.19d |
| CP09-TR4-HD-2160 |  | Finishing Marble Surface | 5d | 2026-06-23 | 2026-06-29 | CP09-TR4-HD-2150, CP09-TR4-RW-1320, CP09-TR4-RW-1330, CP09-TR4-RW-1430, CP09-TR4-RW-1440 |  | -150.69d |
|  | 2 | **Curvelinear Block Seat** |  | 2026-04-20 | 2026-06-30 |  |  |  |
| CP09-TR4-HD-2170 |  | Excavation | 5d | 2026-04-20 A | 2026-04-28 A | CP09-TR4-EW-1030, CP09-TR4-EW-1040, CP09-EN-TR4-A-1630, CP09-TR4-EL-1060 | 100% |  |
| CP09-TR4-HD-2180 |  | Plaing Concrete with HPDE | 3.75d | 2026-04-20 A | 2026-04-28 A | CP09-TR4-HD-2170 | 100% |  |
| CP09-TR4-HD-2190 |  | Reinforced Concrete for Footing | 5.62d | 2026-04-20 A | 2026-04-28 A | CP09-TR4-HD-2180 | 100% |  |
| CP09-TR4-HD-2200 |  | Reinforced Concrete for beam | 5d | 2026-04-20 A | 2026-04-28 A | CP09-TR4-HD-2190 | 100% |  |
| CP09-TR4-HD-2210 |  | Waterproofing & Protection | 3.75d | 2026-04-20 A | 2026-04-28 A | CP09-TR4-HD-2200 | 100% |  |
| CP09-TR4-HD-2220 |  | Backfilling | 2.81d | 2026-04-20 A | 2026-04-28 A | CP09-TR4-HD-2210 | 100% |  |
| CP09-TR4-HD-2230 |  | Marble Capping | 5.62d | 2026-06-23 | 2026-06-30 | CP09-TR4-RW-1430, CP09-TR4-RW-1440, CP09-TR4-RW-1320, CP09-TR4-RW-1330, CP09-TR4-HD-2220, CP09-PR-HD-DY-1110 |  | -192.94d |
|  | 3 | **Pools Shower-02** |  | 2026-05-27 | 2026-07-07 |  |  |  |
| CP09-TR4-HD-2240 |  | Plain Concrete Basin | 2d | 2026-05-27 | 2026-05-28 | CP09-TR4-HD-2380, CP09-EN-TR4-A-1640, CP09-TR4-EL-1060 |  | -157.44d |
| CP09-TR4-HD-2250 |  | R.Concrete Basin | 3.75d | 2026-05-30 | 2026-06-02 | CP09-TR4-HD-2240 |  | -157.44d |
| CP09-TR4-HD-2260 |  | Solid Block Work | 4d | 2026-06-02 | 2026-06-07 | CP09-TR4-HD-2250 |  | -157.44d |
| CP09-TR4-HD-2270 |  | Water Proofing | 2.81d | 2026-06-07 | 2026-06-10 | CP09-TR4-HD-2260 |  | -157.44d |
| CP09-TR4-HD-2280 |  | Backfilling | 2.81d | 2026-06-10 | 2026-06-14 | CP09-TR4-HD-2270 |  | -157.44d |
| CP09-TR4-HD-2290 |  | Mica Stone Cladding | 2.81d | 2026-06-14 | 2026-06-17 | CP09-TR4-HD-2280, CP09-PR-HD-DY-1120 |  | -157.44d |

| ID | WBS | Task | Duration | Start | Finish | Predecessors | Complete | Total float |
| --- | --- | --- | --- | --- | --- | --- | --- | --- |
| CP09-TR4-HD-2300 |  | Mica Stone Capping | 1.88d | 2026-06-17 | 2026-06-20 | CP09-TR4-HD-2290, CP09-PR-HD-DY-1120 |  | -157.44d |
| CP09-TR4-HD-2310 |  | Drainage Cover with Geotextile | 2.81d | 2026-06-20 | 2026-06-22 | CP09-TR4-HD-2300, CP09-PR-HD-DY-1060 |  | -157.44d |
| CP09-TR4-HD-2320 |  | Blast stone blocks for Flooring | 3d | 2026-06-22 | 2026-06-25 | CP09-TR4-HD-2310, CP09-PR-HD-DY-1130 |  | -157.44d |
| CP09-TR4-HD-2330 |  | Blast Stone Blocks Capping | 3d | 2026-06-25 | 2026-06-29 | CP09-TR4-HD-2320, CP09-PR-HD-DY-1130 |  | -157.44d |
| CP09-TR4-HD-2340 |  | Loose Rounded Pebbles | 3.75d | 2026-06-29 | 2026-07-04 | CP09-TR4-HD-2330, CP09-PR-HD-DY-1140 |  | -157.44d |
| CP09-TR4-HD-2350 |  | Shower Head Fixation | 2.81d | 2026-07-04 | 2026-07-07 | CP09-TR4-HD-2340, CP09-TR4-HD-2320, CP09-TR4-HD-2330, CP09-PR-HD-DY-1150 |  | -157.44d |
|  | 4 | **Handrails** |  | 2026-06-30 | 2026-07-06 |  |  |  |
| CP09-TR4-HD-2390 |  | Install & Fix Stainless Handrail (500 mm height) | 5.62d | 2026-06-30 | 2026-07-06 | CP09-TR4-HD-2150, CP09-TR4-HD-2230, CP09-EN-TR4-A-1650, CP09-PR-HD-DY-1160 |  | -192.94d |
| CP09-TR4-HD-2400 |  | Install & Fix Glass Handrail (900mm height) | 5.62d | 2026-06-30 | 2026-07-06 | CP09-TR4-HD-2150, CP09-TR4-HD-2230, CP09-EN-TR4-A-1650, CP09-PR-HD-DY-1170 |  | -192.94d |
|  | 7 | **Sinage** |  | 2026-03-02 | 2026-06-03 |  |  |  |
| CP09-TR4-SN-2520 |  | Excavation | 10d | 2026-03-02 A | 2026-04-28 A | CP09-TR4-HD-2130, CP09-EN-TR4-A-1690 | 100% |  |
| CP09-TR4-SN-2530 |  | Plain Concrete with HDPE | 7d | 2026-03-02 A | 2026-04-28 A | CP09-TR4-SN-2520 SS+2d, CP09-TR4-SN-2520 FF+2d | 100% |  |
| CP09-TR4-SN-2540 |  | Reinforced Concrete | 12d | 2026-03-02 A | 2026-04-28 A | CP09-TR4-SN-2530 SS+2d, CP09-TR4-SN-2530 FF+2d | 100% |  |
| CP09-TR4-SN-2550 |  | Waterproofing | 6d | 2026-03-02 A | 2026-04-28 A | CP09-TR4-SN-2540 SS+3d, CP09-TR4-SN-2540 FF+3d | 100% |  |
| CP09-TR4-SN-2560 |  | Grouting | 5d | 2026-03-02 A | 2026-04-28 A | CP09-TR4-SN-2550 SS+2d, CP09-TR4-SN-2550 FF+2d | 100% |  |
| CP09-TR4-SN-2570 |  | STREET DIRECTIONAL SIGN | 7d | 2026-03-02 A | 2026-04-28 A | CP09-TR4-SN-2560, CP09-PR-SN-DY-1000 | 100% |  |
| CP09-TR4-SN-2580 |  | DIRECTIONAL SIGN FOR VEHICULAR | 7d | 2026-03-02 A | 2026-04-28 A | CP09-TR4-SN-2560, CP09-PR-SN-DY-1010 | 100% |  |
| CP09-TR4-SN-2610 |  | RULES SIGN | 6d | 2026-03-02 A | 2026-04-28 A | CP09-TR4-SN-2560, CP09-PR-SN-DY-1030 | 100% |  |
| CP09-TR4-SN-2620 |  | IDENTIFICATION SIGN | 10d | 2026-03-02 A | 2026-04-28 A | CP09-TR4-SN-2570, CP09-TR4-SN-2580, CP09-TR4-SN-2610, CP09-TR4-SN-2560, CP09-PR-SN-DY-1040 | 100% |  |
| CP09-TR4-SN-2590 |  | UNIT ID SIGN (FRONT YARD) | 10d | 2026-05-24 | 2026-06-03 | CP09-TR4-SN-2570, CP09-TR4-SN-2580, CP09-TR4-SN-2610, CP09-TR4-SN-2560, CP09-PR-SN-DY-1020 |  | -129d |
| CP09-TR4-SN-2600 |  | UNIT ID SIGN (BACK YARD) | 10d | 2026-05-24 | 2026-06-03 | CP09-TR4-SN-2570, CP09-TR4-SN-2580, CP09-TR4-SN-2610, CP09-TR4-SN-2560, CP09-PR-SN-DY-1020 |  | -129d |
|  | 5 | **Landscape Furntiure** |  | 2026-07-06 | 2026-07-23 |  |  |  |
| CP09-TR4-FN-2410 |  | Install & Fix Pitch Pine Picnic Table | 15d | 2026-07-06 | 2026-07-23 | CP09-TR4-HD-2390, CP09-TR4-HD-2400, CP09-TR4-HD-2130, CP09-TR4-HD-2050, CP09-TR4-HD-2040, CP09-TR4-HD-2000, CP09-TR4-HD-1960, CP09-TR4-HD-1860, CP09-TR4-HD-1910, CP09-EN-TR4-A-1660, CP09-PR-FN-DY-1000 |  | -171.94d |
| CP09-TR4-FN-2420 |  | Install & Fix Crcular Cast-iron tree grate | 15d | 2026-07-06 | 2026-07-23 | CP09-TR4-HD-2390, CP09-TR4-HD-2400, CP09-TR4-HD-2130, CP09-TR4-HD-2050, CP09-TR4-HD-2040, CP09-TR4-HD-2000, CP09-TR4-HD-1960, CP09-TR4-HD-1860, CP09-TR4-HD-1910, CP09-EN-TR4-A-1660, CP09-PR-FN-DY-1010 |  | -171.94d |
| CP09-TR4-FN-2430 |  | Install & Fix Aluminium Cabana for Pool Shading | 10d | 2026-07-06 | 2026-07-18 | CP09-TR4-HD-2390, CP09-TR4-HD-2400, CP09-TR4-HD-2130, CP09-TR4-HD-2050, CP09-TR4-HD-2040, CP09-TR4-HD-2000, CP09-TR4-HD-1960, CP09-TR4-HD-1860, CP09-TR4-HD-1910, CP09-EN-TR4-A-1660, CP09-PR-FN-DY-1020 |  | -170.94d |
| CP09-TR4-FN-2440 |  | Install & Fix Pitch Pine Benchs | 15d | 2026-07-06 | 2026-07-23 | CP09-TR4-HD-2390, CP09-TR4-HD-2400, CP09-TR4-HD-2130, CP09-TR4-HD-2050, CP09-TR4-HD-2040, CP09-TR4-HD-2000, CP09-TR4-HD-1960, CP09-TR4-HD-1860, CP09-TR4-HD-1910, CP09-EN-TR4-A-1660, CP09-PR-FN-DY-1030 |  | -171.94d |
| CP09-TR4-FN-2450 |  | Install & Fix Polyester Hammocks | 15d | 2026-07-06 | 2026-07-23 | CP09-TR4-HD-2390, CP09-TR4-HD-2400, CP09-TR4-HD-2130, CP09-TR4-HD-2050, CP09-TR4-HD-2040, CP09-TR4-HD-2000, CP09-TR4-HD-1960, CP09-TR4-HD-1860, CP09-TR4-HD-1910, CP09-EN-TR4-A-1660, CP09-PR-FN-DY-1040 |  | -171.94d |
| CP09-TR4-FN-2460 |  | Install & Fix Adult Play Swing | 15d | 2026-07-06 | 2026-07-23 | CP09-TR4-HD-2390, CP09-TR4-HD-2400, CP09-TR4-HD-2130, CP09-TR4-HD-2050, CP09-TR4-HD-2040, CP09-TR4-HD-2000, CP09-TR4-HD-1960, CP09-TR4-HD-1860, CP09-TR4-HD-1910, CP09-EN-TR4-A-1660, CP09-PR-FN-DY-1050 |  | -171.94d |
| CP09-TR4-FN-2470 |  | Install & Fix Aluminum Trash Bin | 15d | 2026-07-06 | 2026-07-23 | CP09-TR4-HD-2390, CP09-TR4-HD-2400, CP09-TR4-HD-2130, CP09-TR4-HD-2050, CP09-TR4-HD-2040, CP09-TR4-HD-2000, CP09-TR4-HD-1960, CP09-TR4-HD-1860, CP09-TR4-HD-1910, CP09-EN-TR4-A-1660, CP09-PR-FN-DY-1060 |  | -192.94d |
| CP09-TR4-FN-2480 |  | Install & Fix tensile Teflon Tent | 15d | 2026-07-06 | 2026-07-23 | CP09-TR4-HD-2390, CP09-TR4-HD-2400, CP09-TR4-HD-2130, CP09-TR4-HD-2050, CP09-TR4-HD-2040, CP09-TR4-HD-2000, CP09-TR4-HD-1960, CP09-TR4-HD-1860, CP09-TR4-HD-1910, CP09-EN-TR4-A-1660, CP09-PR-FN-DY-1070 |  | -171.94d |
| CP09-TR4-FN-2490 |  | Lanscape Edging ( Rubber) | 12d | 2026-07-06 | 2026-07-20 | CP09-TR4-HD-2390, CP09-TR4-HD-2400, CP09-TR4-HD-2130, CP09-TR4-HD-2050, CP09-TR4-HD-2040, CP09-TR4-HD-2000, CP09-TR4-HD-1960, CP09-TR4-HD-1860, CP09-TR4-HD-1910, CP09-EN-TR4-A-1660, CP09-PR-FN-DY-1080 |  | -168.94d |
|  | 10 | **Play Field Equipment** |  | 2026-07-23 | 2026-08-17 |  |  |  |
| CP09-TR4-PE-2500 |  | Fitness areas equipment | 21d | 2026-07-23 | 2026-08-17 | CP09-TR4-FN-2470, CP09-TR4-HD-2070, CP09-EN-TR4-A-1700, CP09-PR-PE-DY-1000, CP09-PR-PE-DY-1010, CP09-PR-PE-DY-1020, CP09-PR-PE-DY-1030 |  | -192.94d |
| CP09-TR4-PE-2510 |  | Kids playground equipment | 21d | 2026-07-23 | 2026-08-17 | CP09-TR4-FN-2470, CP09-TR4-HD-2070, CP09-PR-PE-DY-1040, CP09-PR-PE-DY-1050, CP09-PR-PE-DY-1060, CP09-PR-PE-DY-1070, CP09-PR-PE-DY-1080, CP09-PR-PE-DY-1090, CP09-PR-PE-DY-1100 |  | -192.94d |
|  | 11 | **Lighting for Softscape** |  | 2026-05-24 | 2026-07-25 |  |  |  |
|  | 1 | **Exterior Lighting** |  | 2026-05-24 | 2026-07-25 |  |  |  |
| CP09-TR4-SF-1250 |  | Install Landscape Lighting Pole | 21d | 2026-05-24 | 2026-06-16 | CP09-TR4-HD-2130, CP09-TR4-EL-1050, CP09-EN-TR4-A-1730, CP09-PR-EL-DY-1080 |  | -162d |
| CP09-TR4-SF-1290 |  | Install Projectors for Trees | 4d | 2026-06-28 | 2026-07-01 | CP09-TR4-SF-1180, CP09-TR4-SF-1190, CP09-TR4-SF-1200, CP09-TR4-SF-1210, CP09-TR4-SF-1220, CP09-TR4-SF-1230, CP09-TR4-SF-1240, CP09-EN-TR4-A-1730, CP09-PR-EL-DY-1130 |  | -155d |
| CP09-TR4-SF-1260 |  | Install Bollard for Walkways | 10d | 2026-06-29 | 2026-07-11 | CP09-TR4-EL-1050, CP09-TR4-HD-2130, CP09-TR4-HD-1910, CP09-TR4-HD-1860, CP09-TR4-HD-1960, CP09-TR4-HD-2000, CP09-TR4-HD-2040, CP09-TR4-HD-2050, CP09-TR4-HD-2070, CP09-EN-TR4-A-1730, CP09-PR-EL-DY-1090, CP09-TR4-SF-1250 |  | -172.75d |
| CP09-TR4-SF-1280 |  | Install Inground Uplight For Palms | 6d | 2026-06-29 | 2026-07-06 | CP09-TR4-SF-1290 SS, CP09-TR4-SF-1260 SS, CP09-EN-TR4-A-1730, CP09-PR-EL-DY-1120 |  | -156.75d |
| CP09-TR4-SF-1270 |  | Install Diffused Wall Recessed Step | 12d | 2026-07-11 | 2026-07-25 | CP09-TR4-SF-1260, CP09-EN-TR4-A-1730, CP09-PR-EL-DY-1110 |  | -172.75d |
| CP09-TR4-SF-1300 |  | Install Surface Mountaed Down Light for Pool Cabans | 4d | 2026-07-18 | 2026-07-22 | CP09-TR4-FN-2430, CP09-EN-TR4-A-1730, CP09-PR-EL-DY-1100 |  | -170.94d |
|  | 2 | **Outlet Lighting Fixtures** |  | 2026-07-11 | 2026-07-16 |  |  |  |
| CP09-TR4-SF-1310 |  | Install outlet lighting fixtures | 5d | 2026-07-11 | 2026-07-16 | CP09-TR4-SF-1260, CP09-EN-TR4-A-1730, CP09-PR-EL-DY-1150 |  | -165.75d |
|  | 2 | **Softscape** |  | 2025-09-24 | 2026-06-08 |  |  |  |
|  | 1 | **Planting** |  | 2025-09-24 | 2026-06-08 |  |  |  |
| CP09-TR4-SF-1160 |  | Sweet sand for all plants | 12d | 2025-09-24 A | 2026-06-06 | CP09-TR4-EW-1050, CP09-TR4-HD-2380, CP09-TR4-HD-2130, CP09-EN-TR4-A-1720, CP09-PR-PN-DY-1000 | 90% | -131d |
| CP09-TR4-SF-1170 |  | Organic Manure | 10d | 2026-02-22 A | 2026-06-03 | CP09-TR4-SF-1160 SS+5d, CP09-EN-TR4-A-1720, CP09-PR-PN-DY-1010 | 90% | -106d |
| CP09-TR4-SF-1180 |  | Large Trees | 11d | 2026-04-13 A | 2026-06-04 | CP09-TR4-IR-1150, CP09-TR4-IR-1160, CP09-TR4-IR-1170, CP09-TR4-IR-1180, CP09-TR4-IR-1190, CP09-TR4-IR-1200, CP09-TR4-IR-1210, CP09-TR4-SF-1170, CP09-TR4-SF-1160, CP09-PR-PN-DY-1020 | 60% | -139d |
| CP09-TR4-SF-1190 |  | Shrubs | 10d | 2026-04-24 A | 2026-06-08 | CP09-TR4-SF-1170, CP09-TR4-SF-1160, CP09-TR4-SF-1180 SS+3d, CP09-TR4-SF-1180 FF+3d, CP09-PR-PN-DY-1060 | 50% | -139d |
| CP09-TR4-SF-1200 |  | Ground Covers | 10d | 2026-04-24 A | 2026-06-08 | CP09-TR4-SF-1170, CP09-TR4-SF-1160, CP09-TR4-SF-1180 SS+3d, CP09-TR4-SF-1180 FF+3d, CP09-PR-PN-DY-1070 | 50% | -139d |
| CP09-TR4-SF-1210 |  | Succulents | 10d | 2026-04-24 A | 2026-06-08 | CP09-TR4-SF-1170, CP09-TR4-SF-1160, CP09-TR4-SF-1180 SS+3d, CP09-TR4-SF-1180 FF+3d, CP09-PR-PN-DY-1080 | 50% | -139d |
| CP09-TR4-SF-1220 |  | Vines & Climbers | 10d | 2026-04-24 A | 2026-06-08 | CP09-TR4-SF-1170, CP09-TR4-SF-1160, CP09-TR4-SF-1180 SS+3d, CP09-TR4-SF-1180 FF+3d, CP09-PR-PN-DY-1030 | 50% | -139d |
| CP09-TR4-SF-1230 |  | Ornamental grass | 10d | 2026-04-24 A | 2026-06-08 | CP09-TR4-SF-1170, CP09-TR4-SF-1160, CP09-TR4-SF-1180 SS+3d, CP09-TR4-SF-1180 FF+3d, CP09-PR-PN-DY-1050 | 50% | -139d |
| CP09-TR4-SF-1240 |  | Lawn | 10d | 2026-04-24 A | 2026-06-08 | CP09-TR4-SF-1170, CP09-TR4-SF-1160, CP09-TR4-SF-1180 SS+3d, CP09-TR4-SF-1180 FF+3d, CP09-PR-PN-DY-1040 | 50% | -139d |
|  | 6 | **Terrace # 05** |  | 2024-05-20 | 2026-08-17 |  |  |  |
|  | 8 | **Swimming Pool-SP03 & Mechnical Room-MR-03** |  | 2024-05-20 | 2026-07-27 |  |  |  |
|  | 1 | **Structure Works for Swimming Pool** |  | 2024-05-20 | 2026-04-28 |  |  |  |
| CP09-TR5-SW-1730 |  | Excvation up to Formation Level | 7d | 2024-05-20 A | 2024-10-10 A | CP09-MS-1010, CP09-CLD-1000, CP09-TR4-SW-1370 | 100% |  |
| CP09-TR5-SW-1740 |  | Plain Concret for For Raft | 5d | 2024-11-04 A | 2024-11-14 A | CP09-TR5-SW-1730, CP09-EN-TR5-A-1750, CP09-PR-CV-DY-1000 SS, CP09-TR4-SW-1420 | 100% |  |
| CP09-TR5-SW-1750 |  | Water Proofing with screed | 3d | 2024-11-16 A | 2024-11-23 A | CP09-TR5-SW-1740, CP09-EN-TR5-A-1770, CP09-PR-CV-DY-1010 SS | 100% |  |
| CP09-TR5-SW-1760 |  | Reinforcement concrete for Raft | 10d | 2025-05-18 A | 2025-05-22 A | CP09-TR5-SW-1750, CP09-EN-TR5-A-1750, CP09-EN-TR5-A-1760, CP09-PR-CV-DY-1130 | 100% |  |
| CP09-TR5-SW-1780 |  | Reinforcement Concrete for Walls | 15d | 2025-09-30 A | 2025-10-04 A | CP09-TR5-SW-1770 | 100% |  |
| CP09-TR5-SW-1770 |  | Water Proofing for Raft with screed | 3.75d | 2025-11-24 A | 2025-11-28 A | CP09-TR5-SW-1760, CP09-EN-TR5-A-1770, CP09-PR-CV-DY-1010 SS | 100% |  |
| CP09-TR5-SW-1790 |  | External Waterproofing for Walls | 5d | 2026-03-02 A | 2026-03-06 A | CP09-TR5-SW-1780 | 100% |  |
| CP09-TR5-SW-1800 |  | Protection Block Works | 5d | 2026-04-24 A | 2026-04-28 A | CP09-TR5-SW-1790, CP09-PR-CV-DY-1020 SS | 100% |  |
| CP09-TR5-SW-1810 |  | Backfilling | 5.62d | 2026-04-24 A | 2026-04-28 A | CP09-TR5-SW-1800, CP09-TR5-SW-1960 FF | 100% |  |
|  | 3 | **Finishing Works for Swimming Pool** |  | 2026-06-10 | 2026-07-11 |  |  |  |
| CP09-TR5-SW-1820 |  | Mosaics Tiles | 11.25d | 2026-06-10 | 2026-06-23 | CP09-TR5-SW-1800, CP09-TR5-SW-1810, CP09-EN-TR5-A-1780, CP09-PR-CV-DY-1030 |  | -175.56d |
| CP09-TR5-SW-1830 |  | Granite for Pool Edg | 3.75d | 2026-06-23 | 2026-06-27 | CP09-TR5-SW-1820, CP09-EN-TR5-A-1790, CP09-PR-CV-DY-1040 |  | -175.56d |

| ID | WBS | Task | Duration | Start | Finish | Predecessors | Complete | Total float |
| --- | --- | --- | --- | --- | --- | --- | --- | --- |
| CP09-TR5-SW-1840 |  | Garnite for Drinage Grate | 3.75d | 2026-06-23 | 2026-06-27 | CP09-TR5-SW-1830 SS, CP09-EN-TR5-A-1790 |  | -171.81d |
| CP09-TR5-SW-1850 |  | Granite for Pool Coping | 3.75d | 2026-06-28 | 2026-07-01 | CP09-TR5-SW-1830, CP09-EN-TR5-A-1790 |  | -175.56d |
| CP09-TR5-SW-1860 |  | Stanless Steel Ladders | 2.81d | 2026-07-01 | 2026-07-05 | CP09-TR5-SW-1820, CP09-TR5-SW-1830, CP09-TR5-SW-1840, CP09-TR5-SW-1850, CP09-EN-TR5-A-1810, CP09-EN-TR5-A-1800, CP09-PR-CV-DY-1050 |  | -175.56d |
| CP09-TR5-SW-1870 |  | Stanless Steel Handrial | 5d | 2026-07-05 | 2026-07-11 | CP09-TR5-SW-1860, CP09-EN-TR5-A-1810, CP09-PR-CV-DY-1060 |  | -175.56d |
|  | 4 | **Machine Room_MR03** |  | 2024-11-02 | 2026-06-14 |  |  |  |
| CP09-TR5-SW-1880 |  | Excvation up to Formation Level | 6d | 2024-11-02 A | 2024-11-07 A | CP09-TR5-SW-1730 | 100% |  |
| CP09-TR5-SW-1890 |  | Plain Concret for For Raft | 2.81d | 2024-12-08 A | 2024-12-10 A | CP09-TR5-SW-1880, CP09-EN-TR5-A-1750 | 100% |  |
| CP09-TR5-SW-1900 |  | Water Proofing with screed | 1.88d | 2024-12-14 A | 2024-12-21 A | CP09-TR5-SW-1890, CP09-EN-TR5-A-1770, CP09-PR-CV-DY-1010 | 100% |  |
| CP09-TR5-SW-1910 |  | Reinforcement concrete for Raft | 10d | 2025-01-02 A | 2025-04-16 A | CP09-TR5-SW-1900, CP09-EN-TR5-A-1750, CP09-EN-TR5-A-1760 | 100% |  |
| CP09-TR5-SW-1920 |  | Water Proofing for Raft with screed | 3.75d | 2025-09-30 A | 2025-12-12 A | CP09-TR5-SW-1910 | 100% |  |
| CP09-TR5-SW-1930 |  | Reinforcement Concrete for Walls & Columns | 15d | 2025-09-30 A | 2025-10-04 A | CP09-TR5-SW-1920 | 100% |  |
| CP09-TR5-SW-1940 |  | Reinforcement Concrete for Slab | 21d | 2025-09-30 A | 2025-10-04 A | CP09-TR5-SW-1930 | 100% |  |
| CP09-TR5-SW-2060 |  | Emulsion Paint for Internal Wall | 6d | 2026-02-22 A | 2026-05-08 A | CP09-TR5-SW-2050, CP09-TR5-SW-2000, CP09-PR-CV-DY-1080 | 100% |  |
| CP09-TR5-SW-1950 |  | External Waterproofing with Protection | 5d | 2026-03-02 A | 2026-03-06 A | CP09-TR5-SW-1940 | 100% |  |
| CP09-TR5-SW-1960 |  | Backfilling | 5d | 2026-04-24 A | 2026-04-28 A | CP09-TR5-SW-1950 | 100% |  |
| CP09-TR5-SW-2050 |  | Plaster for Internal Walls | 6d | 2026-05-04 A | 2026-05-08 A | CP09-TR5-SW-1950, CP09-EN-TR5-A-2110, CP09-PR-CV-DY-1070 | 100% |  |
| CP09-TR5-SW-2070 |  | Epoxy for flooring | 3d | 2026-05-04 A | 2026-05-26 | CP09-TR5-SW-2060, CP09-TR5-SW-2080, CP09-TR5-SW-1970, CP09-TR5-SW-1990, CP09-TR5-SW-2030, CP09-TR5-SW-2040, CP09-PR-CV-DY-1110 | 80% | -137d |
| CP09-TR5-SW-2080 |  | Metal Works | 5d | 2026-05-24 | 2026-05-28 | CP09-TR5-SW-2060 |  | -101d |
| CP09-TR5-SW-1970 |  | Drainage Gravel including Geotextile & Geocomposit | 3.75d | 2026-06-10 | 2026-06-14 | CP09-TR5-SW-2060, CP09-PR-CV-DY-1090, CP09-PR-CV-DY-1100 |  | -114.75d |
|  | 2 | **MEP Works for Swimmimg Pool & Machine Room** |  | 2026-02-22 | 2026-07-27 |  |  |  |
|  | 1 | **Mechnical Works** |  | 2026-02-22 | 2026-07-14 |  |  |  |
| CP09-TR5-SW-1980 |  | UPVC pipes, fitting, valves, | 15d | 2026-02-22 A | 2026-06-09 | CP09-TR5-SW-2050, CP09-EN-TR5-A-1820, CP09-PR-ME-DY-1000, CP09-PR-ME-DY-1010 | 40% | -179d |
| CP09-TR5-SW-1990 |  | Mechnical Equipment (Valves, Pumps, Filtters, Controllers ,Dosinng,& Ventilation exahust fan) | 30d | 2026-06-10 | 2026-07-14 | CP09-TR5-SW-2060, CP09-TR5-SW-1980, CP09-EN-TR5-A-1820, CP09-PR-ME-DY-1020, CP09-PR-ME-DY-1030, CP09-PR-ME-DY-1040, CP09-PR-ME-DY-1050, CP09-PR-ME-DY-1060, CP09-PR-ME-DY-1070, CP09-PR-ME-DY-1080 |  | -179d |
|  | 2 | **Electrical Works-SW** |  | 2026-06-10 | 2026-07-27 |  |  |  |
| CP09-TR5-SW-2000 |  | Conduits, Cable tray | 5d | 2026-06-10 | 2026-06-16 | CP09-TR5-SW-2050, CP09-EN-TR5-A-1830, CP09-PR-EL-DY-1000, CP09-PR-EL-DY-1010 |  | -189.06d |
| CP09-TR5-SW-2010 |  | Panel boards | 5d | 2026-06-16 | 2026-06-22 | CP09-TR5-SW-2000, CP09-TR5-SW-2060, CP09-EN-TR5-A-1830, CP09-PR-EL-DY-1020 |  | -189.06d |
| CP09-TR5-SW-2020 |  | Power Cables & Wires | 10d | 2026-06-22 | 2026-07-04 | CP09-TR5-SW-2010, CP09-TR5-SW-2000, CP09-EN-TR5-A-1830, CP09-PR-EL-DY-1030 |  | -189.06d |
| CP09-TR5-SW-2040 |  | Earthing System | 15d | 2026-06-22 | 2026-07-09 | CP09-TR5-SW-2020 SS, CP09-PR-EL-DY-1040 |  | -174.06d |
| CP09-TR5-SW-2030 |  | (Lighting Outlets , Switches, Fixture ) | 20d | 2026-07-04 | 2026-07-27 | CP09-TR5-SW-2000, CP09-TR5-SW-2020, CP09-TR5-SW-2010, CP09-PR-EL-DY-1050, CP09-PR-EL-DY-1140 |  | -189.06d |
|  | 6 | **Earth Work** |  | 2025-11-10 | 2026-04-10 |  |  |  |
|  | 1 | **Grading works** |  | 2025-11-10 | 2025-12-26 |  |  |  |
| CP09-TR5-EW-1060 |  | Excavation work to Reduce Level | 15d | 2025-11-10 A | 2025-12-26 A | CP09-TR5-SW-1880, CP09-EN-TR5-A-1840, CP09-CLD-1000 | 100% |  |
| CP09-TR5-EW-1070 |  | Filling works to make up levels with Compacting | 15d | 2025-11-10 A | 2025-12-26 A | CP09-TR5-SW-1880, CP09-TR5-EW-1060 SS+4.69d, CP09-EN-TR5-A-1840 | 100% |  |
|  | 2 | **Planting** |  | 2026-02-22 | 2026-04-10 |  |  |  |
| CP09-TR5-EW-1080 |  | Excavation works for Planting Beds | 15d | 2026-02-22 A | 2026-04-10 A | CP09-TR5-EW-1060 SS, CP09-TR5-EW-1070 SS, CP09-EN-TR5-A-1840 | 100% |  |
|  | 9 | **Retaining & Cheek Walls** |  | 2026-02-16 | 2026-06-23 |  |  |  |
|  | 1 | **Soild Block Work Cheek Walls** |  | 2026-02-16 | 2026-06-23 |  |  |  |
| CP09-TR5-RW-1450 |  | Plaing Concrete with HPDE | 4.69d | 2026-02-16 A | 2026-04-10 A | CP09-TR5-RW-1500 SS+2.81d, CP09-TR5-RW-1500 FF+2.81d, CP09-EN-TR5-A-1850 | 100% |  |
| CP09-TR5-RW-1480 |  | Reinforced Concrete for Column | 8d | 2026-02-16 A | 2026-04-10 A | CP09-TR5-RW-1470 SS+2.81d, CP09-TR5-RW-1470 FF+2.81d | 100% |  |
| CP09-TR5-RW-1520 |  | Waterproofing & Protection | 6.56d | 2026-02-16 A | 2026-04-10 A | CP09-TR5-RW-1510 SS+7.5d, CP09-TR5-RW-1510 FF+7.5d, CP09-EN-TR5-A-1870 | 100% |  |
| CP09-TR5-RW-1530 |  | Backfilling | 5.62d | 2026-02-16 A | 2026-04-28 A | CP09-TR5-RW-1520 SS+2.81d, CP09-TR5-RW-1520 FF+2.81d | 100% |  |
| CP09-TR5-RW-1460 |  | Reinforced Concrete for Footing | 6.56d | 2026-02-22 A | 2026-04-10 A | CP09-TR5-RW-1450 SS+2.81d, CP09-TR5-RW-1450 FF+2.81d, CP09-EN-TR5-A-1860, CP09-EN-TR5-A-1850 | 100% |  |
| CP09-TR5-RW-1470 |  | Reinforced Concrete for Tie beam | 8d | 2026-02-22 A | 2026-04-10 A | CP09-TR5-RW-1460 SS+2.81d, CP09-TR5-RW-1460 FF+2.81d | 100% |  |
| CP09-TR5-RW-1490 |  | Soild Block Work | 5.62d | 2026-02-22 A | 2026-04-10 A | CP09-TR5-RW-1480 SS+5.62d, CP09-TR5-RW-1480 FF+5.62d, CP09-EN-TR5-A-1880, CP09-PR-CV-DY-1020 | 100% |  |
| CP09-TR5-RW-1500 |  | Excavation | 3.75d | 2026-02-22 A | 2026-04-10 A | CP09-TR4-RW-1420, CP09-TR5-EW-1060, CP09-TR5-EW-1070 | 100% |  |
| CP09-TR5-RW-1510 |  | Reinforced Concrete for beam | 10d | 2026-02-22 A | 2026-04-10 A | CP09-TR5-RW-1490 SS+3.75d, CP09-TR5-RW-1490 FF+3.75d | 100% |  |
| CP09-TR5-RW-1540 |  | Marble Cladding | 10d | 2026-06-07 | 2026-06-17 | CP09-TR5-RW-1530 SS+5.62d, CP09-TR5-RW-1530 FF+5.62d, CP09-EN-TR5-A-1890, CP09-PR-CV-DY-1120 |  | -157.94d |
| CP09-TR5-RW-1550 |  | Marble Copping | 10d | 2026-06-11 | 2026-06-23 | CP09-TR5-RW-1540 SS+4.69d, CP09-TR5-RW-1540 FF+4.69d, CP09-EN-TR5-A-1890, CP09-PR-CV-DY-1120 |  | -157.94d |
|  | 2 | **Solid Block Retaining Walls** |  | 2026-02-16 | 2026-06-21 |  |  |  |
| CP09-TR5-RW-1560 |  | Plaing Concrete with HPDE | 5d | 2026-02-16 A | 2026-04-10 A | CP09-TR5-RW-1610 SS+2.81d, CP09-TR5-RW-1610 FF+2.81d, CP09-EN-TR5-A-1850 | 100% |  |
| CP09-TR5-RW-1580 |  | Reinforced Concrete for Tie beam | 5d | 2026-02-16 A | 2026-04-10 A | CP09-TR5-RW-1570 SS+2.81d, CP09-TR5-RW-1570 FF+2.81d | 100% |  |
| CP09-TR5-RW-1610 |  | Excavation | 3.75d | 2026-02-16 A | 2026-04-10 A | CP09-TR5-RW-1460, CP09-TR5-EW-1060, CP09-TR5-EW-1070 | 100% |  |
| CP09-TR5-RW-1620 |  | Reinforced Concrete for beam | 7.5d | 2026-02-16 A | 2026-04-10 A | CP09-TR5-RW-1600 SS+3.75d, CP09-TR5-RW-1600 FF+3.75d | 100% |  |
| CP09-TR5-RW-1640 |  | Backfilling | 5.62d | 2026-02-16 A | 2026-04-28 A | CP09-TR5-RW-1630 SS+2.81d, CP09-TR5-RW-1630 FF+2.81d | 100% |  |
| CP09-TR5-RW-1570 |  | Reinforced Concrete for Footing | 6.56d | 2026-02-22 A | 2026-04-10 A | CP09-TR5-RW-1560 SS+2.81d, CP09-TR5-RW-1560 FF+2.81d, CP09-EN-TR5-A-1850, CP09-EN-TR5-A-1860 | 100% |  |
| CP09-TR5-RW-1590 |  | Reinforced Concrete for Column | 5.62d | 2026-02-22 A | 2026-04-10 A | CP09-TR5-RW-1580 SS+2.81d, CP09-TR5-RW-1580 FF+2.81d | 100% |  |
| CP09-TR5-RW-1600 |  | Soild Block Work | 5.62d | 2026-02-22 A | 2026-04-10 A | CP09-TR5-RW-1590 SS+5.62d, CP09-TR5-RW-1590 FF+5.62d, CP09-EN-TR5-A-1880 | 100% |  |
| CP09-TR5-RW-1630 |  | Waterproofing & Protection | 6.56d | 2026-02-22 A | 2026-04-10 A | CP09-TR5-RW-1620 SS+7.5d, CP09-TR5-RW-1620 FF+7.5d | 100% |  |
| CP09-TR5-RW-1650 |  | Marble Cladding | 8d | 2026-06-07 | 2026-06-15 | CP09-TR5-RW-1640 SS+4.69d, CP09-TR5-RW-1640 FF+4.69d, CP09-EN-TR5-A-1890, CP09-PR-CV-DY-1120 |  | -155.94d |
| CP09-TR5-RW-1660 |  | Marble Copping | 8d | 2026-06-11 | 2026-06-21 | CP09-TR5-RW-1650 SS+4.69d, CP09-TR5-RW-1650 FF+4.69d, CP09-EN-TR5-A-1890, CP09-PR-CV-DY-1120 |  | -155.94d |
|  | 1 | **Irrigation Works** |  | 2026-02-16 | 2026-06-16 |  |  |  |
|  | 1 | **Sub-Main & Lateral** |  | 2026-02-16 | 2026-06-07 |  |  |  |
| CP09-TR5-IR-1240 |  | Sub-main & Lateral Pieps Testing | 3d | 2026-02-16 A | 2026-06-04 | CP09-TR5-IR-1230 SS+2d, CP09-TR5-IR-1230 FF+2d | 90% | -177.75d |
| CP09-TR5-IR-1250 |  | Backfilling forSub-main & Lateral Pieps | 4d | 2026-02-16 A | 2026-06-07 | CP09-TR5-IR-1240 SS+2d, CP09-TR5-IR-1240 FF+2d | 90% | -177.75d |
| CP09-TR5-IR-1220 |  | Excavation for Sub-main & Lateral Pieps | 4d | 2026-02-22 A | 2026-05-27 | CP09-EN-TR5-A-2080, CP09-TR5-HD-3190, CP09-TR4-IR-1140 | 90% | -177.75d |
| CP09-TR5-IR-1230 |  | Sub-main & Lateral Pieps laying out and installation | 5d | 2026-02-22 A | 2026-06-02 | CP09-TR5-IR-1220 SS+2d, CP09-TR5-IR-1220 FF+5d, CP09-PR-IR-DY-1000 | 90% | -177.75d |
|  | 2 | **Fittings & Accessories** |  | 2026-06-06 | 2026-06-16 |  |  |  |
| CP09-TR5-IR-1260 |  | Installation of Dripline | 10d | 2026-06-06 | 2026-06-16 | CP09-TR5-IR-1240, CP09-TR5-SF-1330 SS+2d, CP09-TR5-SF-1320, CP09-PR-IR-DY-1010 |  | -141d |
| CP09-TR5-IR-1270 |  | Installation of Sprinklers | 8d | 2026-06-06 | 2026-06-14 | CP09-TR5-IR-1260 SS, CP09-PR-IR-DY-1040 |  | -141d |
| CP09-TR5-IR-1280 |  | Installation Valves & Rings | 4d | 2026-06-06 | 2026-06-09 | CP09-TR5-IR-1270 SS, CP09-PR-IR-DY-1030, CP09-PR-IR-DY-1020 |  | -141d |

| ID | WBS | Task | Duration | Start | Finish | Predecessors | Complete | Total float |
| --- | --- | --- | --- | --- | --- | --- | --- | --- |
| CP09-TR5-IR-1290 |  | Installation of Electrical solenoid valve | 6d | 2026-06-06 | 2026-06-11 | CP09-TR5-IR-1280 SS, CP09-PR-IR-DY-1050 |  | -141d |
| CP09-TR5-IR-1300 |  | Installation of Controller (decoder system plastic pedestal) | 6d | 2026-06-06 | 2026-06-11 | CP09-TR5-IR-1280 SS, CP09-TR5-IR-1290 SS, CP09-PR-IR-DY-1060 |  | -141d |
| CP09-TR5-IR-1310 |  | Installation of Controller decoder cables | 6d | 2026-06-06 | 2026-06-11 | CP09-TR5-IR-1300 SS, CP09-PR-IR-DY-1070 |  | -141d |
| CP09-TR5-IR-1320 |  | Installation of Decoder one station | 5d | 2026-06-06 | 2026-06-10 | CP09-TR5-IR-1310 SS, CP09-PR-IR-DY-1080 |  | -140d |
|  | 4 | **Electrical Works** |  | 2026-02-09 | 2026-07-14 |  |  |  |
|  | 1 | **Power Cable & Pillars** |  | 2026-02-09 | 2026-07-14 |  |  |  |
| CP09-TR5-EL-1090 |  | Installation of Power Cables | 4d | 2026-02-09 A | 2026-05-31 | CP09-TR5-EL-1080 SS+2d, CP09-TR5-EL-1080 FF+2d, CP09-EN-TR5-A-2040, CP09-EN-TR5-A-2050, CP09-PR-EL-DY-1060 | 75% | -193.81d |
| CP09-TR5-EL-1100 |  | Backfilling for Power Cables | 4d | 2026-02-09 A | 2026-06-02 | CP09-TR5-EL-1090 SS+2d, CP09-TR5-EL-1090 FF+2d | 75% | -193.81d |
| CP09-TR5-EL-1080 |  | Excavation | 5d | 2026-02-16 A | 2026-05-28 | CP09-TR5-EW-1060, CP09-TR5-EW-1070, CP09-TR5-IR-1250, CP09-EN-TR5-A-2040, CP09-TR4-EL-1060 | 75% | -193.81d |
| CP09-TR5-EL-1110 |  | Installation of Connecting Pillars | 15d | 2026-06-28 | 2026-07-14 | CP09-TR5-HD-2940, CP09-PR-EL-DY-1070 |  | -169d |
|  | 3 | **Hardscape** |  | 2024-11-24 | 2026-08-17 |  |  |  |
|  | 6 | **Concrete Curb** |  | 2026-02-22 | 2026-05-15 |  |  |  |
| CP09-TR5-HD-2900 |  | Plains Concrete with HDPE waterproofing | 2d | 2026-02-22 A | 2026-04-10 A | CP09-TR5-HD-2890, CP09-EN-TR5-A-1970 | 100% |  |
| CP09-TR5-HD-3170 |  | Under Paving Reinforced Concrete Curb | 4d | 2026-02-22 A | 2026-04-10 A | CP09-TR5-HD-2900 SS+1.88d, CP09-TR5-HD-2900 FF+1.88d | 100% |  |
| CP09-TR5-HD-3190 |  | Instal Flush Curb | 3d | 2026-02-22 A | 2026-05-15 A | CP09-EN-TR5-A-1970, CP09-PR-HD-DY-1080, CP09-TR5-HD-3170 SS+3d, CP09-TR5-HD-3170 FF+3d | 100% |  |
| CP09-TR5-HD-2890 |  | Excavation | 2d | 2026-03-02 A | 2026-04-10 A | CP09-TR5-EW-1060, CP09-TR5-EW-1070, CP09-TR5-EW-1080, CP09-TR4-HD-2380 | 100% |  |
|  | 1 | **Side wake & Plazes** |  | 2026-02-16 | 2026-06-29 |  |  |  |
|  | 8 | **Interlocking Paving** |  | 2026-02-22 | 2026-04-28 |  |  |  |
| CP09-TR5-HD-2910 |  | Crush Stone for Interlock Types IL-(01,02,06,07) | 6.56d | 2026-02-22 A | 2026-04-28 A | CP09-EN-TR5-A-1980, CP09-TR5-EW-1060, CP09-TR5-EW-1070, CP09-TR5-IR-1250, CP09-TR5-EL-1100, CP09-PR-HD-DY-1090, CP09-TR4-HD-2130 | 100% |  |
| CP09-TR5-HD-2920 |  | Sand Layer for Interlock Types IL-(01,02,06,07) | 10d | 2026-02-22 A | 2026-04-28 A | CP09-TR5-HD-2910 SS+5d, CP09-TR5-HD-2910 FF+5d, CP09-EN-TR5-A-1980 | 100% |  |
| CP09-TR5-HD-2930 |  | Motar Bed Interlock Types IL-(03,04,08,09,10) | 10d | 2026-02-22 A | 2026-04-28 A | CP09-TR5-HD-2920 SS, CP09-EN-TR5-A-1980 | 100% |  |
| CP09-TR5-HD-2940 |  | Interlocking Paving | 15d | 2026-02-22 A | 2026-04-28 A | CP09-TR5-HD-2920 SS+2.81d, CP09-TR5-HD-2930 SS+2.81d, CP09-TR5-HD-2920 FF+2.81d, CP09-TR5-HD-2930 FF+2.81d, CP09-EN-TR5-A-1980, CP09-PR-HD-DY-1180 | 100% |  |
|  | 2 | **Concrete in Situ** |  | 2026-02-22 | 2026-06-03 |  |  |  |
|  | 1 | **Slab on Garde** |  | 2026-02-22 | 2026-05-30 |  |  |  |
| CP09-TR5-HD-2680 |  | Plain Concrete with HDPE | 3.75d | 2026-02-22 A | 2026-05-27 | CP09-TR5-HD-2940, CP09-TR5-EW-1060, CP09-TR5-EW-1070, CP09-TR5-IR-1250, CP09-TR5-EL-1100, CP09-EN-TR5-A-1900 | 85% | -99.75d |
| CP09-TR5-HD-2690 |  | Reinfored Concrete slab on grade | 5.62d | 2026-04-13 A | 2026-05-30 | CP09-TR5-HD-2680 | 85% | -101.62d |
| CP09-TR5-HD-2700 |  | Waterproofing & Screed | 3.75d | 2026-04-13 A | 2026-05-27 | CP09-TR5-HD-2690 | 85% | -99.75d |
|  | 2 | **Concrete In-situ w./Exposed Aggregate Finish** |  | 2026-04-13 | 2026-06-03 |  |  |  |
| CP09-TR5-HD-2710 |  | Concrete casting (including Joints & Wire Mish) | 9.38d | 2026-04-13 A | 2026-06-03 | CP09-TR5-HD-2700, CP09-TR5-HD-3190, CP09-EN-TR5-A-1900, CP09-PR-HD-DY-1000 | 85% | -105.38d |
| CP09-TR5-HD-2720 |  | Finishing Concrete Surface | 5d | 2026-04-13 A | 2026-05-28 | CP09-TR5-HD-2710, CP09-TR5-RW-1540, CP09-TR5-RW-1550, CP09-TR5-RW-1650, CP09-TR5-RW-1660 | 85% | -154.75d |
|  | 1 | **Marble Paving** |  | 2026-02-16 | 2026-04-28 |  |  |  |
|  | 1 | **Slab on Garde** |  | 2026-02-22 | 2026-04-24 |  |  |  |
| CP09-TR5-HD-2630 |  | Plain Concrete with HDPE | 3.75d | 2026-02-22 A | 2026-04-24 A | CP09-TR5-HD-2940, CP09-TR5-EW-1060, CP09-TR5-EW-1080, CP09-TR5-IR-1250, CP09-TR5-EL-1100, CP09-EN-TR5-A-1910 | 100% |  |
| CP09-TR5-HD-2640 |  | Reinfored Concrete slab on grade | 5.62d | 2026-02-22 A | 2026-04-24 A | CP09-TR5-HD-2630 | 100% |  |
| CP09-TR5-HD-2650 |  | Waterproofing & Screed | 5d | 2026-02-22 A | 2026-04-24 A | CP09-TR5-HD-2640 | 100% |  |
|  | 2 | **Marble Tiles** |  | 2026-02-16 | 2026-04-28 |  |  |  |
| CP09-TR5-HD-2660 |  | Marble Fixiation | 7d | 2026-02-16 A | 2026-04-28 A | CP09-TR5-HD-2650, CP09-TR5-HD-3190, CP09-EN-TR5-A-1910, CP09-PR-HD-DY-1010 | 100% |  |
| CP09-TR5-HD-2670 |  | Marble Surfcae Finishing | 4d | 2026-02-22 A | 2026-04-28 A | CP09-TR5-HD-2660, CP09-TR5-HD-2720 SS | 100% |  |
|  | 3 | **Wooden Floor Boards** |  | 2026-05-11 | 2026-06-04 |  |  |  |
|  | 1 | **Slab on Garde** |  | 2026-05-11 | 2026-05-28 |  |  |  |
| CP09-TR5-HD-2730 |  | Plain Concrete with HDPE | 2.81d | 2026-05-11 A | 2026-05-15 A | CP09-TR5-HD-2940, CP09-TR5-HD-2640, CP09-TR5-EW-1060, CP09-TR5-EW-1070, CP09-TR5-IR-1250, CP09-TR5-EL-1100, CP09-EN-TR5-A-1920 | 100% |  |
| CP09-TR5-HD-2740 |  | Reinfored Concrete slab on grade | 5d | 2026-05-11 A | 2026-05-28 | CP09-TR5-HD-2730 | 20% | -169.75d |
| CP09-TR5-HD-2750 |  | Waterproofing & Screed | 2.81d | 2026-05-11 A | 2026-05-15 A | CP09-TR5-HD-2740 | 100% |  |
|  | 2 | **Wood- Plastic Composit** |  | 2026-05-24 | 2026-06-04 |  |  |  |
| CP09-TR5-HD-2760 |  | WPC Installation | 6.56d | 2026-05-24 | 2026-05-31 | CP09-TR5-HD-2750, CP09-TR5-HD-3190, CP09-EN-TR5-A-1920, CP09-PR-HD-DY-1020 |  | -156.31d |
| CP09-TR5-HD-2770 |  | WPC surface finishing & Accessories | 3.75d | 2026-05-31 | 2026-06-04 | CP09-TR5-HD-2760, CP09-TR5-HD-2670, CP09-TR5-HD-2720 |  | -156.31d |
|  | 4 | **Gravel layer** |  | 2026-06-08 | 2026-06-22 |  |  |  |
|  | 1 | **Slab on Garde** |  | 2026-06-08 | 2026-06-14 |  |  |  |
| CP09-TR5-HD-2780 |  | Plain Concrete with HDPE | 2.81d | 2026-06-08 | 2026-06-10 | CP09-TR5-HD-2940, CP09-TR5-HD-2740, CP09-TR5-EW-1060, CP09-TR5-EW-1070, CP09-TR5-IR-1250, CP09-TR5-EL-1100, CP09-EN-TR5-A-1930 |  | -177.75d |
| CP09-TR5-HD-2800 |  | Mortar bed | 2.81d | 2026-06-10 | 2026-06-14 | CP09-TR5-HD-2780 |  | -177.75d |
|  | 2 | **Gravel Layer, w./Earth Colors** |  | 2026-06-14 | 2026-06-22 |  |  |  |
| CP09-TR5-HD-2810 |  | Furnish & install Garvel Layer | 6.56d | 2026-06-14 | 2026-06-22 | CP09-TR5-HD-2800, CP09-TR5-HD-3190, CP09-EN-TR5-A-1930, CP09-PR-HD-DY-1030 |  | -177.75d |
|  | 5 | **Crushed Stone** |  | 2026-06-10 | 2026-06-29 |  |  |  |
|  | 1 | **Slab on Garde** |  | 2026-06-10 | 2026-06-17 |  |  |  |
| CP09-TR5-HD-2820 |  | Geotextile membrane | 2.81d | 2026-06-10 | 2026-06-14 | CP09-TR5-HD-2940, CP09-TR5-HD-2780, CP09-TR5-EW-1060, CP09-TR5-EW-1070, CP09-TR5-IR-1250, CP09-TR5-EL-1100, CP09-EN-TR5-A-1940 |  | -171.19d |
| CP09-TR5-HD-2840 |  | Gravel fix sheets | 3d | 2026-06-14 | 2026-06-17 | CP09-TR5-HD-2820 |  | -171.19d |
|  | 2 | **Crushed Dolomite Stone** |  | 2026-06-22 | 2026-06-29 |  |  |  |
| CP09-TR5-HD-2850 |  | Furnish & Install Crushed Dolomite stone , w./ mixed colors | 6.56d | 2026-06-22 | 2026-06-29 | CP09-TR5-HD-2840 FF, CP09-TR5-HD-2840 SS, CP09-TR5-HD-2810, CP09-TR5-HD-3190, CP09-EN-TR5-A-1940, CP09-PR-HD-DY-1040 |  | -177.75d |
|  | 6 | **Loose Gravel** |  | 2026-06-10 | 2026-06-18 |  |  |  |
|  | 2 | **Loose Gravel 50mm** |  | 2026-06-10 | 2026-06-18 |  |  |  |
| CP09-TR5-HD-2860 |  | Furnish & Install loose gravel w./earth colors. | 6.56d | 2026-06-10 | 2026-06-18 | CP09-TR5-HD-2940, CP09-TR5-HD-2780, CP09-TR5-HD-3190, CP09-TR5-IR-1250, CP09-TR5-EL-1100, CP09-EN-TR5-A-1950, CP09-PR-HD-DY-1050 |  | -168.38d |
|  | 7 | **Clean Sand Layer** |  | 2026-05-11 | 2026-05-28 |  |  |  |
|  | 1 | **Kids & Fitness Area** |  | 2026-05-11 | 2026-05-28 |  |  |  |
| CP09-TR5-HD-2870 |  | Geotextile Sheets | 5d | 2026-05-11 A | 2026-05-28 | CP09-TR5-HD-2940, CP09-TR5-HD-2860, CP09-TR5-EW-1060, CP09-TR5-EW-1070, CP09-TR5-HD-3190, CP09-TR5-IR-1250, CP09-TR5-EL-1100, CP09-EN-TR5-A-1960 | 40% | -101d |
| CP09-TR5-HD-2880 |  | Install Clean sand layer | 5d | 2026-05-11 A | 2026-05-28 | CP09-TR5-HD-2870, CP09-TR5-HD-2860, CP09-TR5-HD-3190, CP09-EN-TR5-A-1960, CP09-PR-HD-DY-1070 | 40% | -144d |
|  | 2 | **Site Improvments** |  | 2024-11-24 | 2026-08-17 |  |  |  |
|  | 1 | **Marble Steps** |  | 2026-01-25 | 2026-06-02 |  |  |  |
| CP09-TR5-HD-2950 |  | Reinforecd Concrete Step. | 5.62d | 2026-01-25 A | 2026-05-30 | CP09-TR5-RW-1640, CP09-TR5-EW-1060, CP09-TR5-EW-1070, CP09-EN-TR5-A-1990, CP09-TR5-IR-1250, CP09-TR5-EL-1100 | 50% | -134.06d |
| CP09-TR5-HD-2960 |  | Install Marble Blocks | 6.56d | 2026-05-11 A | 2026-06-02 | CP09-TR5-HD-2950 SS+2.81d, CP09-TR5-HD-2950 FF+2.81d, CP09-PR-HD-DY-1100 | 50% | -134.06d |
| CP09-TR5-HD-2970 |  | Finishing Marble Surface | 5d | 2026-05-11 A | 2026-05-28 | CP09-TR5-HD-2960, CP09-TR5-RW-1540, CP09-TR5-RW-1550, CP09-TR5-RW-1650, CP09-TR5-RW-1660 | 50% | -125d |

| ID | WBS | Task | Duration | Start | Finish | Predecessors | Complete | Total float |
| --- | --- | --- | --- | --- | --- | --- | --- | --- |
|  | 2 | **Curvelinear Block Seat** |  | 2024-11-24 | 2026-06-30 |  |  |  |
| CP09-TR5-HD-3020 |  | Waterproofing & Protection | 3.75d | 2024-11-24 A | 2026-04-28 A | CP09-TR5-HD-3010 | 100% |  |
| CP09-TR5-HD-2980 |  | Excavation | 2.81d | 2025-05-18 A | 2026-04-28 A | CP09-TR5-RW-1620, CP09-TR5-EW-1060, CP09-TR5-EW-1070, CP09-EN-TR5-A-2000, CP09-TR5-EL-1100 | 100% |  |
| CP09-TR5-HD-2990 |  | Plaing Concrete with HPDE | 3.75d | 2025-05-18 A | 2026-04-28 A | CP09-TR5-HD-2980 | 100% |  |
| CP09-TR5-HD-3000 |  | Reinforced Concrete for Footing | 5.62d | 2025-12-01 A | 2026-04-28 A | CP09-TR5-HD-2990 | 100% |  |
| CP09-TR5-HD-3010 |  | Reinforced Concrete for beam | 5d | 2025-12-22 A | 2026-04-28 A | CP09-TR5-HD-3000 | 100% |  |
| CP09-TR5-HD-3030 |  | Backfilling | 2.81d | 2026-02-16 A | 2026-04-28 A | CP09-TR5-HD-3020 | 100% |  |
| CP09-TR5-HD-3040 |  | Marble Capping | 5.62d | 2026-06-23 | 2026-06-30 | CP09-TR5-RW-1650, CP09-TR5-RW-1660, CP09-TR5-RW-1540, CP09-TR5-RW-1550, CP09-TR5-HD-3030, CP09-PR-HD-DY-1110 |  | -157.94d |
|  | 3 | **Pools Shower-03** |  | 2026-06-03 | 2026-08-17 |  |  |  |
| CP09-TR5-HD-3050 |  | Plain Concrete Basin | 5d | 2026-06-03 | 2026-06-08 | CP09-TR5-HD-3190, CP09-EN-TR5-A-2010, CP09-TR5-EL-1100 |  | -193.81d |
| CP09-TR5-HD-3060 |  | R.Concrete Basin | 7d | 2026-06-09 | 2026-06-16 | CP09-TR5-HD-3050 |  | -193.81d |
| CP09-TR5-HD-3070 |  | Solid Block Work | 7d | 2026-06-17 | 2026-06-24 | CP09-TR5-HD-3060 |  | -193.81d |
| CP09-TR5-HD-3080 |  | Water Proofing | 5d | 2026-06-25 | 2026-06-30 | CP09-TR5-HD-3070 |  | -193.81d |
| CP09-TR5-HD-3090 |  | Backfilling | 5d | 2026-07-01 | 2026-07-06 | CP09-TR5-HD-3080 |  | -193.81d |
| CP09-TR5-HD-3100 |  | Mica Stone Cladding | 5d | 2026-07-07 | 2026-07-12 | CP09-TR5-HD-3090, CP09-PR-HD-DY-1120 |  | -193.81d |
| CP09-TR5-HD-3110 |  | Mica Stone Capping | 5d | 2026-07-13 | 2026-07-18 | CP09-TR5-HD-3100, CP09-PR-HD-DY-1120 |  | -193.81d |
| CP09-TR5-HD-3120 |  | Drainage Cover with Geotextile | 5d | 2026-07-19 | 2026-07-23 | CP09-TR5-HD-3110, CP09-PR-HD-DY-1060 |  | -193.81d |
| CP09-TR5-HD-3130 |  | Blast stone blocks for Flooring | 6d | 2026-07-25 | 2026-07-30 | CP09-TR5-HD-3120, CP09-PR-HD-DY-1130 |  | -193.81d |
| CP09-TR5-HD-3140 |  | Blast Stone Blocks Capping | 6d | 2026-08-01 | 2026-08-06 | CP09-TR5-HD-3130, CP09-PR-HD-DY-1130 |  | -193.81d |
| CP09-TR5-HD-3150 |  | Loose Rounded Pebbles | 6d | 2026-08-08 | 2026-08-13 | CP09-TR5-HD-3140, CP09-PR-HD-DY-1140 |  | -193.81d |
| CP09-TR5-HD-3160 |  | Shower Head Fixation | 2.81d | 2026-08-15 | 2026-08-17 | CP09-TR5-HD-3150, CP09-TR5-HD-3130, CP09-TR5-HD-3140, CP09-PR-HD-DY-1150 |  | -193.81d |
|  | 4 | **Handrails** |  | 2026-06-30 | 2026-07-06 |  |  |  |
| CP09-TR5-HD-3200 |  | Install & Fix Stainless Handrail (500 mm height) | 5.62d | 2026-06-30 | 2026-07-06 | CP09-TR5-HD-2960, CP09-TR5-HD-3040, CP09-EN-TR5-A-2020, CP09-PR-HD-DY-1160 |  | -157.94d |
| CP09-TR5-HD-3210 |  | Install & Fix Glass Handrail (900mm height) | 5.62d | 2026-06-30 | 2026-07-06 | CP09-TR5-HD-2960, CP09-TR5-HD-3040, CP09-EN-TR5-A-2020, CP09-PR-HD-DY-1170 |  | -157.94d |
|  | 7 | **Sinage** |  | 2026-04-24 | 2026-06-15 |  |  |  |
| CP09-TR5-SN-3330 |  | Excavation | 15d | 2026-04-24 A | 2026-04-28 A | CP09-TR5-RW-1640, CP09-TR5-RW-1530, CP09-TR5-HD-2940, CP09-EN-TR5-A-2060 | 100% |  |
| CP09-TR5-SN-3340 |  | Plain Concrete with HDPE | 7d | 2026-04-24 A | 2026-04-28 A | CP09-TR5-SN-3330 SS+2d, CP09-TR5-SN-3330 FF+2d | 100% |  |
| CP09-TR5-SN-3350 |  | Reinforced Concrete | 10d | 2026-04-24 A | 2026-04-28 A | CP09-TR5-SN-3340 SS+2d, CP09-TR5-SN-3340 FF+2d | 100% |  |
| CP09-TR5-SN-3360 |  | Waterproofing | 5d | 2026-04-24 A | 2026-04-28 A | CP09-TR5-SN-3350 SS+3d, CP09-TR5-SN-3350 FF+3d | 100% |  |
| CP09-TR5-SN-3370 |  | Grouting | 5d | 2026-04-24 A | 2026-04-28 A | CP09-TR5-SN-3360 SS+2d, CP09-TR5-SN-3360 FF+2d | 100% |  |
| CP09-TR5-SN-3380 |  | STREET DIRECTIONAL SIGN | 10d | 2026-05-24 | 2026-06-03 | CP09-TR5-SN-3370, CP09-PR-SN-DY-1000 |  | -144d |
| CP09-TR5-SN-3390 |  | DIRECTIONAL SIGN FOR VEHICULAR | 10d | 2026-05-24 | 2026-06-03 | CP09-TR5-SN-3370, CP09-PR-SN-DY-1010 |  | -144d |
| CP09-TR5-SN-3420 |  | RULES SIGN | 10d | 2026-05-24 | 2026-06-03 | CP09-TR5-SN-3370, CP09-PR-SN-DY-1030 |  | -134d |
| CP09-TR5-SN-3400 |  | UNIT ID SIGN (FRONT YARD) | 10d | 2026-06-04 | 2026-06-15 | CP09-TR5-SN-3380, CP09-TR5-SN-3390, CP09-TR5-SN-3370, CP09-PR-SN-DY-1020 |  | -144d |
| CP09-TR5-SN-3410 |  | UNIT ID SIGN (BACK YARD) | 10d | 2026-06-04 | 2026-06-15 | CP09-TR5-SN-3380, CP09-TR5-SN-3390, CP09-TR5-SN-3370, CP09-PR-SN-DY-1020 |  | -144d |
| CP09-TR5-SN-3430 |  | IDENTIFICATION SIGN | 10d | 2026-06-04 | 2026-06-15 | CP09-TR5-SN-3380, CP09-TR5-SN-3390, CP09-TR5-SN-3370, CP09-PR-SN-DY-1040 |  | -144d |
|  | 5 | **Landscape Furntiure** |  | 2026-06-29 | 2026-07-22 |  |  |  |
| CP09-TR5-FN-3220 |  | Install & Fix Pitch Pine Picnic Table | 15d | 2026-06-29 | 2026-07-16 | CP09-TR5-HD-2940, CP09-TR5-HD-2860, CP09-TR5-HD-2850, CP09-TR5-HD-2810, CP09-TR5-HD-2770, CP09-TR5-HD-2670, CP09-TR5-HD-2720, CP09-EN-TR5-A-2030, CP09-PR-FN-DY-1000 |  | -170.75d |
| CP09-TR5-FN-3230 |  | Install & Fix Crcular Cast-iron tree grate | 15d | 2026-06-29 | 2026-07-16 | CP09-TR5-HD-2940, CP09-TR5-HD-2860, CP09-TR5-HD-2850, CP09-TR5-HD-2810, CP09-TR5-HD-2770, CP09-TR5-HD-2670, CP09-TR5-HD-2720, CP09-EN-TR5-A-2030, CP09-PR-FN-DY-1010 |  | -170.75d |
| CP09-TR5-FN-3240 |  | Install & Fix Aluminium Cabana for Pool Shading | 12d | 2026-06-29 | 2026-07-13 | CP09-TR5-HD-2940, CP09-TR5-HD-2860, CP09-TR5-HD-2850, CP09-TR5-HD-2810, CP09-TR5-HD-2770, CP09-TR5-HD-2670, CP09-TR5-HD-2720, CP09-EN-TR5-A-2030, CP09-PR-FN-DY-1020 |  | -177.75d |
| CP09-TR5-FN-3250 |  | Install & Fix Pitch Pine Benchs | 20d | 2026-06-29 | 2026-07-22 | CP09-TR5-HD-2940, CP09-TR5-HD-2860, CP09-TR5-HD-2850, CP09-TR5-HD-2810, CP09-TR5-HD-2770, CP09-TR5-HD-2670, CP09-TR5-HD-2720, CP09-EN-TR5-A-2030, CP09-PR-FN-DY-1030 |  | -175.75d |
| CP09-TR5-FN-3260 |  | Install & Fix Polyester Hammocks | 15d | 2026-06-29 | 2026-07-16 | CP09-TR5-HD-2940, CP09-TR5-HD-2860, CP09-TR5-HD-2850, CP09-TR5-HD-2810, CP09-TR5-HD-2770, CP09-TR5-HD-2670, CP09-TR5-HD-2720, CP09-EN-TR5-A-2030, CP09-PR-FN-DY-1040 |  | -170.75d |
| CP09-TR5-FN-3270 |  | Install & Fix Adult Play Swing | 15d | 2026-06-29 | 2026-07-16 | CP09-TR5-HD-2940, CP09-TR5-HD-2860, CP09-TR5-HD-2850, CP09-TR5-HD-2810, CP09-TR5-HD-2770, CP09-TR5-HD-2670, CP09-TR5-HD-2720, CP09-EN-TR5-A-2030, CP09-PR-FN-DY-1050 |  | -170.75d |
| CP09-TR5-FN-3280 |  | Install & Fix Aluminum Trash Bin | 20d | 2026-06-29 | 2026-07-22 | CP09-TR5-HD-2940, CP09-TR5-HD-2860, CP09-TR5-HD-2850, CP09-TR5-HD-2810, CP09-TR5-HD-2770, CP09-TR5-HD-2670, CP09-TR5-HD-2720, CP09-EN-TR5-A-2030, CP09-PR-FN-DY-1060 |  | -175.75d |
| CP09-TR5-FN-3290 |  | Install & Fix tensile Teflon Tent | 20d | 2026-06-29 | 2026-07-22 | CP09-TR5-HD-2940, CP09-TR5-HD-2860, CP09-TR5-HD-2850, CP09-TR5-HD-2810, CP09-TR5-HD-2770, CP09-TR5-HD-2670, CP09-TR5-HD-2720, CP09-EN-TR5-A-2030, CP09-PR-FN-DY-1070 |  | -175.75d |
| CP09-TR5-FN-3300 |  | Lanscape Edging ( Rubber) | 15d | 2026-06-29 | 2026-07-16 | CP09-TR5-HD-2940, CP09-TR5-HD-2860, CP09-TR5-HD-2850, CP09-TR5-HD-2810, CP09-TR5-HD-2770, CP09-TR5-HD-2670, CP09-TR5-HD-2720, CP09-EN-TR5-A-2030, CP09-PR-FN-DY-1080 |  | -170.75d |
|  | 10 | **Play Field Equipment** |  | 2026-05-30 | 2026-07-22 |  |  |  |
| CP09-TR5-PE-3310 |  | Fitness areas equipment | 15d | 2026-05-30 | 2026-06-15 | CP09-TR5-HD-2880, CP09-EN-TR5-A-2070, CP09-PR-PE-DY-1000, CP09-PR-PE-DY-1010, CP09-PR-PE-DY-1020, CP09-PR-PE-DY-1030 |  | -144d |
| CP09-TR5-PE-3320 |  | Kids playground equipment | 15d | 2026-07-05 | 2026-07-22 | CP09-TR5-HD-2880, CP09-PR-PE-DY-1040, CP09-PR-PE-DY-1050, CP09-PR-PE-DY-1060, CP09-PR-PE-DY-1070, CP09-PR-PE-DY-1080, CP09-PR-PE-DY-1090, CP09-PR-PE-DY-1100 |  | -175.19d |
|  | 11 | **Lighting for Softscape** |  | 2026-06-01 | 2026-07-25 |  |  |  |
|  | 1 | **Exterior Lighting** |  | 2026-06-01 | 2026-07-25 |  |  |  |
| CP09-TR5-SF-1410 |  | Install Landscape Lighting Pole | 25d | 2026-06-01 | 2026-06-29 | CP09-TR5-HD-2940, CP09-TR5-EL-1090, CP09-EN-TR5-A-2100, CP09-PR-EL-DY-1080 |  | -176d |
| CP09-TR5-SF-1420 |  | Install Bollard for Walkways | 10d | 2026-06-30 | 2026-07-11 | CP09-TR5-EL-1090, CP09-TR5-HD-2940, CP09-TR5-HD-2720, CP09-TR5-HD-2670, CP09-TR5-HD-2770, CP09-TR5-HD-2810, CP09-TR5-HD-2850, CP09-TR5-HD-2860, CP09-EN-TR5-A-2100, CP09-PR-EL-DY-1090, CP09-TR5-SF-1410 |  | -176d |
| CP09-TR5-SF-1440 |  | Install Inground Uplight For Palms | 10d | 2026-07-05 | 2026-07-15 | CP09-TR5-SF-1450 SS, CP09-TR5-SF-1420 SS, CP09-EN-TR5-A-2100, CP09-PR-EL-DY-1120 |  | -170d |
| CP09-TR5-SF-1450 |  | Install Projectors for Trees | 10d | 2026-07-05 | 2026-07-15 | CP09-TR5-SF-1340, CP09-TR5-SF-1350, CP09-TR5-SF-1360, CP09-TR5-SF-1370, CP09-TR5-SF-1380, CP09-TR5-SF-1390, CP09-TR5-SF-1400, CP09-EN-TR5-A-2100, CP09-PR-EL-DY-1130 |  | -170d |
| CP09-TR5-SF-1430 |  | Install Diffused Wall Recessed Step | 10d | 2026-07-12 | 2026-07-22 | CP09-TR5-SF-1420, CP09-EN-TR5-A-2100, CP09-PR-EL-DY-1110 |  | -176d |
| CP09-TR5-SF-1460 |  | Install Surface Mountaed Down Light for Pool Cabans | 10d | 2026-07-13 | 2026-07-25 | CP09-TR5-FN-3240, CP09-EN-TR5-A-2100, CP09-PR-EL-DY-1100 |  | -177.75d |
|  | 2 | **Outlet Lighting Fixtures** |  | 2026-07-12 | 2026-07-16 |  |  |  |
| CP09-TR5-SF-1470 |  | Install outlet lighting fixtures | 5d | 2026-07-12 | 2026-07-16 | CP09-TR5-SF-1420, CP09-EN-TR5-A-2100, CP09-PR-EL-DY-1150 |  | -171d |
|  | 2 | **Softscape** |  | 2026-01-19 | 2026-07-04 |  |  |  |
|  | 1 | **Planting** |  | 2026-01-19 | 2026-07-04 |  |  |  |
| CP09-TR5-SF-1330 |  | Organic Manure | 10d | 2026-01-19 A | 2026-06-03 | CP09-TR5-SF-1320 SS+6d, CP09-EN-TR5-A-2090, CP09-PR-PN-DY-1010 | 50% | -154d |
| CP09-TR5-SF-1320 |  | Sweet sand for all plants | 10d | 2026-02-16 A | 2026-06-03 | CP09-TR5-EW-1080, CP09-TR5-HD-3190, CP09-TR5-HD-2940, CP09-EN-TR5-A-2090, CP09-PR-PN-DY-1000, CP09-TR4-SF-1160, CP09-TR4-SF-1170 | 50% | -154d |
| CP09-TR5-SF-1350 |  | Shrubs | 10d | 2026-05-04 A | 2026-06-07 | CP09-TR5-SF-1330, CP09-TR5-SF-1320, CP09-TR5-SF-1340 SS+3d, CP09-TR5-SF-1340 FF+3d, CP09-PR-PN-DY-1060 | 15% | -147d |
| CP09-TR5-SF-1340 |  | Large Trees | 10d | 2026-05-11 A | 2026-06-03 | CP09-TR5-IR-1260, CP09-TR5-IR-1270, CP09-TR5-IR-1280, CP09-TR5-IR-1290, CP09-TR5-IR-1300, CP09-TR5-IR-1310, CP09-TR5-IR-1320, CP09-TR5-SF-1330, CP09-TR5-SF-1320, CP09-PR-PN-DY-1020 | 30% | -147d |
| CP09-TR5-SF-1360 |  | Ground Covers | 10d | 2026-05-11 A | 2026-06-07 | CP09-TR5-SF-1330, CP09-TR5-SF-1320, CP09-TR5-SF-1340 SS+3d, CP09-TR5-SF-1340 FF+3d, CP09-PR-PN-DY-1070 | 20% | -147d |
| CP09-TR5-SF-1370 |  | Succulents | 10d | 2026-06-04 | 2026-06-15 | CP09-TR5-SF-1330, CP09-TR5-SF-1320, CP09-TR5-SF-1340 SS+3d, CP09-TR5-SF-1340 FF+3d, CP09-PR-PN-DY-1080 |  | -154d |
| CP09-TR5-SF-1380 |  | Vines & Climbers | 10d | 2026-06-04 | 2026-06-15 | CP09-TR5-SF-1330, CP09-TR5-SF-1320, CP09-TR5-SF-1340 SS+3d, CP09-TR5-SF-1340 FF+3d, CP09-PR-PN-DY-1030 |  | -154d |
| CP09-TR5-SF-1400 |  | Lawn | 10d | 2026-06-04 | 2026-06-15 | CP09-TR5-SF-1330, CP09-TR5-SF-1320, CP09-TR5-SF-1340 SS+3d, CP09-TR5-SF-1340 FF+3d, CP09-PR-PN-DY-1040 |  | -154d |
| CP09-TR5-SF-1390 |  | Ornamental grass | 10d | 2026-06-23 | 2026-07-04 | CP09-TR5-SF-1330, CP09-TR5-SF-1320, CP09-TR5-SF-1340 SS+3d, CP09-TR5-SF-1340 FF+3d, CP09-PR-PN-DY-1050 |  | -170d |

| ID | WBS | Task | Duration | Start | Finish | Predecessors | Complete | Total float |
| --- | --- | --- | --- | --- | --- | --- | --- | --- |
|  | 9 | **Terrace # 06** |  | 2024-07-15 | 2026-08-23 |  |  |  |
|  | 8 | **Swimming Pool-SP04 & Mechnical Room-MR-04** |  | 2024-07-15 | 2026-07-27 |  |  |  |
|  | 1 | **Structure Works for Swimming Pool** |  | 2024-07-15 | 2026-04-28 |  |  |  |
| CP09-TR6-SW-2090 |  | Excvation up to Formation Level | 7d | 2024-07-15 A | 2024-09-19 A | CP09-MS-1010, CP09-CLD-1000, CP09-TR5-SW-1730 | 100% |  |
| CP09-TR6-SW-2100 |  | Plain Concret for For Raft | 5d | 2024-11-05 A | 2024-11-20 A | CP09-TR6-SW-2090, CP09-EN-TR6-A-2120, CP09-PR-CV-DY-1000 SS | 100% |  |
| CP09-TR6-SW-2110 |  | Water Proofing with screed | 3d | 2024-11-21 A | 2024-11-23 A | CP09-TR6-SW-2100, CP09-EN-TR6-A-2140, CP09-PR-CV-DY-1010 SS | 100% |  |
| CP09-TR6-SW-2120 |  | Reinforcement concrete for Raft | 10d | 2025-05-18 A | 2025-05-22 A | CP09-TR6-SW-2110, CP09-EN-TR6-A-2120, CP09-EN-TR6-A-2130, CP09-PR-CV-DY-1130 | 100% |  |
| CP09-TR6-SW-2140 |  | Reinforcement Concrete for Walls | 15d | 2025-09-30 A | 2025-10-04 A | CP09-TR6-SW-2130 | 100% |  |
| CP09-TR6-SW-2130 |  | Water Proofing for Raft with screed | 3.75d | 2025-12-22 A | 2025-12-26 A | CP09-TR6-SW-2120, CP09-EN-TR6-A-2140, CP09-PR-CV-DY-1010 SS | 100% |  |
| CP09-TR6-SW-2150 |  | External Waterproofing for Walls | 5d | 2026-04-24 A | 2026-04-28 A | CP09-TR6-SW-2140 | 100% |  |
| CP09-TR6-SW-2160 |  | Protection Block Works | 5d | 2026-04-24 A | 2026-04-28 A | CP09-TR6-SW-2150, CP09-PR-CV-DY-1020 SS | 100% |  |
| CP09-TR6-SW-2170 |  | Backfilling | 5.62d | 2026-04-24 A | 2026-04-28 A | CP09-TR6-SW-2160, CP09-TR6-SW-2320 FF | 100% |  |
|  | 3 | **Finishing Works for Swimming Pool** |  | 2026-06-10 | 2026-07-11 |  |  |  |
| CP09-TR6-SW-2180 |  | Mosaics Tiles | 11.25d | 2026-06-10 | 2026-06-23 | CP09-TR6-SW-2160, CP09-TR6-SW-2170, CP09-EN-TR6-A-2150, CP09-PR-CV-DY-1030 |  | -175.56d |
| CP09-TR6-SW-2190 |  | Granite for Pool Edg | 3.75d | 2026-06-23 | 2026-06-27 | CP09-TR6-SW-2180, CP09-EN-TR6-A-2160, CP09-PR-CV-DY-1040 |  | -175.56d |
| CP09-TR6-SW-2200 |  | Garnite for Drinage Grate | 3.75d | 2026-06-23 | 2026-06-27 | CP09-TR6-SW-2190 SS, CP09-EN-TR6-A-2160 |  | -171.81d |
| CP09-TR6-SW-2210 |  | Granite for Pool Coping | 3.75d | 2026-06-28 | 2026-07-01 | CP09-TR6-SW-2190, CP09-EN-TR6-A-2160 |  | -175.56d |
| CP09-TR6-SW-2220 |  | Stanless Steel Ladders | 2.81d | 2026-07-01 | 2026-07-05 | CP09-TR6-SW-2180, CP09-TR6-SW-2190, CP09-TR6-SW-2200, CP09-TR6-SW-2210, CP09-EN-TR6-A-2180, CP09-EN-TR6-A-2170, CP09-PR-CV-DY-1050 |  | -175.56d |
| CP09-TR6-SW-2230 |  | Stanless Steel Handrial | 5d | 2026-07-05 | 2026-07-11 | CP09-TR6-SW-2220, CP09-EN-TR6-A-2180, CP09-PR-CV-DY-1060 |  | -175.56d |
|  | 4 | **Machine Room_MR04** |  | 2024-09-18 | 2026-06-14 |  |  |  |
| CP09-TR6-SW-2240 |  | Excvation up to Formation Level | 6d | 2024-09-18 A | 2024-10-12 A | CP09-TR6-SW-2090 SS | 100% |  |
| CP09-TR6-SW-2250 |  | Plain Concret for For Raft | 2.81d | 2024-12-11 A | 2024-12-14 A | CP09-TR6-SW-2240, CP09-EN-TR6-A-2120 | 100% |  |
| CP09-TR6-SW-2260 |  | Water Proofing with screed | 1.88d | 2024-12-15 A | 2024-12-21 A | CP09-TR6-SW-2250, CP09-EN-TR6-A-2140, CP09-PR-CV-DY-1010 | 100% |  |
| CP09-TR6-SW-2270 |  | Reinforcement concrete for Raft | 10d | 2025-01-02 A | 2025-04-23 A | CP09-TR6-SW-2260, CP09-EN-TR6-A-2120, CP09-EN-TR6-A-2130 | 100% |  |
| CP09-TR6-SW-2280 |  | Water Proofing for Raft with screed | 3.75d | 2025-09-30 A | 2025-12-26 A | CP09-TR6-SW-2270 | 100% |  |
| CP09-TR6-SW-2290 |  | Reinforcement Concrete for Walls & Columns | 15d | 2025-09-30 A | 2025-10-04 A | CP09-TR6-SW-2280 | 100% |  |
| CP09-TR6-SW-2300 |  | Reinforcement Concrete for Slab | 21d | 2026-01-12 A | 2026-01-23 A | CP09-TR6-SW-2290 | 100% |  |
| CP09-TR6-SW-2310 |  | External Waterproofing with Protection | 5d | 2026-04-20 A | 2026-04-28 A | CP09-TR6-SW-2300 | 100% |  |
| CP09-TR6-SW-2320 |  | Backfilling | 5d | 2026-04-24 A | 2026-04-28 A | CP09-TR6-SW-2310 | 100% |  |
| CP09-TR6-SW-2410 |  | Plaster for Internal Walls | 6d | 2026-05-04 A | 2026-05-08 A | CP09-TR6-SW-2310, CP09-EN-TR6-A-2480, CP09-PR-CV-DY-1070 | 100% |  |
| CP09-TR6-SW-2420 |  | Emulsion Paint for Internal Wall | 6d | 2026-05-04 A | 2026-05-08 A | CP09-TR6-SW-2410, CP09-TR6-SW-2360, CP09-PR-CV-DY-1080 | 100% |  |
| CP09-TR6-SW-2430 |  | Epoxy for flooring | 3d | 2026-05-04 A | 2026-05-26 | CP09-TR6-SW-2420, CP09-TR6-SW-2440, CP09-TR6-SW-2330, CP09-TR6-SW-2350, CP09-TR6-SW-2390, CP09-TR6-SW-2400, CP09-PR-CV-DY-1110 | 80% | -137d |
| CP09-TR6-SW-2440 |  | Metal Works | 5d | 2026-05-24 | 2026-05-28 | CP09-TR6-SW-2420 |  | -101d |
| CP09-TR6-SW-2330 |  | Drainage Gravel including Geotextile & Geocomposit | 3.75d | 2026-06-10 | 2026-06-14 | CP09-TR6-SW-2420, CP09-PR-CV-DY-1090, CP09-PR-CV-DY-1100 |  | -114.75d |
|  | 2 | **MEP Works for Swimmimg Pool & Machine Room** |  | 2025-09-24 | 2026-07-27 |  |  |  |
|  | 1 | **Mechnical Works** |  | 2025-09-24 | 2026-07-14 |  |  |  |
| CP09-TR6-SW-2340 |  | UPVC pipes, fitting, valves, | 15d | 2025-09-24 A | 2026-06-09 | CP09-TR6-SW-2410, CP09-EN-TR6-A-2190, CP09-PR-ME-DY-1000, CP09-PR-ME-DY-1010 | 40% | -179d |
| CP09-TR6-SW-2350 |  | Mechnical Equipment (Valves, Pumps, Filtters, Controllers ,Dosinng,& Ventilation exahust fan) | 30d | 2026-06-10 | 2026-07-14 | CP09-TR6-SW-2420, CP09-TR6-SW-2340, CP09-EN-TR6-A-2190, CP09-PR-ME-DY-1020, CP09-PR-ME-DY-1030, CP09-PR-ME-DY-1040, CP09-PR-ME-DY-1050, CP09-PR-ME-DY-1060, CP09-PR-ME-DY-1070, CP09-PR-ME-DY-1080 |  | -179d |
|  | 2 | **Electrical Works-SW** |  | 2026-06-10 | 2026-07-27 |  |  |  |
| CP09-TR6-SW-2360 |  | Conduits, Cable tray | 5d | 2026-06-10 | 2026-06-16 | CP09-TR6-SW-2410, CP09-EN-TR6-A-2200, CP09-PR-EL-DY-1000, CP09-PR-EL-DY-1010 |  | -189.06d |
| CP09-TR6-SW-2370 |  | Panel boards | 5d | 2026-06-16 | 2026-06-22 | CP09-TR6-SW-2360, CP09-TR6-SW-2420, CP09-EN-TR6-A-2200, CP09-PR-EL-DY-1020 |  | -189.06d |
| CP09-TR6-SW-2380 |  | Power Cables & Wires | 10d | 2026-06-22 | 2026-07-04 | CP09-TR6-SW-2370, CP09-TR6-SW-2360, CP09-EN-TR6-A-2200, CP09-PR-EL-DY-1030 |  | -189.06d |
| CP09-TR6-SW-2400 |  | Earthing System | 15d | 2026-06-22 | 2026-07-09 | CP09-TR6-SW-2380 SS, CP09-PR-EL-DY-1040 |  | -174.06d |
| CP09-TR6-SW-2390 |  | (Lighting Outlets , Switches, Fixture ) | 20d | 2026-07-04 | 2026-07-27 | CP09-TR6-SW-2360, CP09-TR6-SW-2380, CP09-TR6-SW-2370, CP09-PR-EL-DY-1050, CP09-PR-EL-DY-1140 |  | -189.06d |
|  | 6 | **Earth Work** |  | 2026-02-16 | 2026-03-29 |  |  |  |
|  | 1 | **Grading works** |  | 2026-02-16 | 2026-03-29 |  |  |  |
| CP09-TR6-EW-1090 |  | Excavation work to Reduce Level | 15d | 2026-02-16 A | 2026-03-29 A | CP09-TR6-SW-2240, CP09-EN-TR6-A-2210, CP09-CLD-1000, CP09-TR4-EW-1030 FS+6d, CP09-TR4-EW-1040 FS+6d | 100% |  |
| CP09-TR6-EW-1100 |  | Filling works to make up levels with Compacting | 15d | 2026-02-16 A | 2026-03-29 A | CP09-TR6-SW-2240, CP09-TR6-EW-1090 SS+4.69d, CP09-EN-TR6-A-2210 | 100% |  |
|  | 2 | **Planting** |  | 2026-02-22 | 2026-03-29 |  |  |  |
| CP09-TR6-EW-1110 |  | Excavation works for Planting Beds | 15d | 2026-02-22 A | 2026-03-29 A | CP09-TR6-EW-1090 SS, CP09-TR6-EW-1100 SS, CP09-EN-TR6-A-2210 | 100% |  |
|  | 9 | **Retaining & Cheek Walls** |  | 2026-02-16 | 2026-07-14 |  |  |  |
|  | 1 | **Soild Block Work Cheek Walls** |  | 2026-02-16 | 2026-07-14 |  |  |  |
| CP09-TR6-RW-1690 |  | Reinforced Concrete for Tie beam | 4.69d | 2026-02-16 A | 2026-06-07 | CP09-TR6-RW-1680 SS+2.81d, CP09-TR6-RW-1680 FF+2.81d | 95% | -202.69d |
| CP09-TR6-RW-1700 |  | Reinforced Concrete for Column | 5.62d | 2026-02-16 A | 2026-06-09 | CP09-TR6-RW-1690 SS+2.81d, CP09-TR6-RW-1690 FF+2.81d | 95% | -202.69d |
| CP09-TR6-RW-1730 |  | Reinforced Concrete for Beam | 7.5d | 2026-02-16 A | 2026-06-21 | CP09-TR6-RW-1710 SS+3.75d, CP09-TR6-RW-1710 FF+3.75d | 95% | -202.69d |
| CP09-TR6-RW-1750 |  | Backfilling | 5.62d | 2026-02-16 A | 2026-07-02 | CP09-TR6-RW-1740 SS+2.81d, CP09-TR6-RW-1740 FF+2.81d | 95% | -202.69d |
| CP09-TR6-RW-1670 |  | Plaing Concrete with HPDE | 4d | 2026-02-22 A | 2026-05-31 | CP09-TR6-RW-1720 SS+2.81d, CP09-TR6-RW-1720 FF+2.81d, CP09-EN-TR6-A-2220 | 95% | -202.69d |
| CP09-TR6-RW-1680 |  | Reinforced Concrete for Footing | 6d | 2026-02-22 A | 2026-06-03 | CP09-TR6-RW-1670 SS+2.81d, CP09-TR6-RW-1670 FF+2.81d, CP09-EN-TR6-A-2230, CP09-EN-TR6-A-2220 | 95% | -202.69d |
| CP09-TR6-RW-1710 |  | Soild Block Work | 5.62d | 2026-02-22 A | 2026-06-16 | CP09-TR6-RW-1700 SS+5.62d, CP09-TR6-RW-1700 FF+5.62d, CP09-EN-TR6-A-2250, CP09-PR-CV-DY-1020 | 95% | -202.69d |
| CP09-TR6-RW-1720 |  | Excavation | 3.75d | 2026-02-22 A | 2026-05-27 | CP09-TR4-RW-1420, CP09-TR6-EW-1090, CP09-TR6-EW-1100 | 95% | -202.69d |
| CP09-TR6-RW-1740 |  | Waterproofing & Protection | 6.56d | 2026-02-22 A | 2026-06-29 | CP09-TR6-RW-1730 SS+7.5d, CP09-TR6-RW-1730 FF+7.5d, CP09-EN-TR6-A-2240 | 95% | -202.69d |
| CP09-TR6-RW-1760 |  | Marble Cladding | 10d | 2026-06-28 | 2026-07-09 | CP09-TR6-RW-1750 SS+5.62d, CP09-TR6-RW-1750 FF+5.62d, CP09-EN-TR6-A-2260, CP09-PR-CV-DY-1120 |  | -192.25d |
| CP09-TR6-RW-1770 |  | Marble Copping | 10d | 2026-07-04 | 2026-07-14 | CP09-TR6-RW-1760 SS+4.69d, CP09-TR6-RW-1760 FF+4.69d, CP09-EN-TR6-A-2260, CP09-PR-CV-DY-1120 |  | -192.25d |
|  | 2 | **Solid Block Retaining Walls** |  | 2026-02-16 | 2026-07-14 |  |  |  |
| CP09-TR6-RW-1780 |  | Plaing Concrete with HPDE | 5d | 2026-02-16 A | 2026-05-31 | CP09-TR6-RW-1830 SS+2.81d, CP09-TR6-RW-1830 FF+2.81d, CP09-EN-TR6-A-2220 | 95% | -202.69d |
| CP09-TR6-RW-1790 |  | Reinforced Concrete for Footing | 6.56d | 2026-02-16 A | 2026-06-03 | CP09-TR6-RW-1780 SS+2.81d, CP09-TR6-RW-1780 FF+2.81d, CP09-EN-TR6-A-2220, CP09-EN-TR6-A-2230 | 95% | -202.69d |
| CP09-TR6-RW-1810 |  | Reinforced Concrete for Column | 5.62d | 2026-02-16 A | 2026-06-09 | CP09-TR6-RW-1800 SS+2.81d, CP09-TR6-RW-1800 FF+2.81d | 95% | -202.69d |
| CP09-TR6-RW-1840 |  | Reinforced Concrete for Beam | 7.5d | 2026-02-16 A | 2026-06-21 | CP09-TR6-RW-1820 SS+3.75d, CP09-TR6-RW-1820 FF+3.75d | 95% | -202.69d |
| CP09-TR6-RW-1850 |  | Waterproofing & Protection | 6.56d | 2026-02-16 A | 2026-06-29 | CP09-TR6-RW-1840 SS+7.5d, CP09-TR6-RW-1840 FF+7.5d | 95% | -202.69d |
| CP09-TR6-RW-1800 |  | Reinforced Concrete for Tie beam | 5d | 2026-02-22 A | 2026-06-07 | CP09-TR6-RW-1790 SS+2.81d, CP09-TR6-RW-1790 FF+2.81d | 95% | -202.69d |

| ID | WBS | Task | Duration | Start | Finish | Predecessors | Complete | Total float |
| --- | --- | --- | --- | --- | --- | --- | --- | --- |
| CP09-TR6-RW-1820 |  | Soild Block Work | 5.62d | 2026-02-22 A | 2026-06-16 | CP09-TR6-RW-1810 SS+5.62d, CP09-TR6-RW-1810 FF+5.62d, CP09-EN-TR6-A-2250 | 95% | -202.69d |
| CP09-TR6-RW-1830 |  | Excavation | 3.75d | 2026-02-22 A | 2026-05-27 | CP09-TR6-RW-1680, CP09-TR6-EW-1090, CP09-TR6-EW-1100 | 95% | -202.69d |
| CP09-TR6-RW-1860 |  | Backfilling | 5.62d | 2026-02-22 A | 2026-07-02 | CP09-TR6-RW-1850 SS+2.81d, CP09-TR6-RW-1850 FF+2.81d | 95% | -202.69d |
| CP09-TR6-RW-1870 |  | Marble Cladding | 6.56d | 2026-06-30 | 2026-07-08 | CP09-TR6-RW-1860 SS+4.69d, CP09-TR6-RW-1860 FF+4.69d, CP09-EN-TR6-A-2260, CP09-PR-CV-DY-1120 |  | -191.31d |
| CP09-TR6-RW-1880 |  | Marble Copping | 6.56d | 2026-07-06 | 2026-07-14 | CP09-TR6-RW-1870 SS+4.69d, CP09-TR6-RW-1870 FF+4.69d, CP09-EN-TR6-A-2260, CP09-PR-CV-DY-1120 |  | -191.31d |
|  | 1 | **Irrigation Works** |  | 2026-02-16 | 2026-06-22 |  |  |  |
|  | 1 | **Sub-Main & Lateral** |  | 2026-02-16 | 2026-06-07 |  |  |  |
| CP09-TR6-IR-1330 |  | Excavation for Sub-main & Lateral Pieps | 4d | 2026-02-16 A | 2026-05-27 | CP09-EN-TR6-A-2450, CP09-TR6-HD-4000, CP09-TR4-IR-1140 | 90% | -173.56d |
| CP09-TR6-IR-1340 |  | Sub-main & Lateral Pieps laying out and installation | 5d | 2026-02-16 A | 2026-06-02 | CP09-TR6-IR-1330 SS+2d, CP09-TR6-IR-1330 FF+5d, CP09-PR-IR-DY-1000 | 90% | -173.56d |
| CP09-TR6-IR-1360 |  | Backfilling forSub-main & Lateral Pieps | 4d | 2026-02-16 A | 2026-06-07 | CP09-TR6-IR-1350 SS+2d, CP09-TR6-IR-1350 FF+2d | 90% | -173.56d |
| CP09-TR6-IR-1350 |  | Sub-main & Lateral Pieps Testing | 3d | 2026-02-22 A | 2026-06-04 | CP09-TR6-IR-1340 SS+2d, CP09-TR6-IR-1340 FF+2d | 90% | -173.56d |
|  | 2 | **Fittings & Accessories** |  | 2026-06-06 | 2026-06-22 |  |  |  |
| CP09-TR6-IR-1370 |  | Installation of Dripline | 5d | 2026-06-06 | 2026-06-10 | CP09-TR6-SF-1480, CP09-TR6-SF-1490 SS, CP09-TR6-IR-1350, CP09-PR-IR-DY-1010 |  | -168d |
| CP09-TR6-IR-1380 |  | Installation of Sprinklers | 5d | 2026-06-06 | 2026-06-10 | CP09-TR6-IR-1370 SS, CP09-PR-IR-DY-1040 |  | -168d |
| CP09-TR6-IR-1390 |  | Installation Valves & Rings | 5d | 2026-06-11 | 2026-06-16 | CP09-TR6-IR-1380, CP09-PR-IR-DY-1030, CP09-PR-IR-DY-1020 |  | -168d |
| CP09-TR6-IR-1400 |  | Installation of Electrical solenoid valve | 5d | 2026-06-11 | 2026-06-16 | CP09-TR6-IR-1390 SS, CP09-PR-IR-DY-1050 |  | -163d |
| CP09-TR6-IR-1410 |  | Installation of Controller (decoder system plastic pedestal) | 5d | 2026-06-17 | 2026-06-22 | CP09-TR6-IR-1390, CP09-TR6-IR-1400 SS, CP09-PR-IR-DY-1060 |  | -168d |
| CP09-TR6-IR-1420 |  | Installation of Controller decoder cables | 5d | 2026-06-17 | 2026-06-22 | CP09-TR6-IR-1410 SS, CP09-PR-IR-DY-1070 |  | -168d |
| CP09-TR6-IR-1430 |  | Installation of Decoder one station | 5d | 2026-06-17 | 2026-06-22 | CP09-TR6-IR-1420 SS, CP09-PR-IR-DY-1080 |  | -168d |
|  | 4 | **Electrical Works** |  | 2026-02-22 | 2026-06-30 |  |  |  |
|  | 1 | **Power Cable & Pillars** |  | 2026-02-22 | 2026-06-30 |  |  |  |
| CP09-TR6-EL-1120 |  | Excavation | 5d | 2026-02-22 A | 2026-05-28 | CP09-TR6-EW-1090, CP09-TR6-EW-1100, CP09-TR6-IR-1360, CP09-EN-TR6-A-2410, CP09-TR4-EL-1060 | 75% | -193.81d |
| CP09-TR6-EL-1130 |  | Installation of Power Cables | 4d | 2026-02-22 A | 2026-05-31 | CP09-TR6-EL-1120 SS+2d, CP09-TR6-EL-1120 FF+2d, CP09-EN-TR6-A-2410, CP09-EN-TR6-A-2420, CP09-PR-EL-DY-1060 | 75% | -193.81d |
| CP09-TR6-EL-1140 |  | Backfilling for Power Cables | 4d | 2026-02-22 A | 2026-06-02 | CP09-TR6-EL-1130 SS+2d, CP09-TR6-EL-1130 FF+2d | 75% | -193.81d |
| CP09-TR6-EL-1150 |  | Installation of Connecting Pillars | 3d | 2026-06-28 | 2026-06-30 | CP09-TR6-HD-3750, CP09-PR-EL-DY-1070 |  | -157d |
|  | 3 | **Hardscape** |  | 2026-02-09 | 2026-08-17 |  |  |  |
|  | 6 | **Concrete Curb** |  | 2026-04-13 | 2026-05-26 |  |  |  |
| CP09-TR6-HD-3700 |  | Excavation | 2d | 2026-04-13 A | 2026-04-24 A | CP09-TR6-EW-1090, CP09-TR6-EW-1100, CP09-TR6-EW-1110, CP09-TR4-HD-2380 | 100% |  |
| CP09-TR6-HD-3710 |  | Plains Concrete with HDPE waterproofing | 2d | 2026-04-13 A | 2026-04-24 A | CP09-TR6-HD-3700, CP09-EN-TR6-A-2340 | 100% |  |
| CP09-TR6-HD-3980 |  | Under Paving Reinforced Concrete Curb | 4d | 2026-04-13 A | 2026-04-24 A | CP09-TR6-HD-3710 SS+1.88d, CP09-TR6-HD-3710 FF+1.88d | 100% |  |
| CP09-TR6-HD-4000 |  | Instal Flush Curb | 3d | 2026-05-24 | 2026-05-26 | CP09-EN-TR6-A-2340, CP09-PR-HD-DY-1080, CP09-TR6-HD-3980 SS+3d, CP09-TR6-HD-3980 FF+3d |  | -187.81d |
|  | 1 | **Side wake & Plazes** |  | 2026-02-22 | 2026-07-02 |  |  |  |
|  | 8 | **Interlocking Paving** |  | 2026-04-24 | 2026-06-09 |  |  |  |
| CP09-TR6-HD-3720 |  | Crush Stone for Interlock Types IL-(01,02,06,07) | 6.56d | 2026-04-24 A | 2026-05-31 | CP09-EN-TR6-A-2350, CP09-TR6-EW-1090, CP09-TR6-EW-1100, CP09-TR6-IR-1360, CP09-TR6-EL-1140, CP09-PR-HD-DY-1090, CP09-TR4-HD-2130 | 95% | -182.38d |
| CP09-TR6-HD-3730 |  | Sand Layer for Interlock Types IL-(01,02,06,07) | 10d | 2026-04-24 A | 2026-06-06 | CP09-TR6-HD-3720 SS+5d, CP09-TR6-HD-3720 FF+5d, CP09-EN-TR6-A-2350 | 95% | -182.38d |
| CP09-TR6-HD-3740 |  | Motar Bed Interlock Types IL-(03,04,08,09,10) | 10d | 2026-04-24 A | 2026-06-03 | CP09-TR6-HD-3730 SS, CP09-EN-TR6-A-2350 | 95% | -180.81d |
| CP09-TR6-HD-3750 |  | Interlocking Paving | 15d | 2026-04-24 A | 2026-06-09 | CP09-TR6-HD-3730 SS+2.81d, CP09-TR6-HD-3740 SS+2.81d, CP09-TR6-HD-3730 FF+2.81d, CP09-TR6-HD-3740 FF+2.81d, CP09-EN-TR6-A-2350, CP09-PR-HD-DY-1180 | 95% | -183d |
|  | 2 | **Concrete in Situ** |  | 2026-02-22 | 2026-06-03 |  |  |  |
|  | 1 | **Slab on Garde** |  | 2026-02-22 | 2026-05-30 |  |  |  |
| CP09-TR6-HD-3490 |  | Plain Concrete with HDPE | 3.75d | 2026-02-22 A | 2026-05-27 | CP09-TR6-HD-3750, CP09-TR6-EW-1090, CP09-TR6-EW-1100, CP09-TR6-IR-1360, CP09-TR6-EL-1140, CP09-EN-TR6-A-2270 | 75% | -99.75d |
| CP09-TR6-HD-3500 |  | Reinfored Concrete slab on grade | 5.62d | 2026-04-20 A | 2026-05-30 | CP09-TR6-HD-3490 | 75% | -101.62d |
| CP09-TR6-HD-3510 |  | Waterproofing & Screed | 3.75d | 2026-04-20 A | 2026-05-27 | CP09-TR6-HD-3500 | 75% | -99.75d |
|  | 2 | **Concrete In-situ w./Exposed Aggregate Finish** |  | 2026-04-20 | 2026-06-03 |  |  |  |
| CP09-TR6-HD-3520 |  | Concrete casting (including Joints & Wire Mish) | 9.38d | 2026-04-20 A | 2026-06-03 | CP09-TR6-HD-3510, CP09-TR6-HD-4000, CP09-EN-TR6-A-2270, CP09-PR-HD-DY-1000 | 75% | -105.38d |
| CP09-TR6-HD-3530 |  | Finishing Concrete Surface | 5d | 2026-04-20 A | 2026-05-28 | CP09-TR6-HD-3520, CP09-TR6-RW-1760, CP09-TR6-RW-1770, CP09-TR6-RW-1870, CP09-TR6-RW-1880 | 75% | -147.75d |
|  | 1 | **Marble Paving** |  | 2026-02-22 | 2026-05-31 |  |  |  |
|  | 1 | **Slab on Garde** |  | 2026-02-22 | 2026-05-30 |  |  |  |
| CP09-TR6-HD-3440 |  | Plain Concrete with HDPE | 3.75d | 2026-02-22 A | 2026-05-27 | CP09-TR6-HD-3750, CP09-TR6-EW-1090, CP09-TR6-EW-1110, CP09-TR6-IR-1360, CP09-TR6-EL-1140, CP09-EN-TR6-A-2280 | 85% | -99.75d |
| CP09-TR6-HD-3450 |  | Reinfored Concrete slab on grade | 5.62d | 2026-02-22 A | 2026-05-30 | CP09-TR6-HD-3440 | 50% | -101.62d |
| CP09-TR6-HD-3460 |  | Waterproofing & Screed | 5d | 2026-04-20 A | 2026-05-28 | CP09-TR6-HD-3450 | 50% | -101d |
|  | 2 | **Marble Tiles** |  | 2026-04-20 | 2026-05-31 |  |  |  |
| CP09-TR6-HD-3470 |  | Marble Fixiation | 7d | 2026-04-20 A | 2026-05-31 | CP09-TR6-HD-3460, CP09-TR6-HD-4000, CP09-EN-TR6-A-2280, CP09-PR-HD-DY-1010 | 50% | -103d |
| CP09-TR6-HD-3480 |  | Marble Surfcae Finishing | 4d | 2026-04-20 A | 2026-05-27 | CP09-TR6-HD-3470, CP09-TR6-HD-3530 SS | 50% | -146.75d |
|  | 3 | **Wooden Floor Boards** |  | 2026-06-08 | 2026-07-01 |  |  |  |
|  | 1 | **Slab on Garde** |  | 2026-06-08 | 2026-06-20 |  |  |  |
| CP09-TR6-HD-3540 |  | Plain Concrete with HDPE | 2.81d | 2026-06-08 | 2026-06-10 | CP09-TR6-EW-1090, CP09-TR6-EW-1100, CP09-TR6-IR-1360, CP09-TR6-EL-1140, CP09-EN-TR6-A-2290 |  | -172.94d |
| CP09-TR6-HD-3550 |  | Reinfored Concrete slab on grade | 5d | 2026-06-10 | 2026-06-16 | CP09-TR6-HD-3540 |  | -172.94d |
| CP09-TR6-HD-3560 |  | Waterproofing & Screed | 2.81d | 2026-06-16 | 2026-06-20 | CP09-TR6-HD-3550 |  | -172.94d |
|  | 2 | **Wood- Plastic Composit** |  | 2026-06-20 | 2026-07-01 |  |  |  |
| CP09-TR6-HD-3570 |  | WPC Installation | 6.56d | 2026-06-20 | 2026-06-28 | CP09-TR6-HD-3560, CP09-TR6-HD-4000, CP09-EN-TR6-A-2290, CP09-PR-HD-DY-1020 |  | -172.94d |
| CP09-TR6-HD-3580 |  | WPC surface finishing & Accessories | 3.75d | 2026-06-28 | 2026-07-01 | CP09-TR6-HD-3570, CP09-TR6-HD-3480, CP09-TR6-HD-3530 |  | -172.94d |
|  | 4 | **Gravel layer** |  | 2026-06-08 | 2026-06-22 |  |  |  |
|  | 1 | **Slab on Garde** |  | 2026-06-08 | 2026-06-14 |  |  |  |
| CP09-TR6-HD-3590 |  | Plain Concrete with HDPE | 2.81d | 2026-06-08 | 2026-06-10 | CP09-TR6-EW-1090, CP09-TR6-EW-1100, CP09-TR6-IR-1360, CP09-TR6-EL-1140, CP09-EN-TR6-A-2300 |  | -173.56d |
| CP09-TR6-HD-3610 |  | Mortar bed | 2.81d | 2026-06-10 | 2026-06-14 | CP09-TR6-HD-3590 |  | -173.56d |
|  | 2 | **Gravel Layer, w./Earth Colors** |  | 2026-06-14 | 2026-06-22 |  |  |  |
| CP09-TR6-HD-3620 |  | Furnish & install Garvel Layer | 6.56d | 2026-06-14 | 2026-06-22 | CP09-TR6-HD-3610, CP09-TR6-HD-4000, CP09-EN-TR6-A-2300, CP09-PR-HD-DY-1030 |  | -173.56d |
|  | 5 | **Crushed Stone** |  | 2026-06-22 | 2026-07-02 |  |  |  |
|  | 1 | **Slab on Garde** |  | 2026-06-22 | 2026-06-28 |  |  |  |
| CP09-TR6-HD-3630 |  | Geotextile membrane | 2.81d | 2026-06-22 | 2026-06-24 | CP09-TR6-HD-3620, CP09-TR6-EW-1090, CP09-TR6-EW-1100, CP09-TR6-IR-1360, CP09-TR6-EL-1140, CP09-EN-TR6-A-2310 |  | -173.56d |

| ID | WBS | Task | Duration | Start | Finish | Predecessors | Complete | Total float |
| --- | --- | --- | --- | --- | --- | --- | --- | --- |
| CP09-TR6-HD-3650 |  | Gravel fix sheets | 3d | 2026-06-25 | 2026-06-28 | CP09-TR6-HD-3630 |  | -173.56d |
|  | 2 | **Crushed Dolomite Stone** |  | 2026-06-25 | 2026-07-02 |  |  |  |
| CP09-TR6-HD-3660 |  | Furnish & Install Crushed Dolomite stone , w./ mixed colors | 6.56d | 2026-06-25 | 2026-07-02 | CP09-TR6-HD-3650 FF, CP09-TR6-HD-3650 SS, CP09-TR6-HD-3620, CP09-TR6-HD-4000, CP09-EN-TR6-A-2310, CP09-PR-HD-DY-1040 |  | -173.56d |
|  | 6 | **Loose Gravel** |  | 2026-06-10 | 2026-06-18 |  |  |  |
|  | 2 | **Loose Gravel 50mm** |  | 2026-06-10 | 2026-06-18 |  |  |  |
| CP09-TR6-HD-3670 |  | Furnish & Install loose gravel w./earth colors. | 6.56d | 2026-06-10 | 2026-06-18 | CP09-TR6-HD-3590, CP09-TR6-HD-4000, CP09-TR6-IR-1360, CP09-TR6-EL-1140, CP09-EN-TR6-A-2320, CP09-PR-HD-DY-1050 |  | -161.38d |
|  | 7 | **Clean Sand Layer** |  | 2026-05-04 | 2026-05-28 |  |  |  |
|  | 1 | **Kids & Fitness Area** |  | 2026-05-04 | 2026-05-28 |  |  |  |
| CP09-TR6-HD-3680 |  | Geotextile Sheets | 5d | 2026-05-04 A | 2026-05-28 | CP09-TR6-HD-3670, CP09-TR6-EW-1090, CP09-TR6-EW-1100, CP09-TR6-HD-4000, CP09-TR6-IR-1360, CP09-TR6-EL-1140, CP09-EN-TR6-A-2330 | 55% | -101d |
| CP09-TR6-HD-3690 |  | Install Clean sand layer | 5d | 2026-05-04 A | 2026-05-28 | CP09-TR6-HD-3680, CP09-TR6-HD-3670, CP09-TR6-HD-4000, CP09-EN-TR6-A-2330, CP09-PR-HD-DY-1070 | 55% | -139d |
|  | 2 | **Site Improvments** |  | 2026-02-09 | 2026-08-17 |  |  |  |
|  | 1 | **Marble Steps** |  | 2026-02-09 | 2026-07-20 |  |  |  |
| CP09-TR6-HD-3760 |  | Reinforecd Concrete Step. | 5.62d | 2026-02-09 A | 2026-05-30 | CP09-TR6-RW-1860, CP09-TR6-EW-1090, CP09-TR6-EW-1100, CP09-EN-TR6-A-2360, CP09-TR6-IR-1360, CP09-TR6-EL-1140 | 20% | -150.06d |
| CP09-TR6-HD-3770 |  | Install Marble Blocks | 6.56d | 2026-05-25 | 2026-06-02 | CP09-TR6-HD-3760 SS+2.81d, CP09-TR6-HD-3760 FF+2.81d, CP09-PR-HD-DY-1100 |  | -150.06d |
| CP09-TR6-HD-3780 |  | Finishing Marble Surface | 5d | 2026-07-15 | 2026-07-20 | CP09-TR6-HD-3770, CP09-TR6-RW-1760, CP09-TR6-RW-1770, CP09-TR6-RW-1870, CP09-TR6-RW-1880 |  | -170d |
|  | 2 | **Curvelinear Block Seat** |  | 2026-02-16 | 2026-07-21 |  |  |  |
| CP09-TR6-HD-3800 |  | Plaing Concrete with HPDE | 3.75d | 2026-02-16 A | 2026-04-28 A | CP09-TR6-HD-3790 | 100% |  |
| CP09-TR6-HD-3790 |  | Excavation | 2.81d | 2026-02-22 A | 2026-04-28 A | CP09-TR6-RW-1840, CP09-TR6-EW-1090, CP09-TR6-EW-1100, CP09-EN-TR6-A-2370, CP09-TR6-EL-1140 | 100% |  |
| CP09-TR6-HD-3810 |  | W | 5.62d | 2026-02-22 A | 2026-04-28 A | CP09-TR6-HD-3800 | 100% |  |
| CP09-TR6-HD-3820 |  | Reinforced Concrete for beam | 5d | 2026-02-22 A | 2026-04-28 A | CP09-TR6-HD-3810 | 100% |  |
| CP09-TR6-HD-3830 |  | Waterproofing & Protection | 3.75d | 2026-02-22 A | 2026-04-28 A | CP09-TR6-HD-3820 | 100% |  |
| CP09-TR6-HD-3840 |  | Backfilling | 2.81d | 2026-02-22 A | 2026-04-28 A | CP09-TR6-HD-3830 | 100% |  |
| CP09-TR6-HD-3850 |  | Marble Capping | 5.62d | 2026-07-15 | 2026-07-21 | CP09-TR6-RW-1870, CP09-TR6-RW-1880, CP09-TR6-RW-1760, CP09-TR6-RW-1770, CP09-TR6-HD-3840, CP09-PR-HD-DY-1110 |  | -192.25d |
|  | 3 | **Pools Shower-04** |  | 2026-06-03 | 2026-08-17 |  |  |  |
| CP09-TR6-HD-3860 |  | Plain Concrete Basin | 5d | 2026-06-03 | 2026-06-08 | CP09-TR6-HD-4000, CP09-EN-TR6-A-2380, CP09-TR6-EL-1140 |  | -193.81d |
| CP09-TR6-HD-3870 |  | R.Concrete Basin | 7d | 2026-06-09 | 2026-06-16 | CP09-TR6-HD-3860 |  | -193.81d |
| CP09-TR6-HD-3880 |  | Solid Block Work | 7d | 2026-06-17 | 2026-06-24 | CP09-TR6-HD-3870 |  | -193.81d |
| CP09-TR6-HD-3890 |  | Water Proofing | 5d | 2026-06-25 | 2026-06-30 | CP09-TR6-HD-3880 |  | -193.81d |
| CP09-TR6-HD-3900 |  | Backfilling | 5d | 2026-07-01 | 2026-07-06 | CP09-TR6-HD-3890 |  | -193.81d |
| CP09-TR6-HD-3910 |  | Mica Stone Cladding | 5d | 2026-07-07 | 2026-07-12 | CP09-TR6-HD-3900, CP09-PR-HD-DY-1120 |  | -193.81d |
| CP09-TR6-HD-3920 |  | Mica Stone Capping | 5d | 2026-07-13 | 2026-07-18 | CP09-TR6-HD-3910, CP09-PR-HD-DY-1120 |  | -193.81d |
| CP09-TR6-HD-3930 |  | Drainage Cover with Geotextile | 5d | 2026-07-19 | 2026-07-23 | CP09-TR6-HD-3920, CP09-PR-HD-DY-1060 |  | -193.81d |
| CP09-TR6-HD-3940 |  | Blast stone blocks for Flooring | 6d | 2026-07-25 | 2026-07-30 | CP09-TR6-HD-3930, CP09-PR-HD-DY-1130 |  | -193.81d |
| CP09-TR6-HD-3950 |  | Blast Stone Blocks Capping | 6d | 2026-08-01 | 2026-08-06 | CP09-TR6-HD-3940, CP09-PR-HD-DY-1130 |  | -193.81d |
| CP09-TR6-HD-3960 |  | Loose Rounded Pebbles | 6d | 2026-08-08 | 2026-08-13 | CP09-TR6-HD-3950, CP09-PR-HD-DY-1140 |  | -193.81d |
| CP09-TR6-HD-3970 |  | Shower Head Fixation | 2.81d | 2026-08-15 | 2026-08-17 | CP09-TR6-HD-3960, CP09-TR6-HD-3940, CP09-TR6-HD-3950, CP09-PR-HD-DY-1150 |  | -193.81d |
|  | 4 | **Handrails** |  | 2026-07-21 | 2026-07-28 |  |  |  |
| CP09-TR6-HD-4010 |  | Install & Fix Stainless Handrail (500 mm height) | 5.62d | 2026-07-21 | 2026-07-28 | CP09-TR6-HD-3770, CP09-TR6-HD-3850, CP09-EN-TR6-A-2390, CP09-PR-HD-DY-1160 |  | -192.25d |
| CP09-TR6-HD-4020 |  | Install & Fix Glass Handrail (900mm height) | 5.62d | 2026-07-21 | 2026-07-28 | CP09-TR6-HD-3770, CP09-TR6-HD-3850, CP09-EN-TR6-A-2390, CP09-PR-HD-DY-1170 |  | -192.25d |
|  | 11 | **Sinage** |  | 2026-07-02 | 2026-08-23 |  |  |  |
| CP09-TR6-SN-4140 |  | Excavation | 10d | 2026-07-02 | 2026-07-14 | CP09-TR6-RW-1860, CP09-TR6-RW-1750, CP09-TR6-HD-3750, CP09-EN-TR6-A-2430 |  | -202.69d |
| CP09-TR6-SN-4150 |  | Plain Concrete with HDPE | 7d | 2026-07-08 | 2026-07-16 | CP09-TR6-SN-4140 SS+2d, CP09-TR6-SN-4140 FF+2d |  | -202.69d |
| CP09-TR6-SN-4160 |  | Reinforced Concrete | 12d | 2026-07-11 | 2026-07-25 | CP09-TR6-SN-4150 SS+2d, CP09-TR6-SN-4150 FF+2d |  | -202.69d |
| CP09-TR6-SN-4170 |  | Waterproofing | 5d | 2026-07-22 | 2026-07-28 | CP09-TR6-SN-4160 SS+3d, CP09-TR6-SN-4160 FF+3d |  | -202.69d |
| CP09-TR6-SN-4180 |  | Grouting | 5d | 2026-07-25 | 2026-07-30 | CP09-TR6-SN-4170 SS+2d, CP09-TR6-SN-4170 FF+2d |  | -202.69d |
| CP09-TR6-SN-4190 |  | STREET DIRECTIONAL SIGN | 10d | 2026-07-30 | 2026-08-11 | CP09-TR6-SN-4180, CP09-PR-SN-DY-1000 |  | -202.69d |
| CP09-TR6-SN-4200 |  | DIRECTIONAL SIGN FOR VEHICULAR | 10d | 2026-07-30 | 2026-08-11 | CP09-TR6-SN-4180, CP09-PR-SN-DY-1010 |  | -202.69d |
| CP09-TR6-SN-4230 |  | RULES SIGN | 10d | 2026-07-30 | 2026-08-11 | CP09-TR6-SN-4180, CP09-PR-SN-DY-1030 |  | -202.69d |
| CP09-TR6-SN-4210 |  | UNIT ID SIGN (FRONT YARD) | 10d | 2026-08-11 | 2026-08-23 | CP09-TR6-SN-4190, CP09-TR6-SN-4200, CP09-TR6-SN-4230, CP09-TR6-SN-4180, CP09-PR-SN-DY-1020 |  | -202.69d |
| CP09-TR6-SN-4220 |  | UNIT ID SIGN (BACK YARD) | 10d | 2026-08-11 | 2026-08-23 | CP09-TR6-SN-4190, CP09-TR6-SN-4200, CP09-TR6-SN-4230, CP09-TR6-SN-4180, CP09-PR-SN-DY-1020 |  | -202.69d |
| CP09-TR6-SN-4240 |  | IDENTIFICATION SIGN | 10d | 2026-08-11 | 2026-08-23 | CP09-TR6-SN-4190, CP09-TR6-SN-4200, CP09-TR6-SN-4230, CP09-TR6-SN-4180, CP09-PR-SN-DY-1040 |  | -202.69d |
|  | 7 | **Landscape Furntiure** |  | 2026-07-28 | 2026-08-03 |  |  |  |
| CP09-TR6-FN-4030 |  | Install & Fix Pitch Pine Picnic Table | 5d | 2026-07-28 | 2026-08-03 | CP09-TR6-HD-3810, CP09-TR6-HD-4010, CP09-TR6-HD-4020, CP09-TR6-HD-3750, CP09-TR6-HD-3670, CP09-TR6-HD-3660, CP09-TR6-HD-3620, CP09-TR6-HD-3580, CP09-TR6-HD-3480, CP09-TR6-HD-3530, CP09-EN-TR6-A-2400, CP09-PR-FN-DY-1000 |  | -185.25d |
| CP09-TR6-FN-4040 |  | Install & Fix Crcular Cast-iron tree grate | 5d | 2026-07-28 | 2026-08-03 | CP09-TR6-HD-4010, CP09-TR6-HD-4020, CP09-TR6-HD-3750, CP09-TR6-HD-3670, CP09-TR6-HD-3660, CP09-TR6-HD-3620, CP09-TR6-HD-3580, CP09-TR6-HD-3480, CP09-TR6-HD-3530, CP09-EN-TR6-A-2400, CP09-PR-FN-DY-1010 |  | -185.25d |
| CP09-TR6-FN-4050 |  | Install & Fix Aluminium Cabana for Pool Shading | 5d | 2026-07-28 | 2026-08-03 | CP09-TR6-HD-4010, CP09-TR6-HD-4020, CP09-TR6-HD-3750, CP09-TR6-HD-3670, CP09-TR6-HD-3660, CP09-TR6-HD-3620, CP09-TR6-HD-3580, CP09-TR6-HD-3480, CP09-TR6-HD-3530, CP09-EN-TR6-A-2400, CP09-PR-FN-DY-1020 |  | -192.25d |
| CP09-TR6-FN-4060 |  | Install & Fix Pitch Pine Benchs | 5d | 2026-07-28 | 2026-08-03 | CP09-TR6-HD-4010, CP09-TR6-HD-4020, CP09-TR6-HD-3750, CP09-TR6-HD-3670, CP09-TR6-HD-3660, CP09-TR6-HD-3620, CP09-TR6-HD-3580, CP09-TR6-HD-3480, CP09-TR6-HD-3530, CP09-EN-TR6-A-2400, CP09-PR-FN-DY-1030 |  | -185.25d |
| CP09-TR6-FN-4070 |  | Install & Fix Polyester Hammocks | 5d | 2026-07-28 | 2026-08-03 | CP09-TR6-HD-4010, CP09-TR6-HD-4020, CP09-TR6-HD-3750, CP09-TR6-HD-3670, CP09-TR6-HD-3660, CP09-TR6-HD-3620, CP09-TR6-HD-3580, CP09-TR6-HD-3480, CP09-TR6-HD-3530, CP09-EN-TR6-A-2400, CP09-PR-FN-DY-1040 |  | -185.25d |
| CP09-TR6-FN-4080 |  | Install & Fix Adult Play Swing | 5d | 2026-07-28 | 2026-08-03 | CP09-TR6-HD-4010, CP09-TR6-HD-4020, CP09-TR6-HD-3750, CP09-TR6-HD-3670, CP09-TR6-HD-3660, CP09-TR6-HD-3620, CP09-TR6-HD-3580, CP09-TR6-HD-3480, CP09-TR6-HD-3530, CP09-EN-TR6-A-2400, CP09-PR-FN-DY-1050 |  | -185.25d |
| CP09-TR6-FN-4090 |  | Install & Fix Aluminum Trash Bin | 5d | 2026-07-28 | 2026-08-03 | CP09-TR6-HD-4010, CP09-TR6-HD-4020, CP09-TR6-HD-3750, CP09-TR6-HD-3670, CP09-TR6-HD-3660, CP09-TR6-HD-3620, CP09-TR6-HD-3580, CP09-TR6-HD-3480, CP09-TR6-HD-3530, CP09-EN-TR6-A-2400, CP09-PR-FN-DY-1060 |  | -185.25d |
| CP09-TR6-FN-4100 |  | Install & Fix tensile Teflon Tent | 5d | 2026-07-28 | 2026-08-03 | CP09-TR6-HD-4010, CP09-TR6-HD-4020, CP09-TR6-HD-3750, CP09-TR6-HD-3670, CP09-TR6-HD-3660, CP09-TR6-HD-3620, CP09-TR6-HD-3580, CP09-TR6-HD-3480, CP09-TR6-HD-3530, CP09-EN-TR6-A-2400, CP09-PR-FN-DY-1070 |  | -185.25d |
| CP09-TR6-FN-4110 |  | Lanscape Edging ( Rubber) | 5d | 2026-07-28 | 2026-08-03 | CP09-TR6-HD-4010, CP09-TR6-HD-4020, CP09-TR6-HD-3750, CP09-TR6-HD-3670, CP09-TR6-HD-3660, CP09-TR6-HD-3620, CP09-TR6-HD-3580, CP09-TR6-HD-3480, CP09-TR6-HD-3530, CP09-EN-TR6-A-2400, CP09-PR-FN-DY-1080 |  | -185.25d |
|  | 10 | **Play Field Equipment** |  | 2026-02-09 | 2026-06-09 |  |  |  |
| CP09-TR6-PE-4130 |  | Kids playground equipment | 10d | 2026-02-09 A | 2026-06-03 | CP09-TR6-HD-3690, CP09-PR-PE-DY-1040, CP09-PR-PE-DY-1050, CP09-PR-PE-DY-1060, CP09-PR-PE-DY-1070, CP09-PR-PE-DY-1080, CP09-PR-PE-DY-1090, CP09-PR-PE-DY-1100 | 5% | -134d |
| CP09-TR6-PE-4120 |  | Fitness areas equipment | 10d | 2026-05-30 | 2026-06-09 | CP09-TR6-HD-3690, CP09-EN-TR6-A-2440, CP09-PR-PE-DY-1000, CP09-PR-PE-DY-1010, CP09-PR-PE-DY-1020, CP09-PR-PE-DY-1030 |  | -139d |
|  | 5 | **Lighting for Softscape** |  | 2026-06-10 | 2026-08-11 |  |  |  |
|  | 1 | **Exterior Lighting** |  | 2026-06-10 | 2026-08-11 |  |  |  |
| CP09-TR6-SF-1570 |  | Install Landscape Lighting Pole | 14d | 2026-06-10 | 2026-06-25 | CP09-TR6-HD-3750, CP09-TR6-EL-1130, CP09-EN-TR6-A-2470, CP09-PR-EL-DY-1080 |  | -168d |
| CP09-TR6-SF-1580 |  | Install Bollard for Walkways | 10d | 2026-07-02 | 2026-07-14 | CP09-TR6-EL-1130, CP09-TR6-HD-3750, CP09-TR6-HD-3530, CP09-TR6-HD-3480, CP09-TR6-HD-3580, CP09-TR6-HD-3620, CP09-TR6-HD-3660, CP09-TR6-HD-3670, CP09-EN-TR6-A-2470, CP09-PR-EL-DY-1090, CP09-TR6-SF-1570 |  | -173.56d |
| CP09-TR6-SF-1600 |  | Install Inground Uplight For Palms | 7d | 2026-07-06 | 2026-07-13 | CP09-TR6-SF-1610 SS, CP09-TR6-SF-1580 SS, CP09-EN-TR6-A-2470, CP09-PR-EL-DY-1120 |  | -168d |
| CP09-TR6-SF-1610 |  | Install Projectors for Trees | 7d | 2026-07-06 | 2026-07-13 | CP09-TR6-SF-1500, CP09-TR6-SF-1510, CP09-TR6-SF-1520, CP09-TR6-SF-1530, CP09-TR6-SF-1540, CP09-TR6-SF-1550, CP09-TR6-SF-1560, CP09-EN-TR6-A-2470, CP09-PR-EL-DY-1130 |  | -168d |

| ID | WBS | Task | Duration | Start | Finish | Predecessors | Complete | Total float |
| --- | --- | --- | --- | --- | --- | --- | --- | --- |
| CP09-TR6-SF-1590 |  | Install Diffused Wall Recessed Step | 10d | 2026-07-06 | 2026-07-18 | CP09-TR6-SF-1580 SS+3d, CP09-EN-TR6-A-2470, CP09-PR-EL-DY-1110 |  | -171.56d |
| CP09-TR6-SF-1620 |  | Install Surface Mountaed Down Light for Pool Cabans | 7d | 2026-08-03 | 2026-08-11 | CP09-TR6-FN-4050, CP09-EN-TR6-A-2470, CP09-PR-EL-DY-1100 |  | -192.25d |
|  | 2 | **Outlet Lighting Fixtures** |  | 2026-07-14 | 2026-07-20 |  |  |  |
| CP09-TR6-SF-1630 |  | Install outlet lighting fixtures | 5d | 2026-07-14 | 2026-07-20 | CP09-TR6-SF-1580, CP09-EN-TR6-A-2470, CP09-PR-EL-DY-1150 |  | -173.56d |
|  | 2 | **Softscape** |  | 2026-01-05 | 2026-07-05 |  |  |  |
|  | 1 | **Planting** |  | 2026-01-05 | 2026-07-05 |  |  |  |
| CP09-TR6-SF-1480 |  | Sweet sand for all plants | 10d | 2026-01-05 A | 2026-06-03 | CP09-TR6-EW-1110, CP09-TR6-HD-4000, CP09-TR6-HD-3750, CP09-EN-TR6-A-2460, CP09-PR-PN-DY-1000, CP09-TR4-SF-1160, CP09-TR4-SF-1170 | 55% | -167d |
| CP09-TR6-SF-1490 |  | Organic Manure | 10d | 2026-01-05 A | 2026-06-03 | CP09-TR6-SF-1480 SS+5d, CP09-EN-TR6-A-2460, CP09-PR-PN-DY-1010 | 55% | -157d |
| CP09-TR6-SF-1500 |  | Large Trees | 8d | 2026-06-23 | 2026-07-01 | CP09-TR6-IR-1370, CP09-TR6-IR-1380, CP09-TR6-IR-1390, CP09-TR6-IR-1400, CP09-TR6-IR-1410, CP09-TR6-IR-1420, CP09-TR6-IR-1430, CP09-TR6-SF-1490, CP09-TR6-SF-1480, CP09-PR-PN-DY-1020 |  | -168d |
| CP09-TR6-SF-1510 |  | Shrubs | 7d | 2026-06-28 | 2026-07-05 | CP09-TR6-SF-1490, CP09-TR6-SF-1480, CP09-TR6-SF-1500 SS+3d, CP09-TR6-SF-1500 FF+3d, CP09-PR-PN-DY-1060 |  | -168d |
| CP09-TR6-SF-1520 |  | Ground Covers | 7d | 2026-06-28 | 2026-07-05 | CP09-TR6-SF-1490, CP09-TR6-SF-1480, CP09-TR6-SF-1500 SS+3d, CP09-TR6-SF-1500 FF+3d, CP09-PR-PN-DY-1070 |  | -168d |
| CP09-TR6-SF-1530 |  | Succulents | 6d | 2026-06-29 | 2026-07-05 | CP09-TR6-SF-1490, CP09-TR6-SF-1480, CP09-TR6-SF-1500 SS+3d, CP09-TR6-SF-1500 FF+3d, CP09-PR-PN-DY-1080 |  | -168d |
| CP09-TR6-SF-1540 |  | Vines & Climbers | 6d | 2026-06-29 | 2026-07-05 | CP09-TR6-SF-1490, CP09-TR6-SF-1480, CP09-TR6-SF-1500 SS+3d, CP09-TR6-SF-1500 FF+3d, CP09-PR-PN-DY-1030 |  | -168d |
| CP09-TR6-SF-1550 |  | Ornamental grass | 6d | 2026-06-29 | 2026-07-05 | CP09-TR6-SF-1490, CP09-TR6-SF-1480, CP09-TR6-SF-1500 SS+3d, CP09-TR6-SF-1500 FF+3d, CP09-PR-PN-DY-1050 |  | -168d |
| CP09-TR6-SF-1560 |  | Lawn | 6d | 2026-06-29 | 2026-07-05 | CP09-TR6-SF-1490, CP09-TR6-SF-1480, CP09-TR6-SF-1500 SS+3d, CP09-TR6-SF-1500 FF+3d, CP09-PR-PN-DY-1040 |  | -168d |
|  | 11 | **Terrace # 07** |  | 2024-07-16 | 2026-09-29 |  |  |  |
|  | 8 | **Swimming Pool-SP05 & Mechnical Room-MR-05** |  | 2024-09-13 | 2026-08-29 |  |  |  |
|  | 1 | **Structure Works for Swimming Pool** |  | 2024-09-13 | 2026-06-10 |  |  |  |
| CP09-TR7-SW-2450 |  | Excvation up to Formation Level | 7d | 2024-09-13 A | 2024-10-10 A | CP09-TR6-SW-2090, CP09-TR6-RW-1830, CP09-MS-1010, CP09-CLD-1000 | 100% |  |
| CP09-TR7-SW-2460 |  | Plain Concret for For Raft | 5d | 2024-11-06 A | 2024-11-19 A | CP09-TR6-SW-2140, CP09-TR7-SW-2450, CP09-EN-TR7-A-2490, CP09-PR-CV-DY-1000 SS | 100% |  |
| CP09-TR7-SW-2470 |  | Water Proofing with screed | 3d | 2024-11-20 A | 2024-11-23 A | CP09-TR7-SW-2460, CP09-EN-TR7-A-2510, CP09-PR-CV-DY-1010 SS | 100% |  |
| CP09-TR7-SW-2480 |  | Reinforcement concrete for Raft | 10d | 2025-05-18 A | 2025-12-29 A | CP09-TR7-SW-2470, CP09-EN-TR7-A-2490, CP09-EN-TR7-A-2500, CP09-PR-CV-DY-1130 | 100% |  |
| CP09-TR7-SW-2490 |  | Water Proofing for Raft with screed | 3.75d | 2025-12-01 A | 2025-12-05 A | CP09-TR7-SW-2480, CP09-EN-TR7-A-2510, CP09-PR-CV-DY-1010 SS | 100% |  |
| CP09-TR7-SW-2500 |  | Reinforcement Concrete for Walls | 21d | 2025-12-22 A | 2026-01-16 A | CP09-TR7-SW-2490 | 100% |  |
| CP09-TR7-SW-2510 |  | External Waterproofing for Walls | 5d | 2026-05-24 | 2026-05-28 | CP09-TR7-SW-2500 |  | -160.19d |
| CP09-TR7-SW-2520 |  | Protection Block Works | 5d | 2026-05-30 | 2026-06-03 | CP09-TR7-SW-2510, CP09-PR-CV-DY-1020 SS |  | -160.19d |
| CP09-TR7-SW-2530 |  | Backfilling | 5.62d | 2026-06-04 | 2026-06-10 | CP09-TR7-SW-2520, CP09-TR7-SW-2680 FF |  | -160.19d |
|  | 3 | **Finishing Works for Swimming Pool** |  | 2026-06-10 | 2026-07-12 |  |  |  |
| CP09-TR7-SW-2540 |  | Mosaics Tiles | 11.25d | 2026-06-10 | 2026-06-23 | CP09-TR7-SW-2520, CP09-TR7-SW-2530, CP09-EN-TR7-A-2520, CP09-PR-CV-DY-1030 |  | -160.19d |
| CP09-TR7-SW-2550 |  | Granite for Pool Edg | 3.75d | 2026-06-23 | 2026-06-28 | CP09-TR7-SW-2540, CP09-EN-TR7-A-2530, CP09-PR-CV-DY-1040 |  | -160.19d |
| CP09-TR7-SW-2560 |  | Garnite for Drinage Grate | 3.75d | 2026-06-23 | 2026-06-28 | CP09-TR7-SW-2550 SS, CP09-EN-TR7-A-2530 |  | -156.44d |
| CP09-TR7-SW-2570 |  | Granite for Pool Coping | 3.75d | 2026-06-28 | 2026-07-02 | CP09-TR7-SW-2550, CP09-EN-TR7-A-2530 |  | -160.19d |
| CP09-TR7-SW-2580 |  | Stanless Steel Ladders | 2.81d | 2026-07-02 | 2026-07-06 | CP09-TR7-SW-2540, CP09-TR7-SW-2550, CP09-TR7-SW-2560, CP09-TR7-SW-2570, CP09-EN-TR7-A-2550, CP09-EN-TR7-A-2540, CP09-PR-CV-DY-1050 |  | -160.19d |
| CP09-TR7-SW-2590 |  | Stanless Steel Handrial | 5d | 2026-07-06 | 2026-07-12 | CP09-TR7-SW-2580, CP09-EN-TR7-A-2550, CP09-PR-CV-DY-1060 |  | -160.19d |
|  | 4 | **Machine Room_MR05** |  | 2024-10-14 | 2026-08-29 |  |  |  |
| CP09-TR7-SW-2600 |  | Excvation up to Formation Level | 3.75d | 2024-10-14 A | 2024-10-26 A | CP09-TR7-SW-2450 SS | 100% |  |
| CP09-TR7-SW-2610 |  | Plain Concret for For Raft | 2.81d | 2024-11-25 A | 2024-11-30 A | CP09-TR7-SW-2600, CP09-EN-TR7-A-2490 | 100% |  |
| CP09-TR7-SW-2620 |  | Water Proofing with screed | 1.88d | 2024-12-01 A | 2024-12-03 A | CP09-TR7-SW-2610, CP09-EN-TR7-A-2510, CP09-PR-CV-DY-1010 | 100% |  |
| CP09-TR7-SW-2630 |  | Reinforcement concrete for Raft | 10d | 2024-12-04 A | 2025-04-15 A | CP09-TR7-SW-2620, CP09-EN-TR7-A-2490, CP09-EN-TR7-A-2500 | 100% |  |
| CP09-TR7-SW-2640 |  | Water Proofing for Raft with screed | 3.75d | 2025-05-11 A | 2025-12-05 A | CP09-TR7-SW-2630 | 100% |  |
| CP09-TR7-SW-2650 |  | Reinforcement Concrete for Walls & Columns | 15d | 2025-09-30 A | 2025-10-04 A | CP09-TR7-SW-2640 | 100% |  |
| CP09-TR7-SW-2660 |  | Reinforcement Concrete for Slab | 21d | 2025-11-10 A | 2025-11-14 A | CP09-TR7-SW-2650 | 100% |  |
| CP09-TR7-SW-2670 |  | External Waterproofing with Protection | 5d | 2026-04-06 A | 2026-05-28 | CP09-TR7-SW-2660 | 75% | -154.56d |
| CP09-TR7-SW-2770 |  | Plaster for Internal Walls | 6d | 2026-05-04 A | 2026-05-08 A | CP09-TR7-SW-2670, CP09-EN-TR7-A-2850, CP09-PR-CV-DY-1070 | 100% |  |
| CP09-TR7-SW-2780 |  | Emulsion Paint for Internal Wall | 6d | 2026-05-04 A | 2026-05-08 A | CP09-TR7-SW-2770, CP09-TR7-SW-2720, CP09-PR-CV-DY-1080 | 100% |  |
| CP09-TR7-SW-2800 |  | Metal Works | 5d | 2026-05-24 | 2026-05-28 | CP09-TR7-SW-2780 |  | -126d |
| CP09-TR7-SW-2680 |  | Backfilling | 5d | 2026-05-30 | 2026-06-03 | CP09-TR7-SW-2670 |  | -154.56d |
| CP09-TR7-SW-2690 |  | Drainage Gravel including Geotextile & Geocomposit | 3.75d | 2026-06-10 | 2026-06-14 | CP09-TR7-SW-2780, CP09-PR-CV-DY-1090, CP09-PR-CV-DY-1100 |  | -139.75d |
| CP09-TR7-SW-2790 |  | Epoxy for flooring | 3d | 2026-08-25 | 2026-08-29 | CP09-TR7-SW-2780, CP09-TR7-SW-2800, CP09-TR7-SW-2690, CP09-TR7-SW-2710, CP09-TR7-SW-2750, CP09-TR7-SW-2760, CP09-PR-CV-DY-1110 |  | -201.06d |
|  | 2 | **MEP Works for Swimmimg Pool & Machine Room** |  | 2025-05-18 | 2026-08-25 |  |  |  |
|  | 1 | **Mechnical Works** |  | 2025-05-18 | 2026-07-14 |  |  |  |
| CP09-TR7-SW-2700 |  | UPVC pipes, fitting, valves, | 15d | 2025-05-18 A | 2026-06-09 | CP09-TR7-SW-2770, CP09-EN-TR7-A-2560, CP09-PR-ME-DY-1000, CP09-PR-ME-DY-1010 | 40% | -166d |
| CP09-TR7-SW-2710 |  | Mechnical Equipment (Valves, Pumps, Filtters, Controllers ,Dosinng,& Ventilation exahust fan) | 30d | 2026-06-10 | 2026-07-14 | CP09-TR7-SW-2780, CP09-TR7-SW-2700, CP09-EN-TR7-A-2560, CP09-PR-ME-DY-1020, CP09-PR-ME-DY-1030, CP09-PR-ME-DY-1040, CP09-PR-ME-DY-1050, CP09-PR-ME-DY-1060, CP09-PR-ME-DY-1070, CP09-PR-ME-DY-1080 |  | -166d |
|  | 2 | **Electrical Works-SW** |  | 2026-06-10 | 2026-08-25 |  |  |  |
| CP09-TR7-SW-2720 |  | Conduits, Cable tray | 10d | 2026-06-10 | 2026-06-22 | CP09-TR7-SW-2770, CP09-EN-TR7-A-2570, CP09-PR-EL-DY-1000, CP09-PR-EL-DY-1010 |  | -201.06d |
| CP09-TR7-SW-2730 |  | Panel boards | 10d | 2026-06-22 | 2026-07-04 | CP09-TR7-SW-2720, CP09-TR7-SW-2780, CP09-EN-TR7-A-2570, CP09-PR-EL-DY-1020 |  | -201.06d |
| CP09-TR7-SW-2740 |  | Power Cables & Wires | 15d | 2026-07-04 | 2026-07-21 | CP09-TR7-SW-2730, CP09-TR7-SW-2720, CP09-EN-TR7-A-2570, CP09-PR-EL-DY-1030 |  | -201.06d |
| CP09-TR7-SW-2760 |  | Earthing System | 15d | 2026-07-04 | 2026-07-21 | CP09-TR7-SW-2740 SS, CP09-PR-EL-DY-1040 |  | -171.06d |
| CP09-TR7-SW-2750 |  | (Lighting Outlets , Switches, Fixture ) | 30d | 2026-07-21 | 2026-08-25 | CP09-TR7-SW-2720, CP09-TR7-SW-2740, CP09-TR7-SW-2730, CP09-PR-EL-DY-1050, CP09-PR-EL-DY-1140 |  | -201.06d |
|  | 5 | **Swimming Pool-SP06 & Mechnical Room-MR-06** |  | 2024-07-16 | 2026-09-05 |  |  |  |
|  | 1 | **Structure Works for Swimming Pool** |  | 2024-07-16 | 2026-06-10 |  |  |  |
| CP09-TR7-SW-2810 |  | Excvation up to Formation Level | 7d | 2024-07-16 A | 2024-08-28 A | CP09-TR6-RW-1830, CP09-MS-1010, CP09-CLD-1000 | 100% |  |
| CP09-TR7-SW-2820 |  | Plain Concret for For Raft | 5d | 2024-09-04 A | 2024-11-03 A | CP09-TR7-SW-2660, CP09-TR7-SW-2810, CP09-EN-TR7-A-2490, CP09-PR-CV-DY-1000 SS | 100% |  |
| CP09-TR7-SW-2830 |  | Water Proofing with screed | 3d | 2024-11-04 A | 2024-11-07 A | CP09-TR7-SW-2820, CP09-EN-TR7-A-2510, CP09-PR-CV-DY-1010 SS | 100% |  |
| CP09-TR7-SW-2840 |  | Reinforcement concrete for Raft | 10d | 2025-05-18 A | 2025-06-20 A | CP09-TR7-SW-2830, CP09-EN-TR7-A-2490, CP09-EN-TR7-A-2500, CP09-PR-CV-DY-1130 | 100% |  |
| CP09-TR7-SW-2860 |  | Reinforcement Concrete for Walls | 15d | 2025-06-24 A | 2025-10-04 A | CP09-TR7-SW-2500, CP09-TR7-SW-2850 | 100% |  |
| CP09-TR7-SW-2850 |  | Water Proofing for Raft with screed | 3.75d | 2026-01-05 A | 2026-01-09 A | CP09-TR7-SW-2840, CP09-EN-TR7-A-2510, CP09-PR-CV-DY-1010 SS | 100% |  |
| CP09-TR7-SW-2870 |  | External Waterproofing for Walls | 5d | 2026-05-24 | 2026-05-28 | CP09-TR7-SW-2860 |  | -160.19d |
| CP09-TR7-SW-2880 |  | Protection Block Works | 5d | 2026-05-30 | 2026-06-03 | CP09-TR7-SW-2870, CP09-PR-CV-DY-1020 SS |  | -160.19d |
| CP09-TR7-SW-2890 |  | Backfilling | 5.62d | 2026-06-04 | 2026-06-10 | CP09-TR7-SW-2880, CP09-TR7-SW-3040 FF |  | -160.19d |

| ID | WBS | Task | Duration | Start | Finish | Predecessors | Complete | Total float |
| --- | --- | --- | --- | --- | --- | --- | --- | --- |
|  | 3 | **Finishing Works for Swimming Pool** |  | 2026-06-10 | 2026-07-12 |  |  |  |
| CP09-TR7-SW-2900 |  | Mosaics Tiles | 11.25d | 2026-06-10 | 2026-06-23 | CP09-TR7-SW-2880, CP09-TR7-SW-2890, CP09-EN-TR7-A-2520, CP09-PR-CV-DY-1030 |  | -160.19d |
| CP09-TR7-SW-2910 |  | Granite for Pool Edg | 3.75d | 2026-06-23 | 2026-06-28 | CP09-TR7-SW-2900, CP09-EN-TR7-A-2530, CP09-PR-CV-DY-1040 |  | -160.19d |
| CP09-TR7-SW-2920 |  | Garnite for Drinage Grate | 3.75d | 2026-06-23 | 2026-06-28 | CP09-TR7-SW-2910 SS, CP09-EN-TR7-A-2530 |  | -156.44d |
| CP09-TR7-SW-2930 |  | Granite for Pool Coping | 3.75d | 2026-06-28 | 2026-07-02 | CP09-TR7-SW-2910, CP09-EN-TR7-A-2530 |  | -160.19d |
| CP09-TR7-SW-2940 |  | Stanless Steel Ladders | 2.81d | 2026-07-02 | 2026-07-06 | CP09-TR7-SW-2900, CP09-TR7-SW-2910, CP09-TR7-SW-2920, CP09-TR7-SW-2930, CP09-EN-TR7-A-2550, CP09-EN-TR7-A-2540, CP09-PR-CV-DY-1050 |  | -160.19d |
| CP09-TR7-SW-2950 |  | Stanless Steel Handrial | 5d | 2026-07-06 | 2026-07-12 | CP09-TR7-SW-2940, CP09-EN-TR7-A-2550, CP09-PR-CV-DY-1060 |  | -160.19d |
|  | 4 | **Machine Room_MR06** |  | 2024-07-16 | 2026-09-05 |  |  |  |
| CP09-TR7-SW-2960 |  | Excvation up to Formation Level | 3.75d | 2024-07-16 A | 2024-08-29 A | CP09-TR7-SW-2810 SS | 100% |  |
| CP09-TR7-SW-2970 |  | Plain Concret for For Raft | 2.81d | 2024-12-10 A | 2024-12-14 A | CP09-TR7-SW-2960, CP09-EN-TR7-A-2490 | 100% |  |
| CP09-TR7-SW-2980 |  | Water Proofing with screed | 1.88d | 2024-12-15 A | 2024-12-21 A | CP09-TR7-SW-2970, CP09-EN-TR7-A-2510, CP09-PR-CV-DY-1010 | 100% |  |
| CP09-TR7-SW-2990 |  | Reinforcement concrete for Raft | 10d | 2025-05-18 A | 2025-06-04 A | CP09-TR7-SW-2980, CP09-EN-TR7-A-2490, CP09-EN-TR7-A-2500 | 100% |  |
| CP09-TR7-SW-3010 |  | Reinforcement Concrete for Walls & Columns | 15d | 2025-11-10 A | 2025-11-14 A | CP09-TR7-SW-3000 | 100% |  |
| CP09-TR7-SW-3020 |  | Reinforcement Concrete for Slab | 21d | 2025-11-17 A | 2025-12-12 A | CP09-TR7-SW-3010 | 100% |  |
| CP09-TR7-SW-3000 |  | Water Proofing for Raft with screed | 3.75d | 2025-12-08 A | 2025-12-12 A | CP09-TR7-SW-2990 | 100% |  |
| CP09-TR7-SW-3030 |  | External Waterproofing with Protection | 5d | 2026-04-06 A | 2026-05-28 | CP09-TR7-SW-3020 | 75% | -154.56d |
| CP09-TR7-SW-3130 |  | Plaster for Internal Walls | 6d | 2026-05-18 A | 2026-05-30 | CP09-TR7-SW-3030, CP09-EN-TR7-A-2850, CP09-PR-CV-DY-1070 | 75% | -198d |
| CP09-TR7-SW-3040 |  | Backfilling | 5d | 2026-05-30 | 2026-06-03 | CP09-TR7-SW-3030 |  | -154.56d |
| CP09-TR7-SW-3140 |  | Emulsion Paint for Internal Wall | 6d | 2026-06-22 | 2026-06-29 | CP09-TR7-SW-3130, CP09-TR7-SW-3080, CP09-PR-CV-DY-1080 |  | -207.06d |
| CP09-TR7-SW-3050 |  | Drainage Gravel including Geotextile & Geocomposit | 3.75d | 2026-06-29 | 2026-07-02 | CP09-TR7-SW-3140, CP09-PR-CV-DY-1090, CP09-PR-CV-DY-1100 |  | -155.81d |
| CP09-TR7-SW-3160 |  | Metal Works | 5d | 2026-06-29 | 2026-07-05 | CP09-TR7-SW-3140 |  | -157.06d |
| CP09-TR7-SW-3150 |  | Epoxy for flooring | 3d | 2026-09-01 | 2026-09-05 | CP09-TR7-SW-3140, CP09-TR7-SW-3160, CP09-TR7-SW-3050, CP09-TR7-SW-3070, CP09-TR7-SW-3110, CP09-TR7-SW-3120, CP09-PR-CV-DY-1110 |  | -207.06d |
|  | 2 | **MEP Works for Swimmimg Pool & Machine Room** |  | 2025-05-18 | 2026-09-01 |  |  |  |
|  | 1 | **Mechnical Works** |  | 2025-05-18 | 2026-08-03 |  |  |  |
| CP09-TR7-SW-3060 |  | UPVC pipes, fitting, valves, | 15d | 2025-05-18 A | 2026-06-09 | CP09-TR7-SW-3130, CP09-EN-TR7-A-2560, CP09-PR-ME-DY-1000, CP09-PR-ME-DY-1010 | 40% | -166d |
| CP09-TR7-SW-3070 |  | Mechnical Equipment (Valves, Pumps, Filtters, Controllers ,Dosinng,& Ventilation exahust fan) | 30d | 2026-06-29 | 2026-08-03 | CP09-TR7-SW-3140, CP09-TR7-SW-3060, CP09-EN-TR7-A-2560, CP09-PR-ME-DY-1020, CP09-PR-ME-DY-1030, CP09-PR-ME-DY-1040, CP09-PR-ME-DY-1050, CP09-PR-ME-DY-1060, CP09-PR-ME-DY-1070, CP09-PR-ME-DY-1080 |  | -182.06d |
|  | 2 | **Electrical Works-SW** |  | 2026-06-10 | 2026-09-01 |  |  |  |
| CP09-TR7-SW-3080 |  | Conduits, Cable tray | 10d | 2026-06-10 | 2026-06-22 | CP09-TR7-SW-3130, CP09-EN-TR7-A-2570, CP09-PR-EL-DY-1000, CP09-PR-EL-DY-1010 |  | -207.06d |
| CP09-TR7-SW-3090 |  | Panel boards | 10d | 2026-06-29 | 2026-07-11 | CP09-TR7-SW-3080, CP09-TR7-SW-3140, CP09-EN-TR7-A-2570, CP09-PR-EL-DY-1020 |  | -207.06d |
| CP09-TR7-SW-3100 |  | Power Cables & Wires | 15d | 2026-07-11 | 2026-07-28 | CP09-TR7-SW-3090, CP09-TR7-SW-3080, CP09-EN-TR7-A-2570, CP09-PR-EL-DY-1030 |  | -207.06d |
| CP09-TR7-SW-3120 |  | Earthing System | 15d | 2026-07-11 | 2026-07-28 | CP09-TR7-SW-3100 SS, CP09-PR-EL-DY-1040 |  | -177.06d |
| CP09-TR7-SW-3110 |  | (Lighting Outlets , Switches, Fixture ) | 30d | 2026-07-28 | 2026-09-01 | CP09-TR7-SW-3080, CP09-TR7-SW-3100, CP09-TR7-SW-3090, CP09-PR-EL-DY-1050, CP09-PR-EL-DY-1140 |  | -207.06d |
|  | 6 | **Earth Work** |  | 2026-02-16 | 2026-04-10 |  |  |  |
|  | 1 | **Grading works** |  | 2026-02-16 | 2026-04-10 |  |  |  |
| CP09-TR7-EW-1120 |  | Excavation work to Reduce Level | 15d | 2026-02-16 A | 2026-04-10 A | CP09-TR7-SW-2600, CP09-EN-TR7-A-2580, CP09-CLD-1000, CP09-TR7-SW-2960 | 100% |  |
| CP09-TR7-EW-1130 |  | Filling works to make up levels with Compacting | 15d | 2026-02-16 A | 2026-04-10 A | CP09-TR7-SW-2600, CP09-TR7-EW-1120 SS+4.69d, CP09-EN-TR7-A-2580, CP09-TR7-SW-2960 | 100% |  |
|  | 2 | **Planting** |  | 2026-02-22 | 2026-04-10 |  |  |  |
| CP09-TR7-EW-1140 |  | Excavation works for Planting Beds | 15d | 2026-02-22 A | 2026-04-10 A | CP09-TR7-EW-1120 SS, CP09-TR7-EW-1130 SS, CP09-EN-TR7-A-2580 | 100% |  |
|  | 9 | **Retaining & Cheek Walls** |  | 2026-05-04 | 2026-07-14 |  |  |  |
|  | 1 | **Soild Block Work Cheek Walls** |  | 2026-05-04 | 2026-07-14 |  |  |  |
| CP09-TR7-RW-1890 |  | Plaing Concrete with HPDE | 4.69d | 2026-05-04 A | 2026-05-31 | CP09-TR7-RW-1940 SS+2.81d, CP09-TR7-RW-1940 FF+2.81d, CP09-EN-TR7-A-2590 | 50% | -237.44d |
| CP09-TR7-RW-1900 |  | Reinforced Concrete for Footing | 6.56d | 2026-05-04 A | 2026-06-03 | CP09-TR7-RW-1890 SS+2.81d, CP09-TR7-RW-1890 FF+2.81d, CP09-EN-TR7-A-2600, CP09-EN-TR7-A-2590 | 50% | -237.44d |
| CP09-TR7-RW-1910 |  | Reinforced Concrete for Tie beam | 4.69d | 2026-05-04 A | 2026-06-07 | CP09-TR7-RW-1900 SS+2.81d, CP09-TR7-RW-1900 FF+2.81d | 50% | -237.44d |
| CP09-TR7-RW-1920 |  | Reinforced Concrete for Column | 5.62d | 2026-05-04 A | 2026-06-09 | CP09-TR7-RW-1910 SS+2.81d, CP09-TR7-RW-1910 FF+2.81d | 50% | -237.44d |
| CP09-TR7-RW-1930 |  | Soild Block Work | 5.62d | 2026-05-04 A | 2026-06-16 | CP09-TR7-RW-1920 SS+5.62d, CP09-TR7-RW-1920 FF+5.62d, CP09-EN-TR7-A-2620, CP09-PR-CV-DY-1020 | 50% | -237.44d |
| CP09-TR7-RW-1940 |  | Excavation | 3.75d | 2026-05-04 A | 2026-05-27 | CP09-TR7-EW-1120, CP09-TR7-EW-1130 | 50% | -237.44d |
| CP09-TR7-RW-1950 |  | Reinforced Concrete for Beam | 7.5d | 2026-05-04 A | 2026-06-21 | CP09-TR7-RW-1930 SS+3.75d, CP09-TR7-RW-1930 FF+3.75d | 50% | -237.44d |
| CP09-TR7-RW-1960 |  | Waterproofing & Protection | 6.56d | 2026-05-04 A | 2026-06-29 | CP09-TR7-RW-1950 SS+7.5d, CP09-TR7-RW-1950 FF+7.5d, CP09-EN-TR7-A-2610 | 50% | -237.44d |
| CP09-TR7-RW-1970 |  | Backfilling | 5.62d | 2026-05-04 A | 2026-07-02 | CP09-TR7-RW-1960 SS+2.81d, CP09-TR7-RW-1960 FF+2.81d | 50% | -237.44d |
| CP09-TR7-RW-1980 |  | Marble Cladding | 6.56d | 2026-07-01 | 2026-07-09 | CP09-TR7-RW-1970 SS+5.62d, CP09-TR7-RW-1970 FF+5.62d, CP09-EN-TR7-A-2630, CP09-PR-CV-DY-1120 |  | -224d |
| CP09-TR7-RW-1990 |  | Marble Copping | 6.56d | 2026-07-07 | 2026-07-14 | CP09-TR7-RW-1980 SS+4.69d, CP09-TR7-RW-1980 FF+4.69d, CP09-EN-TR7-A-2630, CP09-PR-CV-DY-1120 |  | -224d |
|  | 2 | **Solid Block Retaining Walls** |  | 2026-05-04 | 2026-07-14 |  |  |  |
| CP09-TR7-RW-2000 |  | Plaing Concrete with HPDE | 5d | 2026-05-04 A | 2026-05-31 | CP09-TR7-RW-2050 SS+2.81d, CP09-TR7-RW-2050 FF+2.81d, CP09-EN-TR7-A-2590 | 50% | -237.44d |
| CP09-TR7-RW-2010 |  | Reinforced Concrete for Footing | 6.56d | 2026-05-04 A | 2026-06-03 | CP09-TR7-RW-2000 SS+2.81d, CP09-TR7-RW-2000 FF+2.81d, CP09-EN-TR7-A-2590, CP09-EN-TR7-A-2600 | 50% | -237.44d |
| CP09-TR7-RW-2020 |  | Reinforced Concrete for Tie beam | 5d | 2026-05-04 A | 2026-06-07 | CP09-TR7-RW-2010 SS+2.81d, CP09-TR7-RW-2010 FF+2.81d | 50% | -237.44d |
| CP09-TR7-RW-2030 |  | Reinforced Concrete for Column | 5.62d | 2026-05-04 A | 2026-06-09 | CP09-TR7-RW-2020 SS+2.81d, CP09-TR7-RW-2020 FF+2.81d | 50% | -237.44d |
| CP09-TR7-RW-2040 |  | Soild Block Work | 5.62d | 2026-05-04 A | 2026-06-16 | CP09-TR7-RW-2030 SS+5.62d, CP09-TR7-RW-2030 FF+5.62d, CP09-EN-TR7-A-2620 | 50% | -237.44d |
| CP09-TR7-RW-2050 |  | Excavation | 3.75d | 2026-05-04 A | 2026-05-27 | CP09-TR7-RW-1900, CP09-TR7-EW-1120, CP09-TR7-EW-1130 | 50% | -237.44d |
| CP09-TR7-RW-2060 |  | Reinforced Concrete for Beam | 7.5d | 2026-05-04 A | 2026-06-21 | CP09-TR7-RW-2040 SS+3.75d, CP09-TR7-RW-2040 FF+3.75d | 50% | -237.44d |
| CP09-TR7-RW-2070 |  | Waterproofing & Protection | 6.56d | 2026-05-04 A | 2026-06-29 | CP09-TR7-RW-2060 SS+7.5d, CP09-TR7-RW-2060 FF+7.5d | 50% | -237.44d |
| CP09-TR7-RW-2080 |  | Backfilling | 5.62d | 2026-05-04 A | 2026-07-02 | CP09-TR7-RW-2070 SS+2.81d, CP09-TR7-RW-2070 FF+2.81d | 50% | -237.44d |
| CP09-TR7-RW-2090 |  | Marble Cladding | 6.56d | 2026-06-30 | 2026-07-08 | CP09-TR7-RW-2080 SS+4.69d, CP09-TR7-RW-2080 FF+4.69d, CP09-EN-TR7-A-2630, CP09-PR-CV-DY-1120 |  | -223.06d |
| CP09-TR7-RW-2100 |  | Marble Copping | 6.56d | 2026-07-06 | 2026-07-14 | CP09-TR7-RW-2090 SS+4.69d, CP09-TR7-RW-2090 FF+4.69d, CP09-EN-TR7-A-2630, CP09-PR-CV-DY-1120 |  | -223.06d |
|  | 1 | **Irrigation Works** |  | 2026-02-22 | 2026-06-20 |  |  |  |
|  | 1 | **Sub-Main & Lateral** |  | 2026-02-22 | 2026-06-03 |  |  |  |
| CP09-TR7-IR-1440 |  | Excavation for Sub-main & Lateral Pieps | 4d | 2026-02-22 A | 2026-05-27 | CP09-EN-TR7-A-2820, CP09-TR7-HD-4810, CP09-TR4-IR-1140 | 72% | -215.19d |
| CP09-TR7-IR-1450 |  | Sub-main & Lateral Pieps laying out and installation | 5d | 2026-02-22 A | 2026-05-30 | CP09-TR7-IR-1440 SS+2d, CP09-TR7-IR-1440 FF+2d, CP09-PR-IR-DY-1000 | 72% | -215.19d |
| CP09-TR7-IR-1460 |  | Sub-main & Lateral Pieps Testing | 3d | 2026-02-22 A | 2026-06-01 | CP09-TR7-IR-1450 SS+2d, CP09-TR7-IR-1450 FF+2d | 72% | -215.19d |
| CP09-TR7-IR-1470 |  | Backfilling forSub-main & Lateral Pieps | 4d | 2026-02-22 A | 2026-06-03 | CP09-TR7-IR-1460 SS+2d, CP09-TR7-IR-1460 FF+2d | 72% | -215.19d |
|  | 2 | **Fittings & Accessories** |  | 2026-06-04 | 2026-06-20 |  |  |  |

| ID | WBS | Task | Duration | Start | Finish | Predecessors | Complete | Total float |
| --- | --- | --- | --- | --- | --- | --- | --- | --- |
| CP09-TR7-IR-1480 |  | Installation of Dripline | 12d | 2026-06-04 | 2026-06-17 | CP09-TR7-SF-1640, CP09-TR7-SF-1650 SS+2d, CP09-TR7-IR-1460, CP09-PR-IR-DY-1010 |  | -174.38d |
| CP09-TR7-IR-1490 |  | Installation of Sprinklers | 12d | 2026-06-04 | 2026-06-17 | CP09-TR7-IR-1480 SS, CP09-PR-IR-DY-1040 |  | -174.38d |
| CP09-TR7-IR-1500 |  | Installation Valves & Rings | 7d | 2026-06-04 | 2026-06-11 | CP09-TR7-IR-1490 SS, CP09-PR-IR-DY-1030, CP09-PR-IR-DY-1020 |  | -174.38d |
| CP09-TR7-IR-1510 |  | Installation of Electrical solenoid valve | 7d | 2026-06-04 | 2026-06-11 | CP09-TR7-IR-1500 SS, CP09-PR-IR-DY-1050 |  | -167.38d |
| CP09-TR7-IR-1520 |  | Installation of Controller (decoder system plastic pedestal) | 7d | 2026-06-13 | 2026-06-20 | CP09-TR7-IR-1500, CP09-TR7-IR-1510 SS, CP09-PR-IR-DY-1060 |  | -174.38d |
| CP09-TR7-IR-1530 |  | Installation of Controller decoder cables | 7d | 2026-06-13 | 2026-06-20 | CP09-TR7-IR-1520 SS, CP09-PR-IR-DY-1070 |  | -174.38d |
| CP09-TR7-IR-1540 |  | Installation of Decoder one station | 5d | 2026-06-13 | 2026-06-17 | CP09-TR7-IR-1530 SS, CP09-PR-IR-DY-1080 |  | -172.38d |
|  | 4 | **Electrical Works** |  | 2026-04-06 | 2026-07-14 |  |  |  |
|  | 1 | **Power Cable & Pillars** |  | 2026-04-06 | 2026-07-14 |  |  |  |
| CP09-TR7-EL-1160 |  | Excavation | 5d | 2026-04-06 A | 2026-05-28 | CP09-TR7-EW-1120, CP09-TR7-EW-1130, CP09-TR7-IR-1470, CP09-EN-TR7-A-2780, CP09-TR4-EL-1060 | 10% | -214.19d |
| CP09-TR7-EL-1170 |  | Installation of Power Cables | 4d | 2026-04-06 A | 2026-05-31 | CP09-TR7-EL-1160 SS+2d, CP09-TR7-EL-1160 FF+2d, CP09-EN-TR7-A-2780, CP09-EN-TR7-A-2790, CP09-PR-EL-DY-1060 | 10% | -214.19d |
| CP09-TR7-EL-1180 |  | Backfilling for Power Cables | 4d | 2026-04-06 A | 2026-06-02 | CP09-TR7-EL-1170 SS+2d, CP09-TR7-EL-1170 FF+2d | 10% | -214.19d |
| CP09-TR7-EL-1190 |  | Installation of Connecting Pillars | 15d | 2026-06-28 | 2026-07-14 | CP09-TR7-HD-4560, CP09-PR-EL-DY-1070 |  | -169d |
|  | 3 | **Hardscape** |  | 2026-02-09 | 2026-09-01 |  |  |  |
|  | 6 | **Concrete Curb** |  | 2026-05-11 | 2026-06-15 |  |  |  |
| CP09-TR7-HD-4510 |  | Excavation | 5d | 2026-05-11 A | 2026-05-28 | CP09-TR7-EW-1120, CP09-TR7-EW-1130, CP09-TR7-EW-1140, CP09-TR4-HD-2380 | 50% | -101d |
| CP09-TR7-HD-4520 |  | Plains Concrete with HDPE waterproofing | 5d | 2026-05-11 A | 2026-05-28 | CP09-TR7-HD-4510, CP09-EN-TR7-A-2710 | 50% | -194.44d |
| CP09-TR7-HD-4790 |  | Under Paving Reinforced Concrete Curb | 10d | 2026-05-11 A | 2026-06-03 | CP09-TR7-HD-4520 SS+1.88d, CP09-TR7-HD-4520 FF+1.88d | 50% | -197.56d |
| CP09-TR7-HD-4810 |  | Instal Flush Curb | 7d | 2026-06-08 | 2026-06-15 | CP09-EN-TR7-A-2710, CP09-PR-HD-DY-1080, CP09-TR7-HD-4790 FS+3d, CP09-TR7-HD-4790 FF+3d |  | -197.56d |
|  | 1 | **Side wake & Plazes** |  | 2026-02-22 | 2026-07-13 |  |  |  |
|  | 8 | **Interlocking Paving** |  | 2026-06-04 | 2026-06-24 |  |  |  |
| CP09-TR7-HD-4530 |  | Crush Stone for Interlock Types IL-(01,02,06,07) | 6.56d | 2026-06-04 | 2026-06-11 | CP09-EN-TR7-A-2720, CP09-TR7-EW-1120, CP09-TR7-EW-1130, CP09-TR7-IR-1470, CP09-TR7-EL-1180, CP09-PR-HD-DY-1090, CP09-TR4-HD-2130 |  | -215.19d |
| CP09-TR7-HD-4540 |  | Sand Layer for Interlock Types IL-(01,02,06,07) | 10d | 2026-06-10 | 2026-06-21 | CP09-TR7-HD-4530 SS+5d, CP09-TR7-HD-4530 FF+5d, CP09-EN-TR7-A-2720 |  | -215.19d |
| CP09-TR7-HD-4550 |  | Motar Bed Interlock Types IL-(03,04,08,09,10) | 10d | 2026-06-10 | 2026-06-21 | CP09-TR7-HD-4540 SS, CP09-EN-TR7-A-2720 |  | -215.19d |
| CP09-TR7-HD-4560 |  | Interlocking Paving | 10d | 2026-06-13 | 2026-06-24 | CP09-TR7-HD-4540 SS+2.81d, CP09-TR7-HD-4550 SS+2.81d, CP09-TR7-HD-4540 FF+2.81d, CP09-TR7-HD-4550 FF+2.81d, CP09-EN-TR7-A-2720, CP09-PR-HD-DY-1180 |  | -215.19d |
|  | 2 | **Concrete in Situ** |  | 2026-02-22 | 2026-06-09 |  |  |  |
|  | 1 | **Slab on Garde** |  | 2026-02-22 | 2026-06-03 |  |  |  |
| CP09-TR7-HD-4300 |  | Plain Concrete with HDPE | 7d | 2026-02-22 A | 2026-05-31 | CP09-TR7-HD-4560, CP09-TR7-EW-1120, CP09-TR7-EW-1130, CP09-TR7-IR-1470, CP09-TR7-EL-1180, CP09-EN-TR7-A-2640 | 75% | -103d |
| CP09-TR7-HD-4310 |  | Reinfored Concrete slab on grade | 10d | 2026-05-11 A | 2026-06-03 | CP09-TR7-HD-4300 | 30% | -106d |
| CP09-TR7-HD-4320 |  | Waterproofing & Screed | 6d | 2026-05-11 A | 2026-05-30 | CP09-TR7-HD-4310 | 30% | -102d |
|  | 2 | **Concrete In-situ w./Exposed Aggregate Finish** |  | 2026-05-11 | 2026-06-09 |  |  |  |
| CP09-TR7-HD-4330 |  | Concrete casting (including Joints & Wire Mish) | 15d | 2026-05-11 A | 2026-06-09 | CP09-TR7-HD-4320, CP09-TR7-HD-4810, CP09-EN-TR7-A-2640, CP09-PR-HD-DY-1000 | 30% | -111d |
| CP09-TR7-HD-4340 |  | Finishing Concrete Surface | 6d | 2026-05-11 A | 2026-05-30 | CP09-TR7-HD-4330, CP09-TR7-RW-1980, CP09-TR7-RW-1990, CP09-TR7-RW-2090, CP09-TR7-RW-2100 | 30% | -148.38d |
|  | 1 | **Marble Paving** |  | 2026-02-22 | 2026-06-03 |  |  |  |
|  | 1 | **Slab on Garde** |  | 2026-02-22 | 2026-06-03 |  |  |  |
| CP09-TR7-HD-4250 |  | Plain Concrete with HDPE | 5d | 2026-02-22 A | 2026-05-28 | CP09-TR7-HD-4560, CP09-TR7-EW-1120, CP09-TR7-EW-1140, CP09-TR7-IR-1470, CP09-TR7-EL-1180 FS+5d, CP09-EN-TR7-A-2650 | 85% | -101d |
| CP09-TR7-HD-4260 |  | Reinfored Concrete slab on grade | 10d | 2026-02-22 A | 2026-06-03 | CP09-TR7-HD-4250 | 80% | -184.38d |
| CP09-TR7-HD-4270 |  | Waterproofing & Screed | 7d | 2026-05-04 A | 2026-05-31 | CP09-TR7-HD-4260 | 80% | -103d |
|  | 2 | **Marble Tiles** |  | 2026-05-04 | 2026-06-03 |  |  |  |
| CP09-TR7-HD-4280 |  | Marble Fixiation | 10d | 2026-05-04 A | 2026-06-03 | CP09-TR7-HD-4270, CP09-TR7-HD-4810, CP09-EN-TR7-A-2650, CP09-PR-HD-DY-1010 | 80% | -106d |
| CP09-TR7-HD-4290 |  | Marble Surfcae Finishing | 7d | 2026-05-04 A | 2026-05-31 | CP09-TR7-HD-4280 | 80% | -156.38d |
|  | 3 | **Wooden Floor Boards** |  | 2026-06-04 | 2026-07-09 |  |  |  |
|  | 1 | **Slab on Garde** |  | 2026-06-04 | 2026-06-20 |  |  |  |
| CP09-TR7-HD-4350 |  | Plain Concrete with HDPE | 3d | 2026-06-04 | 2026-06-07 | CP09-TR7-HD-4260, CP09-TR7-EW-1120, CP09-TR7-EW-1130, CP09-TR7-IR-1470, CP09-TR7-EL-1180, CP09-EN-TR7-A-2660 |  | -184.38d |
| CP09-TR7-HD-4360 |  | Reinfored Concrete slab on grade | 6d | 2026-06-08 | 2026-06-14 | CP09-TR7-HD-4350 |  | -184.38d |
| CP09-TR7-HD-4370 |  | Waterproofing & Screed | 5d | 2026-06-15 | 2026-06-20 | CP09-TR7-HD-4360 |  | -183.38d |
|  | 2 | **Wood- Plastic Composit** |  | 2026-06-21 | 2026-07-09 |  |  |  |
| CP09-TR7-HD-4380 |  | WPC Installation | 10d | 2026-06-21 | 2026-07-01 | CP09-TR7-HD-4370, CP09-TR7-HD-4810, CP09-EN-TR7-A-2660, CP09-PR-HD-DY-1020 |  | -183.38d |
| CP09-TR7-HD-4390 |  | WPC surface finishing & Accessories | 7d | 2026-07-02 | 2026-07-09 | CP09-TR7-HD-4380, CP09-TR7-HD-4290 |  | -183.38d |
|  | 4 | **Gravel layer** |  | 2026-06-15 | 2026-07-04 |  |  |  |
|  | 1 | **Slab on Garde** |  | 2026-06-15 | 2026-06-28 |  |  |  |
| CP09-TR7-HD-4400 |  | Plain Concrete with HDPE | 6d | 2026-06-15 | 2026-06-21 | CP09-TR7-HD-4360, CP09-TR7-EW-1120, CP09-TR7-EW-1130, CP09-TR7-IR-1470, CP09-TR7-EL-1180, CP09-EN-TR7-A-2670 |  | -184.38d |
| CP09-TR7-HD-4420 |  | Mortar bed | 6d | 2026-06-22 | 2026-06-28 | CP09-TR7-HD-4400 |  | -184.38d |
|  | 2 | **Gravel Layer, w./Earth Colors** |  | 2026-06-29 | 2026-07-04 |  |  |  |
| CP09-TR7-HD-4430 |  | Furnish & install Garvel Layer | 5d | 2026-06-29 | 2026-07-04 | CP09-TR7-HD-4420, CP09-TR7-HD-4810, CP09-EN-TR7-A-2670, CP09-PR-HD-DY-1030 |  | -184.38d |
|  | 5 | **Crushed Stone** |  | 2026-06-22 | 2026-07-11 |  |  |  |
|  | 1 | **Slab on Garde** |  | 2026-06-22 | 2026-07-04 |  |  |  |
| CP09-TR7-HD-4440 |  | Geotextile membrane | 4d | 2026-06-22 | 2026-06-25 | CP09-TR7-HD-4400, CP09-TR7-EW-1120, CP09-TR7-EW-1130, CP09-TR7-IR-1470, CP09-TR7-EL-1180, CP09-EN-TR7-A-2680 |  | -178.38d |
| CP09-TR7-HD-4460 |  | Gravel fix sheets | 7d | 2026-06-27 | 2026-07-04 | CP09-TR7-HD-4440 |  | -178.38d |
|  | 2 | **Crushed Dolomite Stone** |  | 2026-07-05 | 2026-07-11 |  |  |  |
| CP09-TR7-HD-4470 |  | Furnish & Install Crushed Dolomite stone , w./ mixed colors | 6d | 2026-07-05 | 2026-07-11 | CP09-TR7-HD-4460 FF, CP09-TR7-HD-4460 SS, CP09-TR7-HD-4430, CP09-TR7-HD-4810, CP09-EN-TR7-A-2680, CP09-PR-HD-DY-1040 |  | -184.38d |
|  | 6 | **Loose Gravel** |  | 2026-06-22 | 2026-07-05 |  |  |  |
|  | 2 | **Loose Gravel 50mm** |  | 2026-06-22 | 2026-07-05 |  |  |  |
| CP09-TR7-HD-4480 |  | Furnish & Install loose gravel w./earth colors. | 12d | 2026-06-22 | 2026-07-05 | CP09-TR7-HD-4400, CP09-TR7-HD-4810, CP09-TR7-IR-1470, CP09-TR7-EL-1180, CP09-EN-TR7-A-2690, CP09-PR-HD-DY-1050 |  | -181.38d |
|  | 7 | **Clean Sand Layer** |  | 2026-07-05 | 2026-07-13 |  |  |  |
|  | 1 | **Kids & Fitness Area** |  | 2026-07-05 | 2026-07-13 |  |  |  |
| CP09-TR7-HD-4490 |  | Geotextile Sheets | 3d | 2026-07-05 | 2026-07-07 | CP09-TR7-HD-4430, CP09-TR7-EW-1120, CP09-TR7-EW-1130, CP09-TR7-HD-4810, CP09-TR7-IR-1470, CP09-TR7-EL-1180, CP09-EN-TR7-A-2700 |  | -183.38d |
| CP09-TR7-HD-4500 |  | Install Clean sand layer | 5d | 2026-07-08 | 2026-07-13 | CP09-TR7-HD-4490, CP09-TR7-HD-4480, CP09-TR7-HD-4810, CP09-EN-TR7-A-2700, CP09-PR-HD-DY-1070 |  | -183.38d |
|  | 2 | **Site Improvments** |  | 2026-02-09 | 2026-09-01 |  |  |  |
|  | 6 | **Pools Shower -05** |  | 2026-06-24 | 2026-08-22 |  |  |  |

| ID | WBS | Task | Duration | Start | Finish | Predecessors | Complete | Total float |
| --- | --- | --- | --- | --- | --- | --- | --- | --- |
| CP09-TR7-HD-5060 |  | Plain Concrete Basin | 2d | 2026-06-24 | 2026-06-27 | CP09-EN-TR2-A-1910, CP09-TR7-HD-4560, CP09-EN-TR1-A-1640, CP09-TR7-EL-1180, CP09-TR7-HD-4810, CP09-TR7-HD-4790 |  | -205.38d |
| CP09-TR7-HD-5070 |  | R.Concrete Basin | 5d | 2026-06-27 | 2026-07-02 | CP09-TR7-HD-5060 |  | -205.38d |
| CP09-TR7-HD-5080 |  | Solid Block Work | 5d | 2026-07-02 | 2026-07-08 | CP09-TR7-HD-5070 |  | -198.44d |
| CP09-TR7-HD-5090 |  | Water Proofing | 2.81d | 2026-07-08 | 2026-07-12 | CP09-TR7-HD-5080 |  | -198.44d |
| CP09-TR7-HD-5100 |  | Backfilling | 5d | 2026-07-12 | 2026-07-18 | CP09-TR7-HD-5090 |  | -198.44d |
| CP09-TR7-HD-5110 |  | Mica Stone Cladding | 6d | 2026-07-18 | 2026-07-25 | CP09-TR7-HD-5100, CP09-PR-HD-DY-1120 |  | -198.44d |
| CP09-TR7-HD-5120 |  | Mica Stone Capping | 4d | 2026-07-25 | 2026-07-29 | CP09-TR7-HD-5110, CP09-PR-HD-DY-1120 |  | -198.44d |
| CP09-TR7-HD-5130 |  | Drainage Cover with Geotextile | 2.81d | 2026-07-29 | 2026-08-02 | CP09-TR7-HD-5120, CP09-PR-HD-DY-1060 |  | -198.44d |
| CP09-TR7-HD-5140 |  | Blast stone blocks for Flooring | 5d | 2026-08-02 | 2026-08-08 | CP09-TR7-HD-5130, CP09-PR-HD-DY-1130 |  | -198.44d |
| CP09-TR7-HD-5150 |  | Blast Stone Blocks Capping | 4d | 2026-08-08 | 2026-08-12 | CP09-TR7-HD-5140, CP09-PR-HD-DY-1130 |  | -198.44d |
| CP09-TR7-HD-5160 |  | Loose Rounded Pebbles | 5d | 2026-08-12 | 2026-08-18 | CP09-TR7-HD-5150, CP09-PR-HD-DY-1140 |  | -198.44d |
| CP09-TR7-HD-5170 |  | Shower Head Fixation | 2.81d | 2026-08-18 | 2026-08-22 | CP09-TR7-HD-5160, CP09-TR7-HD-5140, CP09-TR7-HD-5150, CP09-PR-HD-DY-1150 |  | -195.25d |
|  | 3 | **Pools Shower -06** |  | 2026-07-02 | 2026-09-01 |  |  |  |
| CP09-TR7-HD-2240 |  | Plain Concrete Basin | 2d | 2026-07-02 | 2026-07-05 | CP09-EN-TR2-A-1910, CP09-TR7-HD-5070, CP09-EN-TR1-A-1640, CP09-TR7-EL-1180, CP09-TR7-HD-4810, CP09-TR7-HD-4790 |  | -205.38d |
| CP09-TR7-HD-2250 |  | R.Concrete Basin | 7d | 2026-07-05 | 2026-07-13 | CP09-TR7-HD-2240 |  | -205.38d |
| CP09-TR7-HD-2260 |  | Solid Block Work | 5d | 2026-07-13 | 2026-07-19 | CP09-TR7-HD-2250 |  | -205.38d |
| CP09-TR7-HD-2270 |  | Water Proofing | 2.81d | 2026-07-19 | 2026-07-22 | CP09-TR7-HD-2260 |  | -205.38d |
| CP09-TR7-HD-2280 |  | Backfilling | 6d | 2026-07-22 | 2026-07-29 | CP09-TR7-HD-2270 |  | -205.38d |
| CP09-TR7-HD-2290 |  | Mica Stone Cladding | 4d | 2026-07-29 | 2026-08-03 | CP09-TR7-HD-2280, CP09-PR-HD-DY-1120 |  | -205.38d |
| CP09-TR7-HD-2300 |  | Mica Stone Capping | 3d | 2026-08-03 | 2026-08-06 | CP09-TR7-HD-2290, CP09-PR-HD-DY-1120 |  | -205.38d |
| CP09-TR7-HD-2310 |  | Drainage Cover with Geotextile | 5d | 2026-08-06 | 2026-08-12 | CP09-TR7-HD-2300, CP09-PR-HD-DY-1060 |  | -205.38d |
| CP09-TR7-HD-2320 |  | Blast stone blocks for Flooring | 5d | 2026-08-12 | 2026-08-18 | CP09-TR7-HD-2310, CP09-PR-HD-DY-1130 |  | -205.38d |
| CP09-TR7-HD-2330 |  | Blast Stone Blocks Capping | 3d | 2026-08-18 | 2026-08-22 | CP09-TR7-HD-2320, CP09-PR-HD-DY-1130 |  | -205.38d |
| CP09-TR7-HD-2340 |  | Loose Rounded Pebbles | 3.75d | 2026-08-22 | 2026-08-26 | CP09-TR7-HD-2330, CP09-PR-HD-DY-1140 |  | -205.38d |
| CP09-TR7-HD-2350 |  | Shower Head Fixation | 5d | 2026-08-26 | 2026-09-01 | CP09-TR7-HD-2340, CP09-TR7-HD-2320, CP09-TR7-HD-2330, CP09-PR-HD-DY-1150 |  | -204.38d |
|  | 1 | **Marble Steps** |  | 2026-02-09 | 2026-07-20 |  |  |  |
| CP09-TR7-HD-4570 |  | Reinforecd Concrete Step. | 10d | 2026-02-09 A | 2026-06-03 | CP09-TR7-RW-1980, CP09-TR7-RW-1990, CP09-TR7-RW-2090, CP09-TR7-RW-2100, CP09-TR7-EW-1120, CP09-TR7-EW-1130, CP09-EN-TR7-A-2730, CP09-TR7-IR-1470, CP09-TR7-EL-1180 | 80% | -159.81d |
| CP09-TR7-HD-4580 |  | Install Marble Blocks | 6.56d | 2026-05-31 | 2026-06-07 | CP09-TR7-HD-4570 SS+2.81d, CP09-TR7-HD-4570 FF+2.81d, CP09-PR-HD-DY-1100 |  | -159.81d |
| CP09-TR7-HD-4590 |  | Finishing Marble Surface | 5d | 2026-07-15 | 2026-07-20 | CP09-TR7-HD-4580, CP09-TR7-RW-1980, CP09-TR7-RW-1990, CP09-TR7-RW-2090, CP09-TR7-RW-2100 |  | -174d |
|  | 4 | **Handrails** |  | 2026-08-06 | 2026-08-12 |  |  |  |
| CP09-TR7-HD-4820 |  | Install & Fix Stainless Handrail (500 mm height) | 5.62d | 2026-08-06 | 2026-08-12 | CP09-TR7-HD-4580, CP09-TR7-HD-4660, CP09-EN-TR7-A-2760, CP09-PR-HD-DY-1160 |  | -211.06d |
| CP09-TR7-HD-4830 |  | Install & Fix Glass Handrail (900mm height) | 5.62d | 2026-08-06 | 2026-08-12 | CP09-TR7-HD-4580, CP09-TR7-HD-4660, CP09-EN-TR7-A-2760, CP09-PR-HD-DY-1170 |  | -211.06d |
|  | 2 | **Curvelinear Block Seat** |  | 2026-07-02 | 2026-08-06 |  |  |  |
| CP09-TR7-HD-4600 |  | Excavation | 2.81d | 2026-07-02 | 2026-07-06 | CP09-TR7-RW-1970, CP09-TR7-RW-2080, CP09-TR7-EW-1120, CP09-TR7-EW-1130, CP09-EN-TR7-A-2740, CP09-TR7-EL-1180 |  | -237.44d |
| CP09-TR7-HD-4610 |  | Plaing Concrete with HPDE | 3.75d | 2026-07-06 | 2026-07-11 | CP09-TR7-HD-4600 |  | -237.44d |
| CP09-TR7-HD-4620 |  | Reinforced Concrete for Footing | 5.62d | 2026-07-11 | 2026-07-16 | CP09-TR7-HD-4610 |  | -237.44d |
| CP09-TR7-HD-4630 |  | Reinforced Concrete for beam | 5d | 2026-07-16 | 2026-07-22 | CP09-TR7-HD-4620 |  | -237.44d |
| CP09-TR7-HD-4640 |  | Waterproofing & Protection | 3.75d | 2026-07-22 | 2026-07-27 | CP09-TR7-HD-4630 |  | -237.44d |
| CP09-TR7-HD-4650 |  | Backfilling | 2.81d | 2026-07-27 | 2026-07-30 | CP09-TR7-HD-4640 |  | -237.44d |
| CP09-TR7-HD-4660 |  | Marble Capping | 5.62d | 2026-07-30 | 2026-08-06 | CP09-TR7-RW-2090, CP09-TR7-RW-2100, CP09-TR7-RW-1980, CP09-TR7-RW-1990, CP09-TR7-HD-4650, CP09-PR-HD-DY-1110 |  | -237.44d |
|  | 11 | **Sinage** |  | 2026-08-06 | 2026-09-29 |  |  |  |
| CP09-TR7-SN-4950 |  | Excavation | 7d | 2026-08-06 | 2026-08-15 | CP09-TR7-HD-4660, CP09-TR7-HD-4560, CP09-EN-TR7-A-2800 |  | -237.44d |
| CP09-TR7-SN-4960 |  | Plain Concrete with HDPE | 5d | 2026-08-11 | 2026-08-17 | CP09-TR7-SN-4950 SS+2d, CP09-TR7-SN-4950 FF+2d |  | -237.44d |
| CP09-TR7-SN-4970 |  | Reinforced Concrete | 10d | 2026-08-13 | 2026-08-25 | CP09-TR7-SN-4960 SS+2d, CP09-TR7-SN-4960 FF+2d |  | -237.44d |
| CP09-TR7-SN-4980 |  | Waterproofing | 5d | 2026-08-23 | 2026-08-29 | CP09-TR7-SN-4970 SS+3d, CP09-TR7-SN-4970 FF+3d |  | -237.44d |
| CP09-TR7-SN-4990 |  | Grouting | 10d | 2026-08-25 | 2026-09-06 | CP09-TR7-SN-4980 SS+2d, CP09-TR7-SN-4980 FF+2d |  | -237.44d |
| CP09-TR7-SN-5000 |  | STREET DIRECTIONAL SIGN | 10d | 2026-08-25 | 2026-09-06 | CP09-TR7-SN-4990 FF, CP09-TR7-SF-1730, CP09-TR7-SN-4990 SS, CP09-PR-SN-DY-1000 |  | -232.44d |
| CP09-TR7-SN-5010 |  | DIRECTIONAL SIGN FOR VEHICULAR | 10d | 2026-08-25 | 2026-09-06 | CP09-TR7-SN-4990 FF, CP09-TR7-SF-1730, CP09-TR7-SN-4990 SS, CP09-PR-SN-DY-1010 |  | -232.44d |
| CP09-TR7-SN-5040 |  | RULES SIGN | 10d | 2026-08-31 | 2026-09-12 | CP09-TR7-SN-4990 FF+5d, CP09-TR7-SF-1730, CP09-TR7-SN-4990 SS+5d, CP09-PR-SN-DY-1030 |  | -237.44d |
| CP09-TR7-SN-5020 |  | UNIT ID SIGN (FRONT YARD) | 15d | 2026-09-12 | 2026-09-29 | CP09-TR7-SN-5000, CP09-TR7-SN-5010, CP09-TR7-SN-5040, CP09-PR-SN-DY-1020 |  | -237.44d |
| CP09-TR7-SN-5030 |  | UNIT ID SIGN (BACK YARD) | 15d | 2026-09-12 | 2026-09-29 | CP09-TR7-SN-5000, CP09-TR7-SN-5010, CP09-TR7-SN-5040, CP09-PR-SN-DY-1020 |  | -237.44d |
| CP09-TR7-SN-5050 |  | IDENTIFICATION SIGN | 10d | 2026-09-12 | 2026-09-23 | CP09-TR7-SN-5000, CP09-TR7-SN-5010, CP09-TR7-SN-5040, CP09-PR-SN-DY-1040 |  | -232.44d |
|  | 12 | **Landscape Furntiure** |  | 2026-09-06 | 2026-09-22 |  |  |  |
| CP09-TR7-FN-4840 |  | Install & Fix Pitch Pine Picnic Table | 14d | 2026-09-06 | 2026-09-22 | CP09-TR7-SN-5000, CP09-TR7-HD-4560, CP09-TR7-HD-4480, CP09-TR7-HD-4470, CP09-TR7-HD-4430, CP09-TR7-HD-4390, CP09-TR7-HD-4290, CP09-TR7-HD-4340, CP09-EN-TR7-A-2770, CP09-PR-FN-DY-1000 |  | -231.44d |
| CP09-TR7-FN-4850 |  | Install & Fix Crcular Cast-iron tree grate | 14d | 2026-09-06 | 2026-09-22 | CP09-TR7-HD-4820, CP09-TR7-HD-4830, CP09-TR7-SN-5000, CP09-TR7-HD-4560, CP09-TR7-HD-4480, CP09-TR7-HD-4470, CP09-TR7-HD-4430, CP09-TR7-HD-4390, CP09-TR7-HD-4290, CP09-TR7-HD-4340, CP09-EN-TR7-A-2770, CP09-PR-FN-DY-1010 |  | -231.44d |
| CP09-TR7-FN-4860 |  | Install & Fix Aluminium Cabana for Pool Shading | 14d | 2026-09-06 | 2026-09-22 | CP09-TR7-HD-4820, CP09-TR7-HD-4830, CP09-TR7-SN-5000, CP09-TR7-HD-4560, CP09-TR7-HD-4480, CP09-TR7-HD-4470, CP09-TR7-HD-4430, CP09-TR7-HD-4390, CP09-TR7-HD-4290, CP09-TR7-HD-4340, CP09-EN-TR7-A-2770, CP09-PR-FN-DY-1020 |  | -231.44d |
| CP09-TR7-FN-4870 |  | Install & Fix Pitch Pine Benchs | 14d | 2026-09-06 | 2026-09-22 | CP09-TR7-HD-4820, CP09-TR7-HD-4830, CP09-TR7-SN-5000, CP09-TR7-HD-4560, CP09-TR7-HD-4480, CP09-TR7-HD-4470, CP09-TR7-HD-4430, CP09-TR7-HD-4390, CP09-TR7-HD-4290, CP09-TR7-HD-4340, CP09-EN-TR7-A-2770, CP09-PR-FN-DY-1030 |  | -231.44d |
| CP09-TR7-FN-4880 |  | Install & Fix Polyester Hammocks | 14d | 2026-09-06 | 2026-09-22 | CP09-TR7-HD-4820, CP09-TR7-HD-4830, CP09-TR7-SN-5000, CP09-TR7-HD-4560, CP09-TR7-HD-4480, CP09-TR7-HD-4470, CP09-TR7-HD-4430, CP09-TR7-HD-4390, CP09-TR7-HD-4290, CP09-TR7-HD-4340, CP09-EN-TR7-A-2770, CP09-PR-FN-DY-1040 |  | -231.44d |
| CP09-TR7-FN-4890 |  | Install & Fix Adult Play Swing | 14d | 2026-09-06 | 2026-09-22 | CP09-TR7-HD-4820, CP09-TR7-HD-4830, CP09-TR7-SN-5000, CP09-TR7-HD-4560, CP09-TR7-HD-4480, CP09-TR7-HD-4470, CP09-TR7-HD-4430, CP09-TR7-HD-4390, CP09-TR7-HD-4290, CP09-TR7-HD-4340, CP09-EN-TR7-A-2770, CP09-PR-FN-DY-1050 |  | -231.44d |
| CP09-TR7-FN-4900 |  | Install & Fix Aluminum Trash Bin | 14d | 2026-09-06 | 2026-09-22 | CP09-TR7-HD-4820, CP09-TR7-HD-4830, CP09-TR7-SN-5000, CP09-TR7-HD-4560, CP09-TR7-HD-4480, CP09-TR7-HD-4470, CP09-TR7-HD-4430, CP09-TR7-HD-4390, CP09-TR7-HD-4290, CP09-TR7-HD-4340, CP09-EN-TR7-A-2770, CP09-PR-FN-DY-1060 |  | -231.44d |
| CP09-TR7-FN-4910 |  | Install & Fix tensile Teflon Tent | 14d | 2026-09-06 | 2026-09-22 | CP09-TR7-HD-4820, CP09-TR7-HD-4830, CP09-TR7-SN-5000, CP09-TR7-HD-4560, CP09-TR7-HD-4480, CP09-TR7-HD-4470, CP09-TR7-HD-4430, CP09-TR7-HD-4390, CP09-TR7-HD-4290, CP09-TR7-HD-4340, CP09-EN-TR7-A-2770, CP09-PR-FN-DY-1070 |  | -231.44d |
| CP09-TR7-FN-4920 |  | Lanscape Edging ( Rubber) | 14d | 2026-09-06 | 2026-09-22 | CP09-TR7-HD-4820, CP09-TR7-HD-4830, CP09-TR7-SN-5000, CP09-TR7-HD-4560, CP09-TR7-HD-4480, CP09-TR7-HD-4470, CP09-TR7-HD-4430, CP09-TR7-HD-4390, CP09-TR7-HD-4290, CP09-TR7-HD-4340, CP09-EN-TR7-A-2770, CP09-PR-FN-DY-1080 |  | -231.44d |
|  | 10 | **Play Field Equipment** |  | 2026-09-06 | 2026-09-20 |  |  |  |
| CP09-TR7-PE-4930 |  | Fitness areas equipment | 12d | 2026-09-06 | 2026-09-20 | CP09-TR7-SN-5000, CP09-TR7-SN-5010, CP09-TR7-HD-4500, CP09-EN-TR7-A-2810, CP09-PR-PE-DY-1000, CP09-PR-PE-DY-1010, CP09-PR-PE-DY-1020, CP09-PR-PE-DY-1030 |  | -229.44d |
| CP09-TR7-PE-4940 |  | Kids playground equipment | 12d | 2026-09-06 | 2026-09-20 | CP09-TR7-SN-5000, CP09-TR7-SN-5010, CP09-TR7-HD-4500, CP09-PR-PE-DY-1040, CP09-PR-PE-DY-1050, CP09-PR-PE-DY-1060, CP09-PR-PE-DY-1070, CP09-PR-PE-DY-1080, CP09-PR-PE-DY-1090, CP09-PR-PE-DY-1100 |  | -229.44d |
|  | 7 | **Lighting for Softscape** |  | 2026-06-24 | 2026-09-22 |  |  |  |
|  | 1 | **Exterior Lighting** |  | 2026-06-24 | 2026-09-22 |  |  |  |
| CP09-TR7-SF-1730 |  | Install Landscape Lighting Pole | 35d | 2026-06-24 | 2026-08-04 | CP09-TR7-HD-4560, CP09-TR7-EL-1170, CP09-EN-TR7-A-2840, CP09-PR-EL-DY-1080 |  | -215.19d |
| CP09-TR7-SF-1770 |  | Install Projectors for Trees | 10d | 2026-07-06 | 2026-07-16 | CP09-TR7-SF-1660, CP09-TR7-SF-1670, CP09-TR7-SF-1680, CP09-TR7-SF-1690, CP09-TR7-SF-1700, CP09-TR7-SF-1710, CP09-TR7-SF-1720, CP09-EN-TR7-A-2840, CP09-PR-EL-DY-1130 |  | -174.38d |
| CP09-TR7-SF-1740 |  | Install Bollard for Walkways | 10d | 2026-08-04 | 2026-08-16 | CP09-TR7-EL-1170, CP09-TR7-HD-4560, CP09-TR7-HD-4340, CP09-TR7-HD-4290, CP09-TR7-HD-4390, CP09-TR7-HD-4430, CP09-TR7-HD-4470, CP09-TR7-HD-4480, CP09-EN-TR7-A-2840, CP09-PR-EL-DY-1090, CP09-TR7-SF-1730 |  | -205.19d |

| ID | WBS | Task | Duration | Start | Finish | Predecessors | Complete | Total float |
| --- | --- | --- | --- | --- | --- | --- | --- | --- |
| CP09-TR7-SF-1760 |  | Install Inground Uplight For Palms | 10d | 2026-08-04 | 2026-08-16 | CP09-TR7-SF-1770 SS, CP09-TR7-SF-1740 SS, CP09-EN-TR7-A-2840, CP09-PR-EL-DY-1120 |  | -200.19d |
| CP09-TR7-SF-1750 |  | Install Diffused Wall Recessed Step | 10d | 2026-08-08 | 2026-08-19 | CP09-TR7-SF-1740 SS+3d, CP09-EN-TR7-A-2840, CP09-PR-EL-DY-1110 |  | -203.19d |
| CP09-TR7-SF-1780 |  | Install Surface Mountaed Down Light for Pool Cabans | 10d | 2026-09-10 | 2026-09-22 | CP09-TR7-SF-1750 FF, CP09-TR7-FN-4860 FF, CP09-EN-TR7-A-2840, CP09-PR-EL-DY-1100 |  | -231.44d |
|  | 2 | **Outlet Lighting Fixtures** |  | 2026-08-16 | 2026-08-22 |  |  |  |
| CP09-TR7-SF-1790 |  | Install outlet lighting fixtures | 5d | 2026-08-16 | 2026-08-22 | CP09-TR7-SF-1740, CP09-EN-TR7-A-2840, CP09-PR-EL-DY-1150 |  | -205.19d |
|  | 2 | **Softscape** |  | 2026-04-13 | 2026-07-05 |  |  |  |
|  | 1 | **Planting** |  | 2026-04-13 | 2026-07-05 |  |  |  |
| CP09-TR7-SF-1640 |  | Sweet sand for all plants | 10d | 2026-04-13 A | 2026-06-03 | CP09-TR7-EW-1140, CP09-TR7-HD-4810, CP09-TR7-HD-4560, CP09-EN-TR7-A-2830, CP09-PR-PN-DY-1000, CP09-TR4-SF-1160, CP09-TR4-SF-1170 | 10% | -174.38d |
| CP09-TR7-SF-1650 |  | Organic Manure | 10d | 2026-04-13 A | 2026-06-03 | CP09-TR7-SF-1640 SS+5d, CP09-EN-TR7-A-2830, CP09-PR-PN-DY-1010 | 10% | -164.38d |
| CP09-TR7-SF-1660 |  | Large Trees | 10d | 2026-06-21 | 2026-07-01 | CP09-TR7-IR-1480, CP09-TR7-IR-1490, CP09-TR7-IR-1500, CP09-TR7-IR-1510, CP09-TR7-IR-1520, CP09-TR7-IR-1530, CP09-TR7-IR-1540, CP09-TR7-SF-1650, CP09-TR7-SF-1640, CP09-PR-PN-DY-1020 |  | -174.38d |
| CP09-TR7-SF-1670 |  | Shrubs | 10d | 2026-06-24 | 2026-07-05 | CP09-TR7-SF-1650, CP09-TR7-SF-1640, CP09-TR7-SF-1660 SS+3d, CP09-TR7-SF-1660 FF+3d, CP09-PR-PN-DY-1060 |  | -174.38d |
| CP09-TR7-SF-1680 |  | Ground Covers | 10d | 2026-06-24 | 2026-07-05 | CP09-TR7-SF-1650, CP09-TR7-SF-1640, CP09-TR7-SF-1660 SS+3d, CP09-TR7-SF-1660 FF+3d, CP09-PR-PN-DY-1070 |  | -174.38d |
| CP09-TR7-SF-1690 |  | Succulents | 10d | 2026-06-24 | 2026-07-05 | CP09-TR7-SF-1650, CP09-TR7-SF-1640, CP09-TR7-SF-1660 SS+3d, CP09-TR7-SF-1660 FF+3d, CP09-PR-PN-DY-1080 |  | -174.38d |
| CP09-TR7-SF-1700 |  | Vines & Climbers | 10d | 2026-06-24 | 2026-07-05 | CP09-TR7-SF-1650, CP09-TR7-SF-1640, CP09-TR7-SF-1660 SS+3d, CP09-TR7-SF-1660 FF+3d, CP09-PR-PN-DY-1030 |  | -174.38d |
| CP09-TR7-SF-1710 |  | Ornamental grass | 10d | 2026-06-24 | 2026-07-05 | CP09-TR7-SF-1650, CP09-TR7-SF-1640, CP09-TR7-SF-1660 SS+3d, CP09-TR7-SF-1660 FF+3d, CP09-PR-PN-DY-1050 |  | -174.38d |
| CP09-TR7-SF-1720 |  | Lawn | 10d | 2026-06-24 | 2026-07-05 | CP09-TR7-SF-1650, CP09-TR7-SF-1640, CP09-TR7-SF-1660 SS+3d, CP09-TR7-SF-1660 FF+3d, CP09-PR-PN-DY-1040 |  | -174.38d |
|  | 13 | **Terrace # 08** |  | 2024-06-24 | 2026-09-20 |  |  |  |
|  | 8 | **Swimming Pool-SP07 & Mechnical Room-MR-07** |  | 2024-06-24 | 2026-09-05 |  |  |  |
|  | 1 | **Structure Works for Swimming Pool** |  | 2024-06-24 | 2026-06-10 |  |  |  |
| CP09-TR8-SW-2450 |  | Excvation up to Formation Level | 7d | 2024-06-24 A | 2024-07-14 A | CP09-MS-1010, CP09-CLD-1000 | 100% |  |
| CP09-TR8-SW-2460 |  | Plain Concret for For Raft | 5d | 2024-09-04 A | 2025-02-27 A | CP09-TR8-SW-2450, CP09-EN-TR7-A-2490, CP09-PR-CV-DY-1000 SS, CP09-TR7-SW-3020 | 100% |  |
| CP09-TR8-SW-2470 |  | Water Proofing with screed | 3d | 2024-09-14 A | 2024-09-17 A | CP09-TR8-SW-2460, CP09-EN-TR7-A-2510, CP09-PR-CV-DY-1010 SS, CP09-EN-TR8-A-2880 | 100% |  |
| CP09-TR8-SW-2480 |  | Reinforcement concrete for Raft | 10d | 2024-09-18 A | 2024-12-11 A | CP09-TR8-SW-2470, CP09-EN-TR7-A-2490, CP09-EN-TR7-A-2500, CP09-PR-CV-DY-1130, CP09-EN-TR8-A-2870 | 100% |  |
| CP09-TR8-SW-2490 |  | Water Proofing for Raft with screed | 3.75d | 2024-12-12 A | 2024-12-15 A | CP09-TR8-SW-2480, CP09-EN-TR7-A-2510, CP09-PR-CV-DY-1010 SS | 100% |  |
| CP09-TR8-SW-2500 |  | Reinforcement Concrete for Walls | 21d | 2025-05-18 A | 2025-06-20 A | CP09-TR8-SW-2490 | 100% |  |
| CP09-TR8-SW-2510 |  | External Waterproofing for Walls | 5d | 2026-05-24 | 2026-05-28 | CP09-TR8-SW-2500 |  | -160.19d |
| CP09-TR8-SW-2520 |  | Protection Block Works | 5d | 2026-05-30 | 2026-06-03 | CP09-TR8-SW-2510, CP09-PR-CV-DY-1020 SS |  | -160.19d |
| CP09-TR8-SW-2530 |  | Backfilling | 5.62d | 2026-06-04 | 2026-06-10 | CP09-TR8-SW-2520, CP09-TR8-SW-2680 FF |  | -160.19d |
|  | 3 | **Finishing Works for Swimming Pool** |  | 2026-06-10 | 2026-07-12 |  |  |  |
| CP09-TR8-SW-2540 |  | Mosaics Tiles | 11.25d | 2026-06-10 | 2026-06-23 | CP09-TR8-SW-2520, CP09-TR8-SW-2530, CP09-EN-TR7-A-2520, CP09-PR-CV-DY-1030, CP09-EN-TR8-A-2890 |  | -160.19d |
| CP09-TR8-SW-2550 |  | Granite for Pool Edg | 3.75d | 2026-06-23 | 2026-06-28 | CP09-TR8-SW-2540, CP09-EN-TR7-A-2530, CP09-PR-CV-DY-1040, CP09-EN-TR8-A-2900 |  | -160.19d |
| CP09-TR8-SW-2560 |  | Garnite for Drinage Grate | 3.75d | 2026-06-23 | 2026-06-28 | CP09-TR8-SW-2550 SS, CP09-EN-TR7-A-2530, CP09-EN-TR8-A-2900 |  | -156.44d |
| CP09-TR8-SW-2570 |  | Granite for Pool Coping | 3.75d | 2026-06-28 | 2026-07-02 | CP09-TR8-SW-2550, CP09-EN-TR7-A-2530, CP09-EN-TR8-A-2900 |  | -160.19d |
| CP09-TR8-SW-2580 |  | Stanless Steel Ladders | 2.81d | 2026-07-02 | 2026-07-06 | CP09-TR8-SW-2540, CP09-TR8-SW-2550, CP09-TR8-SW-2560, CP09-TR8-SW-2570, CP09-EN-TR7-A-2550, CP09-EN-TR7-A-2540, CP09-PR-CV-DY-1050, CP09-EN-TR8-A-2910 |  | -160.19d |
| CP09-TR8-SW-2590 |  | Stanless Steel Handrial | 5d | 2026-07-06 | 2026-07-12 | CP09-TR8-SW-2580, CP09-EN-TR7-A-2550, CP09-PR-CV-DY-1060, CP09-EN-TR8-A-2920 |  | -160.19d |
|  | 4 | **Machine Room_MR07** |  | 2024-06-24 | 2026-09-05 |  |  |  |
| CP09-TR8-SW-2600 |  | Excvation up to Formation Level | 3.75d | 2024-06-24 A | 2024-07-06 A | CP09-TR8-SW-2450 SS | 100% |  |
| CP09-TR8-SW-2610 |  | Plain Concret for For Raft | 2.81d | 2024-12-14 A | 2024-12-17 A | CP09-TR8-SW-2600, CP09-EN-TR7-A-2490, CP09-EN-TR8-A-2860 | 100% |  |
| CP09-TR8-SW-2620 |  | Water Proofing with screed | 1.88d | 2024-12-19 A | 2024-12-24 A | CP09-TR8-SW-2610, CP09-EN-TR7-A-2510, CP09-PR-CV-DY-1010 | 100% |  |
| CP09-TR8-SW-2630 |  | Reinforcement concrete for Raft | 10d | 2025-05-18 A | 2025-10-04 A | CP09-TR8-SW-2620, CP09-EN-TR7-A-2490, CP09-EN-TR7-A-2500, CP09-EN-TR8-A-2870 | 100% |  |
| CP09-TR8-SW-2650 |  | Reinforcement Concrete for Walls & Columns | 15d | 2025-09-30 A | 2025-11-14 A | CP09-TR8-SW-2640 | 100% |  |
| CP09-TR8-SW-2660 |  | Reinforcement Concrete for Slab | 21d | 2025-11-17 A | 2025-11-21 A | CP09-TR8-SW-2650 | 100% |  |
| CP09-TR8-SW-2640 |  | Water Proofing for Raft with screed | 3.75d | 2026-01-12 A | 2026-01-16 A | CP09-TR8-SW-2630 | 100% |  |
| CP09-TR8-SW-2670 |  | External Waterproofing with Protection | 5d | 2026-05-24 | 2026-05-28 | CP09-TR8-SW-2660 |  | -203d |
| CP09-TR8-SW-2680 |  | Backfilling | 5d | 2026-05-30 | 2026-06-03 | CP09-TR8-SW-2670 |  | -154.56d |
| CP09-TR8-SW-2770 |  | Plaster for Internal Walls | 6d | 2026-05-30 | 2026-06-04 | CP09-TR8-SW-2670, CP09-EN-TR7-A-2850, CP09-PR-CV-DY-1070 |  | -203d |
| CP09-TR8-SW-2780 |  | Emulsion Paint for Internal Wall | 6d | 2026-06-22 | 2026-06-29 | CP09-TR8-SW-2770, CP09-TR8-SW-2720, CP09-PR-CV-DY-1080 |  | -207.06d |
| CP09-TR8-SW-2690 |  | Drainage Gravel including Geotextile & Geocomposit | 6d | 2026-06-29 | 2026-07-06 | CP09-TR8-SW-2780, CP09-PR-CV-DY-1090, CP09-PR-CV-DY-1100 |  | -168.06d |
| CP09-TR8-SW-2800 |  | Metal Works | 10d | 2026-07-06 | 2026-07-18 | CP09-TR8-SW-2780, CP09-TR8-SW-2690 |  | -168.06d |
| CP09-TR8-SW-2790 |  | Epoxy for flooring | 3d | 2026-09-01 | 2026-09-05 | CP09-TR8-SW-2780, CP09-TR8-SW-2800, CP09-TR8-SW-2690, CP09-TR8-SW-2710, CP09-TR8-SW-2750, CP09-TR8-SW-2760, CP09-PR-CV-DY-1110 |  | -207.06d |
|  | 2 | **MEP Works for Swimmimg Pool & Machine Room** |  | 2025-05-18 | 2026-09-01 |  |  |  |
|  | 1 | **Mechnical Works** |  | 2025-05-18 | 2026-08-03 |  |  |  |
| CP09-TR8-SW-2700 |  | UPVC pipes, fitting, valves, | 15d | 2025-05-18 A | 2026-06-09 | CP09-TR8-SW-2770, CP09-EN-TR7-A-2560, CP09-PR-ME-DY-1000, CP09-PR-ME-DY-1010, CP09-EN-TR8-A-2930 | 40% | -166d |
| CP09-TR8-SW-2710 |  | Mechnical Equipment (Valves, Pumps, Filtters, Controllers ,Dosinng) | 30d | 2026-06-29 | 2026-08-03 | CP09-TR8-SW-2780, CP09-TR8-SW-2700, CP09-EN-TR7-A-2560, CP09-PR-ME-DY-1020, CP09-PR-ME-DY-1030, CP09-PR-ME-DY-1040, CP09-PR-ME-DY-1050, CP09-PR-ME-DY-1060, CP09-PR-ME-DY-1070, CP09-PR-ME-DY-1080 |  | -182.06d |
|  | 2 | **Electrical Works-SW** |  | 2026-06-10 | 2026-09-01 |  |  |  |
| CP09-TR8-SW-2720 |  | Conduits, Cable tray | 10d | 2026-06-10 | 2026-06-22 | CP09-TR8-SW-2770, CP09-EN-TR7-A-2570, CP09-PR-EL-DY-1000, CP09-PR-EL-DY-1010, CP09-EN-TR8-A-2940 |  | -207.06d |
| CP09-TR8-SW-2730 |  | Panel boards | 10d | 2026-06-29 | 2026-07-11 | CP09-TR8-SW-2720, CP09-TR8-SW-2780, CP09-EN-TR7-A-2570, CP09-PR-EL-DY-1020 |  | -207.06d |
| CP09-TR8-SW-2740 |  | Power Cables & Wires | 15d | 2026-07-11 | 2026-07-28 | CP09-TR8-SW-2730, CP09-TR8-SW-2720, CP09-EN-TR7-A-2570, CP09-PR-EL-DY-1030 |  | -207.06d |
| CP09-TR8-SW-2760 |  | Earthing System | 15d | 2026-07-11 | 2026-07-28 | CP09-TR8-SW-2740 SS, CP09-PR-EL-DY-1040 |  | -177.06d |
| CP09-TR8-SW-2750 |  | (Lighting Outlets , Switches, Fixture ) | 30d | 2026-07-28 | 2026-09-01 | CP09-TR8-SW-2720, CP09-TR8-SW-2740, CP09-TR8-SW-2730, CP09-PR-EL-DY-1050, CP09-PR-EL-DY-1140 |  | -207.06d |
|  | 5 | **Swimming Pool-SP08 & Mechnical Room-MR-08** |  | 2025-11-03 | 2026-09-06 |  |  |  |
|  | 1 | **Structure Works for Swimming Pool** |  | 2025-11-03 | 2026-06-09 |  |  |  |
| CP09-TR8-SW-2810 |  | Excvation up to Formation Level | 5d | 2025-11-03 A | 2025-11-21 A | CP09-MS-1010, CP09-CLD-1000 | 100% |  |
| CP09-TR8-SW-2820 |  | Plain Concret for For Raft | 5d | 2025-11-17 A | 2025-11-28 A | CP09-TR8-SW-2810, CP09-EN-TR7-A-2490, CP09-PR-CV-DY-1000 SS, CP09-EN-TR8-A-2860, CP09-TR8-SW-2660 | 100% |  |
| CP09-TR8-SW-2830 |  | Water Proofing with screed | 5d | 2025-11-24 A | 2025-12-26 A | CP09-TR8-SW-2820, CP09-EN-TR7-A-2510, CP09-PR-CV-DY-1010 SS, CP09-EN-TR8-A-2870 | 100% |  |
| CP09-TR8-SW-2840 |  | Reinforcement concrete for Raft | 5d | 2025-12-22 A | 2026-01-09 A | CP09-TR8-SW-2830, CP09-EN-TR7-A-2490, CP09-EN-TR7-A-2500, CP09-PR-CV-DY-1130 | 100% |  |
| CP09-TR8-SW-2860 |  | Reinforcement Concrete for Walls | 5d | 2025-12-25 A | 2026-03-06 A | CP09-TR8-SW-2850 | 100% |  |
| CP09-TR8-SW-2850 |  | Water Proofing for Raft with screed | 5d | 2026-01-05 A | 2026-01-09 A | CP09-TR8-SW-2840, CP09-EN-TR7-A-2510, CP09-PR-CV-DY-1010 SS | 100% |  |
| CP09-TR8-SW-2870 |  | External Waterproofing for Walls | 5d | 2026-05-24 | 2026-05-28 | CP09-TR8-SW-2860 |  | -163d |
| CP09-TR8-SW-2880 |  | Protection Block Works | 5d | 2026-05-30 | 2026-06-03 | CP09-TR8-SW-2870, CP09-PR-CV-DY-1020 SS |  | -163d |

| ID | WBS | Task | Duration | Start | Finish | Predecessors | Complete | Total float |
| --- | --- | --- | --- | --- | --- | --- | --- | --- |
| CP09-TR8-SW-2890 |  | Backfilling | 5d | 2026-06-04 | 2026-06-09 | CP09-TR8-SW-2880, CP09-TR8-SW-3040 FF |  | -163d |
|  | 3 | **Finishing Works for Swimming Pool** |  | 2026-06-10 | 2026-07-08 |  |  |  |
| CP09-TR8-SW-2900 |  | Mosaics Tiles | 5d | 2026-06-10 | 2026-06-15 | CP09-TR8-SW-2880, CP09-TR8-SW-2890, CP09-EN-TR7-A-2520, CP09-PR-CV-DY-1030, CP09-EN-TR8-A-2890 |  | -163d |
| CP09-TR8-SW-2910 |  | Granite for Pool Edg | 5d | 2026-06-16 | 2026-06-21 | CP09-TR8-SW-2900, CP09-EN-TR7-A-2530, CP09-PR-CV-DY-1040, CP09-EN-TR8-A-2900 |  | -163d |
| CP09-TR8-SW-2920 |  | Garnite for Drinage Grate | 5d | 2026-06-16 | 2026-06-21 | CP09-TR8-SW-2910 SS, CP09-EN-TR7-A-2530, CP09-EN-TR8-A-2900 |  | -158d |
| CP09-TR8-SW-2930 |  | Granite for Pool Coping | 5d | 2026-06-22 | 2026-06-27 | CP09-TR8-SW-2910, CP09-EN-TR7-A-2530, CP09-EN-TR8-A-2900 |  | -163d |
| CP09-TR8-SW-2940 |  | Stanless Steel Ladders | 5d | 2026-06-28 | 2026-07-02 | CP09-TR8-SW-2900, CP09-TR8-SW-2910, CP09-TR8-SW-2920, CP09-TR8-SW-2930, CP09-EN-TR7-A-2550, CP09-EN-TR7-A-2540, CP09-PR-CV-DY-1050, CP09-EN-TR8-A-2910 |  | -163d |
| CP09-TR8-SW-2950 |  | Stanless Steel Handrial | 5d | 2026-07-04 | 2026-07-08 | CP09-TR8-SW-2940, CP09-EN-TR7-A-2550, CP09-PR-CV-DY-1060, CP09-EN-TR8-A-2920 |  | -163d |
|  | 4 | **Machine Room_MR08** |  | 2025-11-03 | 2026-09-06 |  |  |  |
| CP09-TR8-SW-2960 |  | Excvation up to Formation Level | 5d | 2025-11-03 A | 2025-12-05 A | CP09-TR8-SW-2810 SS | 100% |  |
| CP09-TR8-SW-2970 |  | Plain Concret for For Raft | 5d | 2025-12-01 A | 2025-12-05 A | CP09-TR8-SW-2960, CP09-EN-TR7-A-2490, CP09-EN-TR8-A-2860 | 100% |  |
| CP09-TR8-SW-2980 |  | Water Proofing with screed | 5d | 2026-01-05 A | 2026-01-09 A | CP09-TR8-SW-2970, CP09-EN-TR7-A-2510, CP09-PR-CV-DY-1010 | 100% |  |
| CP09-TR8-SW-2990 |  | Reinforcement concrete for Raft | 5d | 2026-01-05 A | 2026-01-09 A | CP09-TR8-SW-2980, CP09-EN-TR7-A-2490, CP09-EN-TR7-A-2500, CP09-EN-TR8-A-2870 | 100% |  |
| CP09-TR8-SW-3000 |  | Water Proofing for Raft with screed | 5d | 2026-01-05 A | 2026-01-09 A | CP09-TR8-SW-2990 | 100% |  |
| CP09-TR8-SW-3010 |  | Reinforcement Concrete for Walls & Columns | 5d | 2026-01-05 A | 2026-02-06 A | CP09-TR8-SW-3000 | 100% |  |
| CP09-TR8-SW-3020 |  | Reinforcement Concrete for Slab | 5d | 2026-02-02 A | 2026-02-06 A | CP09-TR8-SW-3010 | 100% |  |
| CP09-TR8-SW-3030 |  | External Waterproofing with Protection | 5d | 2026-05-24 | 2026-05-28 | CP09-TR8-SW-3020 |  | -203d |
| CP09-TR8-SW-3040 |  | Backfilling | 5d | 2026-05-30 | 2026-06-03 | CP09-TR8-SW-3030 |  | -158d |
| CP09-TR8-SW-3130 |  | Plaster for Internal Walls | 5d | 2026-05-30 | 2026-06-03 | CP09-TR8-SW-3030, CP09-EN-TR7-A-2850, CP09-PR-CV-DY-1070, CP09-EN-TR8-A-3220 |  | -203d |
| CP09-TR8-SW-3140 |  | Emulsion Paint for Internal Wall | 5d | 2026-06-22 | 2026-06-28 | CP09-TR8-SW-3130, CP09-TR8-SW-3080, CP09-PR-CV-DY-1080 |  | -208.06d |
| CP09-TR8-SW-3050 |  | Drainage Gravel including Geotextile & Geocomposit | 5d | 2026-06-28 | 2026-07-04 | CP09-TR8-SW-3140, CP09-PR-CV-DY-1090, CP09-PR-CV-DY-1100 |  | -158.06d |
| CP09-TR8-SW-3160 |  | Metal Works | 5d | 2026-06-28 | 2026-07-04 | CP09-TR8-SW-3140 |  | -158.06d |
| CP09-TR8-SW-3150 |  | Epoxy for flooring | 5d | 2026-08-31 | 2026-09-06 | CP09-TR8-SW-3140, CP09-TR8-SW-3160, CP09-TR8-SW-3050, CP09-TR8-SW-3070, CP09-TR8-SW-3110, CP09-TR8-SW-3120, CP09-PR-CV-DY-1110, CP09-TR8-SW-2950 |  | -208.06d |
|  | 2 | **MEP Works for Swimmimg Pool & Machine Room** |  | 2025-12-22 | 2026-08-31 |  |  |  |
|  | 1 | **Mechnical Works** |  | 2025-12-22 | 2026-08-02 |  |  |  |
| CP09-TR8-SW-3060 |  | UPVC pipes, fitting, valves, | 15d | 2025-12-22 A | 2026-06-09 | CP09-TR8-SW-3130, CP09-EN-TR7-A-2560, CP09-PR-ME-DY-1000, CP09-PR-ME-DY-1010, CP09-EN-TR8-A-2930 | 40% | -168d |
| CP09-TR8-SW-3070 |  | Mechnical Equipment (Valves, Pumps, Filtters, Controllers ,Dosinng,& Ventilation exahust fan) | 30d | 2026-06-28 | 2026-08-02 | CP09-TR8-SW-3140, CP09-TR8-SW-3060, CP09-EN-TR7-A-2560, CP09-PR-ME-DY-1020, CP09-PR-ME-DY-1030, CP09-PR-ME-DY-1040, CP09-PR-ME-DY-1050, CP09-PR-ME-DY-1060, CP09-PR-ME-DY-1070, CP09-PR-ME-DY-1080 |  | -183.06d |
|  | 2 | **Electrical Works-SW** |  | 2026-06-10 | 2026-08-31 |  |  |  |
| CP09-TR8-SW-3080 |  | Conduits, Cable tray | 10d | 2026-06-10 | 2026-06-22 | CP09-TR8-SW-3130, CP09-EN-TR7-A-2570, CP09-PR-EL-DY-1000, CP09-PR-EL-DY-1010, CP09-EN-TR8-A-2940 |  | -208.06d |
| CP09-TR8-SW-3090 |  | Panel boards | 10d | 2026-06-28 | 2026-07-09 | CP09-TR8-SW-3080, CP09-TR8-SW-3140, CP09-EN-TR7-A-2570, CP09-PR-EL-DY-1020 |  | -208.06d |
| CP09-TR8-SW-3100 |  | Power Cables & Wires | 15d | 2026-07-09 | 2026-07-27 | CP09-TR8-SW-3090, CP09-TR8-SW-3080, CP09-EN-TR7-A-2570, CP09-PR-EL-DY-1030 |  | -208.06d |
| CP09-TR8-SW-3120 |  | Earthing System | 15d | 2026-07-09 | 2026-07-27 | CP09-TR8-SW-3100 SS, CP09-PR-EL-DY-1040 |  | -178.06d |
| CP09-TR8-SW-3110 |  | (Lighting Outlets , Switches, Fixture ) | 30d | 2026-07-27 | 2026-08-31 | CP09-TR8-SW-3080, CP09-TR8-SW-3100, CP09-TR8-SW-3090, CP09-PR-EL-DY-1050, CP09-PR-EL-DY-1140 |  | -208.06d |
|  | 6 | **Earth Work** |  | 2026-05-24 | 2026-06-15 |  |  |  |
|  | 1 | **Grading works** |  | 2026-05-24 | 2026-06-15 |  |  |  |
| CP09-TR8-EW-1120 |  | Excavation work to Reduce Level | 15d | 2026-05-24 | 2026-06-09 | CP09-TR8-SW-2600, CP09-CLD-1000, CP09-TR8-SW-2960, CP09-EN-TR8-A-2950 |  | -224.12d |
| CP09-TR8-EW-1130 |  | Filling works to make up levels with Compacting | 15d | 2026-05-28 | 2026-06-15 | CP09-TR8-SW-2600, CP09-TR8-EW-1120 SS+4.69d, CP09-EN-TR7-A-2580, CP09-TR8-SW-2960, CP09-EN-TR8-A-2950 |  | -224.12d |
|  | 2 | **Planting** |  | 2026-05-28 | 2026-06-15 |  |  |  |
| CP09-TR8-EW-1140 |  | Excavation works for Planting Beds | 15d | 2026-05-28 | 2026-06-15 | CP09-TR8-EW-1120 SS, CP09-TR8-EW-1130 SS, CP09-EN-TR7-A-2580, CP09-EN-TR8-A-2950 |  | -224.12d |
|  | 9 | **Retaining & Cheek Walls** |  | 2026-05-04 | 2026-07-14 |  |  |  |
|  | 1 | **Soild Block Work Cheek Walls** |  | 2026-05-04 | 2026-07-14 |  |  |  |
| CP09-TR8-RW-1890 |  | Plaing Concrete with HPDE | 4.69d | 2026-05-04 A | 2026-05-31 | CP09-TR8-RW-1940 SS+2.81d, CP09-TR8-RW-1940 FF+2.81d, CP09-EN-TR7-A-2590, CP09-EN-TR8-A-2960 | 50% | -206d |
| CP09-TR8-RW-1900 |  | Reinforced Concrete for Footing | 6.56d | 2026-05-04 A | 2026-06-03 | CP09-TR8-RW-1890 SS+2.81d, CP09-TR8-RW-1890 FF+2.81d, CP09-EN-TR7-A-2600, CP09-EN-TR7-A-2590, CP09-EN-TR8-A-2970 | 50% | -206d |
| CP09-TR8-RW-1910 |  | Reinforced Concrete for Tie beam | 4.69d | 2026-05-04 A | 2026-06-07 | CP09-TR8-RW-1900 SS+2.81d, CP09-TR8-RW-1900 FF+2.81d | 50% | -206d |
| CP09-TR8-RW-1920 |  | Reinforced Concrete for Column | 5.62d | 2026-05-04 A | 2026-06-09 | CP09-TR8-RW-1910 SS+2.81d, CP09-TR8-RW-1910 FF+2.81d | 50% | -206d |
| CP09-TR8-RW-1930 |  | Soild Block Work | 5.62d | 2026-05-04 A | 2026-06-16 | CP09-TR8-RW-1920 SS+5.62d, CP09-TR8-RW-1920 FF+5.62d, CP09-EN-TR7-A-2620, CP09-PR-CV-DY-1020, CP09-EN-TR8-A-2990 | 50% | -206d |
| CP09-TR8-RW-1940 |  | Excavation | 3.75d | 2026-05-04 A | 2026-05-27 | CP09-TR8-EW-1120, CP09-TR8-EW-1130 | 50% | -206d |
| CP09-TR8-RW-1950 |  | Reinforced Concrete for Beam | 7.5d | 2026-05-04 A | 2026-06-21 | CP09-TR8-RW-1930 SS+3.75d, CP09-TR8-RW-1930 FF+3.75d | 50% | -206d |
| CP09-TR8-RW-1960 |  | Waterproofing & Protection | 6.56d | 2026-05-04 A | 2026-06-29 | CP09-TR8-RW-1950 SS+7.5d, CP09-TR8-RW-1950 FF+7.5d, CP09-EN-TR7-A-2610, CP09-EN-TR8-A-2980 | 50% | -206d |
| CP09-TR8-RW-1970 |  | Backfilling | 5.62d | 2026-05-04 A | 2026-07-02 | CP09-TR8-RW-1960 SS+2.81d, CP09-TR8-RW-1960 FF+2.81d | 50% | -206d |
| CP09-TR8-RW-1980 |  | Marble Cladding | 6.56d | 2026-07-01 | 2026-07-09 | CP09-TR8-RW-1970 SS+5.62d, CP09-TR8-RW-1970 FF+5.62d, CP09-EN-TR7-A-2630, CP09-PR-CV-DY-1120, CP09-EN-TR8-A-3000 |  | -206d |
| CP09-TR8-RW-1990 |  | Marble Copping | 6.56d | 2026-07-07 | 2026-07-14 | CP09-TR8-RW-1980 SS+4.69d, CP09-TR8-RW-1980 FF+4.69d, CP09-EN-TR7-A-2630, CP09-PR-CV-DY-1120, CP09-EN-TR8-A-3000 |  | -206d |
|  | 2 | **Solid Block Retaining Walls** |  | 2026-05-04 | 2026-07-14 |  |  |  |
| CP09-TR8-RW-2000 |  | Plaing Concrete with HPDE | 5d | 2026-05-04 A | 2026-05-31 | CP09-TR8-RW-2050 SS+2.81d, CP09-TR8-RW-2050 FF+2.81d, CP09-EN-TR7-A-2590, CP09-EN-TR8-A-2960 | 50% | -205.06d |
| CP09-TR8-RW-2010 |  | Reinforced Concrete for Footing | 6.56d | 2026-05-04 A | 2026-06-03 | CP09-TR8-RW-2000 SS+2.81d, CP09-TR8-RW-2000 FF+2.81d, CP09-EN-TR7-A-2590, CP09-EN-TR7-A-2600, CP09-EN-TR8-A-2970 | 50% | -205.06d |
| CP09-TR8-RW-2020 |  | Reinforced Concrete for Tie beam | 5d | 2026-05-04 A | 2026-06-07 | CP09-TR8-RW-2010 SS+2.81d, CP09-TR8-RW-2010 FF+2.81d | 50% | -205.06d |
| CP09-TR8-RW-2030 |  | Reinforced Concrete for Column | 5.62d | 2026-05-04 A | 2026-06-09 | CP09-TR8-RW-2020 SS+2.81d, CP09-TR8-RW-2020 FF+2.81d | 50% | -205.06d |
| CP09-TR8-RW-2040 |  | Soild Block Work | 5.62d | 2026-05-04 A | 2026-06-16 | CP09-TR8-RW-2030 SS+5.62d, CP09-TR8-RW-2030 FF+5.62d, CP09-EN-TR7-A-2620, CP09-EN-TR8-A-2990 | 50% | -205.06d |
| CP09-TR8-RW-2050 |  | Excavation | 3.75d | 2026-05-04 A | 2026-05-27 | CP09-TR8-EW-1120, CP09-TR8-EW-1130, CP09-TR8-RW-1900 | 50% | -205.06d |
| CP09-TR8-RW-2060 |  | Reinforced Concrete for Beam | 7.5d | 2026-05-04 A | 2026-06-21 | CP09-TR8-RW-2040 SS+3.75d, CP09-TR8-RW-2040 FF+3.75d | 50% | -205.06d |
| CP09-TR8-RW-2070 |  | Waterproofing & Protection | 6.56d | 2026-05-04 A | 2026-06-29 | CP09-TR8-RW-2060 SS+7.5d, CP09-TR8-RW-2060 FF+7.5d, CP09-EN-TR8-A-2980 | 50% | -205.06d |
| CP09-TR8-RW-2080 |  | Backfilling | 5.62d | 2026-05-04 A | 2026-07-02 | CP09-TR8-RW-2070 SS+2.81d, CP09-TR8-RW-2070 FF+2.81d | 50% | -205.06d |
| CP09-TR8-RW-2090 |  | Marble Cladding | 6.56d | 2026-06-30 | 2026-07-08 | CP09-TR8-RW-2080 SS+4.69d, CP09-TR8-RW-2080 FF+4.69d, CP09-EN-TR7-A-2630, CP09-PR-CV-DY-1120, CP09-EN-TR8-A-3000 |  | -205.06d |
| CP09-TR8-RW-2100 |  | Marble Copping | 6.56d | 2026-07-06 | 2026-07-14 | CP09-TR8-RW-2090 SS+4.69d, CP09-TR8-RW-2090 FF+4.69d, CP09-EN-TR7-A-2630, CP09-PR-CV-DY-1120, CP09-EN-TR8-A-3000 |  | -205.06d |
|  | 1 | **Irrigation Works** |  | 2026-01-12 | 2026-07-01 |  |  |  |
|  | 1 | **Sub-Main & Lateral** |  | 2026-01-12 | 2026-06-07 |  |  |  |
| CP09-TR8-IR-1440 |  | Excavation for Sub-main & Lateral Pieps | 4d | 2026-01-12 A | 2026-05-27 | CP09-EN-TR7-A-2820, CP09-TR8-HD-4810, CP09-TR4-IR-1140, CP09-EN-TR8-A-3190, CP09-EN-TR8-A-3200 | 60% | -214.44d |
| CP09-TR8-IR-1450 |  | Sub-main & Lateral Pieps laying out and installation | 5d | 2026-01-12 A | 2026-06-02 | CP09-TR8-IR-1440 SS+2d, CP09-TR8-IR-1440 FF+5d, CP09-PR-IR-DY-1000 | 60% | -214.44d |
| CP09-TR8-IR-1460 |  | Sub-main & Lateral Pieps Testing | 3d | 2026-01-12 A | 2026-06-04 | CP09-TR8-IR-1450 SS+2d, CP09-TR8-IR-1450 FF+2d | 60% | -214.44d |
| CP09-TR8-IR-1470 |  | Backfilling forSub-main & Lateral Pieps | 4d | 2026-01-12 A | 2026-06-07 | CP09-TR8-IR-1460 SS+2d, CP09-TR8-IR-1460 FF+2d | 60% | -214.44d |

| ID | WBS | Task | Duration | Start | Finish | Predecessors | Complete | Total float |
| --- | --- | --- | --- | --- | --- | --- | --- | --- |
|  | 2 | **Fittings & Accessories** |  | 2026-06-16 | 2026-07-01 |  |  |  |
| CP09-TR8-IR-1480 |  | Installation of Dripline | 12d | 2026-06-16 | 2026-06-29 | CP09-PR-IR-DY-1010, CP09-TR8-SF-1640, CP09-TR8-SF-1650 SS+2d, CP09-TR8-IR-1460 |  | -177.38d |
| CP09-TR8-IR-1490 |  | Installation of Sprinklers | 12d | 2026-06-16 | 2026-06-29 | CP09-TR8-IR-1480 SS, CP09-PR-IR-DY-1040 |  | -177.38d |
| CP09-TR8-IR-1500 |  | Installation Valves & Rings | 7d | 2026-06-16 | 2026-06-23 | CP09-TR8-IR-1490 SS, CP09-PR-IR-DY-1030, CP09-PR-IR-DY-1020 |  | -177.38d |
| CP09-TR8-IR-1510 |  | Installation of Electrical solenoid valve | 7d | 2026-06-16 | 2026-06-23 | CP09-TR8-IR-1500 SS, CP09-PR-IR-DY-1050 |  | -170.38d |
| CP09-TR8-IR-1520 |  | Installation of Controller (decoder system plastic pedestal) | 7d | 2026-06-24 | 2026-07-01 | CP09-TR8-IR-1500, CP09-TR8-IR-1510 SS, CP09-PR-IR-DY-1060 |  | -177.38d |
| CP09-TR8-IR-1530 |  | Installation of Controller decoder cables | 7d | 2026-06-24 | 2026-07-01 | CP09-TR8-IR-1520 SS, CP09-PR-IR-DY-1070 |  | -177.38d |
| CP09-TR8-IR-1540 |  | Installation of Decoder one station | 5d | 2026-06-24 | 2026-06-29 | CP09-TR8-IR-1530 SS, CP09-PR-IR-DY-1080 |  | -175.38d |
|  | 4 | **Electrical Works** |  | 2026-06-15 | 2026-08-09 |  |  |  |
|  | 1 | **Power Cable & Pillars** |  | 2026-06-15 | 2026-08-09 |  |  |  |
| CP09-TR8-EL-1160 |  | Excavation | 5d | 2026-06-15 | 2026-06-21 | CP09-TR8-EW-1120, CP09-TR8-EW-1130, CP09-TR8-IR-1470, CP09-EN-TR7-A-2780, CP09-TR4-EL-1060, CP09-EN-TR8-A-3150 |  | -221.12d |
| CP09-TR8-EL-1170 |  | Installation of Power Cables | 4d | 2026-06-18 | 2026-06-23 | CP09-TR8-EL-1160 SS+2d, CP09-TR8-EL-1160 FF+2d, CP09-EN-TR7-A-2780, CP09-EN-TR7-A-2790, CP09-PR-EL-DY-1060 |  | -221.12d |
| CP09-TR8-EL-1180 |  | Backfilling for Power Cables | 4d | 2026-06-21 | 2026-06-25 | CP09-TR8-EL-1170 SS+2d, CP09-TR8-EL-1170 FF+2d |  | -221.12d |
| CP09-TR8-EL-1190 |  | Installation of Connecting Pillars | 15d | 2026-07-22 | 2026-08-09 | CP09-PR-EL-DY-1070, CP09-EN-TR8-A-3160, CP09-TR8-HD-4560 |  | -190.5d |
|  | 3 | **Hardscape** |  | 2026-02-02 | 2026-09-20 |  |  |  |
|  | 6 | **Concrete Curb** |  | 2026-06-15 | 2026-07-16 |  |  |  |
| CP09-TR8-HD-4510 |  | Excavation | 5d | 2026-06-15 | 2026-06-21 | CP09-TR8-EW-1120, CP09-TR8-EW-1130, CP09-TR8-EW-1140, CP09-TR4-HD-2380 |  | -224.12d |
| CP09-TR8-HD-4520 |  | Plains Concrete with HDPE waterproofing | 5d | 2026-06-21 | 2026-06-27 | CP09-TR8-HD-4510, CP09-EN-TR7-A-2710, CP09-EN-TR8-A-3080 |  | -224.12d |
| CP09-TR8-HD-4790 |  | Under Paving Reinforced Concrete Curb | 10d | 2026-06-23 | 2026-07-05 | CP09-TR8-HD-4520 SS+1.88d, CP09-TR8-HD-4520 FF+1.88d |  | -224.12d |
| CP09-TR8-HD-4810 |  | Instal Flush Curb | 7d | 2026-07-08 | 2026-07-16 | CP09-EN-TR7-A-2710, CP09-PR-HD-DY-1080, CP09-TR8-HD-4790 FS+3d, CP09-TR8-HD-4790 FF+3d |  | -224.12d |
|  | 1 | **Side wake & Plazes** |  | 2026-02-02 | 2026-08-24 |  |  |  |
|  | 8 | **Interlocking Paving** |  | 2026-06-25 | 2026-07-22 |  |  |  |
| CP09-TR8-HD-4530 |  | Crush Stone for Interlock Types IL-(01,02,06,07) | 6.56d | 2026-06-25 | 2026-07-04 | CP09-EN-TR7-A-2720, CP09-TR8-EW-1120, CP09-TR8-EW-1130, CP09-TR8-IR-1470, CP09-TR8-EL-1180, CP09-PR-HD-DY-1090, CP09-TR4-HD-2130, CP09-EN-TR8-A-3090 |  | -221.12d |
| CP09-TR8-HD-4540 |  | Sand Layer for Interlock Types IL-(01,02,06,07) | 10d | 2026-07-01 | 2026-07-13 | CP09-TR8-HD-4530 SS+5d, CP09-TR8-HD-4530 FF+5d, CP09-EN-TR7-A-2720, CP09-EN-TR8-A-3090 |  | -221.12d |
| CP09-TR8-HD-4550 |  | Motar Bed Interlock Types IL-(03,04,08,09,10) | 10d | 2026-07-01 | 2026-07-13 | CP09-TR8-HD-4540 SS, CP09-EN-TR7-A-2720 |  | -221.12d |
| CP09-TR8-HD-4560 |  | Interlocking Paving | 15d | 2026-07-05 | 2026-07-22 | CP09-TR8-HD-4540 SS+2.81d, CP09-TR8-HD-4550 SS+2.81d, CP09-TR8-HD-4540 FF+2.81d, CP09-TR8-HD-4550 FF+2.81d, CP09-EN-TR7-A-2720, CP09-PR-HD-DY-1180 |  | -221.12d |
|  | 2 | **Concrete in Situ** |  | 2026-02-02 | 2026-06-09 |  |  |  |
|  | 1 | **Slab on Garde** |  | 2026-02-02 | 2026-06-03 |  |  |  |
| CP09-TR8-HD-4300 |  | Plain Concrete with HDPE | 7d | 2026-02-02 A | 2026-05-31 | CP09-TR8-EW-1120, CP09-TR8-EW-1130, CP09-TR8-IR-1470, CP09-TR8-EL-1180, CP09-EN-TR7-A-2640, CP09-TR8-HD-4560 | 50% | -103d |
| CP09-TR8-HD-4310 |  | Reinfored Concrete slab on grade | 10d | 2026-05-18 A | 2026-06-03 | CP09-TR8-HD-4300 | 30% | -106d |
| CP09-TR8-HD-4320 |  | Waterproofing & Screed | 6d | 2026-05-18 A | 2026-05-30 | CP09-TR8-HD-4310 | 30% | -102d |
|  | 2 | **Concrete In-situ w./Exposed Aggregate Finish** |  | 2026-05-18 | 2026-06-09 |  |  |  |
| CP09-TR8-HD-4330 |  | Concrete casting (including Joints & Wire Mish) | 15d | 2026-05-18 A | 2026-06-09 | CP09-TR8-HD-4320, CP09-TR8-HD-4810, CP09-EN-TR7-A-2640, CP09-PR-HD-DY-1000, CP09-EN-TR8-A-3010 | 30% | -111d |
| CP09-TR8-HD-4340 |  | Finishing Concrete Surface | 6d | 2026-05-18 A | 2026-05-30 | CP09-TR8-HD-4330, CP09-TR8-RW-1980, CP09-TR8-RW-1990, CP09-TR8-RW-2090, CP09-TR8-RW-2100 | 30% | -139.38d |
|  | 1 | **Marble Paving** |  | 2026-02-02 | 2026-06-08 |  |  |  |
|  | 1 | **Slab on Garde** |  | 2026-02-02 | 2026-06-03 |  |  |  |
| CP09-TR8-HD-4250 |  | Plain Concrete with HDPE | 5d | 2026-02-02 A | 2026-05-28 | CP09-TR8-EW-1120, CP09-TR8-EW-1140, CP09-TR8-IR-1470, CP09-TR8-EL-1180 FS+5d, CP09-EN-TR7-A-2650, CP09-TR8-HD-4560 | 75% | -101d |
| CP09-TR8-HD-4260 |  | Reinfored Concrete slab on grade | 10d | 2026-05-04 A | 2026-06-03 | CP09-TR8-HD-4250 | 50% | -106d |
| CP09-TR8-HD-4270 |  | Waterproofing & Screed | 7d | 2026-05-04 A | 2026-05-31 | CP09-TR8-HD-4260 | 50% | -103d |
|  | 2 | **Marble Tiles** |  | 2026-05-04 | 2026-06-08 |  |  |  |
| CP09-TR8-HD-4280 |  | Marble Fixiation | 14d | 2026-05-04 A | 2026-06-08 | CP09-TR8-HD-4270, CP09-TR8-HD-4810, CP09-EN-TR7-A-2650, CP09-PR-HD-DY-1010, CP09-EN-TR8-A-3020 | 50% | -110d |
| CP09-TR8-HD-4290 |  | Marble Surfcae Finishing | 7d | 2026-05-04 A | 2026-05-31 | CP09-TR8-HD-4280, CP09-TR8-HD-4340 SS | 50% | -134.38d |
|  | 3 | **Wooden Floor Boards** |  | 2026-06-25 | 2026-08-01 |  |  |  |
|  | 1 | **Slab on Garde** |  | 2026-06-25 | 2026-07-15 |  |  |  |
| CP09-TR8-HD-4350 |  | Plain Concrete with HDPE | 5d | 2026-06-25 | 2026-07-01 | CP09-TR8-EW-1120, CP09-TR8-EW-1130, CP09-TR8-IR-1470, CP09-TR8-EL-1180, CP09-EN-TR7-A-2660 |  | -186.06d |
| CP09-TR8-HD-4360 |  | Reinfored Concrete slab on grade | 7d | 2026-07-01 | 2026-07-09 | CP09-TR8-HD-4350 |  | -186.06d |
| CP09-TR8-HD-4370 |  | Waterproofing & Screed | 5d | 2026-07-09 | 2026-07-15 | CP09-TR8-HD-4360 |  | -186.06d |
|  | 2 | **Wood- Plastic Composit** |  | 2026-07-16 | 2026-08-01 |  |  |  |
| CP09-TR8-HD-4380 |  | WPC Installation | 7d | 2026-07-16 | 2026-07-25 | CP09-TR8-HD-4370, CP09-TR8-HD-4810, CP09-EN-TR7-A-2660, CP09-PR-HD-DY-1020, CP09-EN-TR8-A-3030 |  | -186.94d |
| CP09-TR8-HD-4390 |  | WPC surface finishing & Accessories | 6d | 2026-07-25 | 2026-08-01 | CP09-TR8-HD-4380, CP09-TR8-HD-4290 FF, CP09-TR8-HD-4340 |  | -186.94d |
|  | 4 | **Gravel layer** |  | 2026-06-25 | 2026-08-03 |  |  |  |
|  | 1 | **Slab on Garde** |  | 2026-06-25 | 2026-07-05 |  |  |  |
| CP09-TR8-HD-4400 |  | Plain Concrete with HDPE | 3d | 2026-06-25 | 2026-06-29 | CP09-TR8-EW-1120, CP09-TR8-EW-1130, CP09-TR8-IR-1470, CP09-TR8-EL-1180, CP09-EN-TR7-A-2670 |  | -206.06d |
| CP09-TR8-HD-4420 |  | Mortar bed | 5d | 2026-06-29 | 2026-07-05 | CP09-TR8-HD-4400 |  | -206.06d |
|  | 2 | **Gravel Layer, w./Earth Colors** |  | 2026-07-16 | 2026-08-03 |  |  |  |
| CP09-TR8-HD-4430 |  | Furnish & install Garvel Layer | 15d | 2026-07-16 | 2026-08-03 | CP09-TR8-HD-4420, CP09-TR8-HD-4810, CP09-EN-TR7-A-2670, CP09-PR-HD-DY-1030, CP09-EN-TR8-A-3040 |  | -215.94d |
|  | 5 | **Crushed Stone** |  | 2026-06-29 | 2026-08-17 |  |  |  |
|  | 1 | **Slab on Garde** |  | 2026-06-29 | 2026-07-27 |  |  |  |
| CP09-TR8-HD-4440 |  | Geotextile membrane | 12d | 2026-06-29 | 2026-07-13 | CP09-TR8-EW-1120, CP09-TR8-EW-1130, CP09-TR8-IR-1470, CP09-TR8-EL-1180, CP09-EN-TR7-A-2680, CP09-TR8-HD-4400 |  | -198.06d |
| CP09-TR8-HD-4460 |  | Gravel fix sheets | 12d | 2026-07-13 | 2026-07-27 | CP09-TR8-HD-4440 |  | -198.06d |
|  | 2 | **Crushed Dolomite Stone** |  | 2026-08-03 | 2026-08-17 |  |  |  |
| CP09-TR8-HD-4470 |  | Furnish & Install Crushed Dolomite stone , w./ mixed colors | 12d | 2026-08-03 | 2026-08-17 | CP09-TR8-HD-4460 SS, CP09-TR8-HD-4430, CP09-TR8-HD-4810, CP09-EN-TR7-A-2680, CP09-PR-HD-DY-1040, CP09-EN-TR8-A-3050, CP09-TR8-HD-4460 FF |  | -215.94d |
|  | 6 | **Loose Gravel** |  | 2026-07-16 | 2026-07-30 |  |  |  |
|  | 2 | **Loose Gravel 50mm** |  | 2026-07-16 | 2026-07-30 |  |  |  |
| CP09-TR8-HD-4480 |  | Furnish & Install loose gravel w./earth colors. | 12d | 2026-07-16 | 2026-07-30 | CP09-TR8-HD-4810, CP09-TR8-IR-1470, CP09-TR8-EL-1180, CP09-EN-TR7-A-2690, CP09-PR-HD-DY-1050, CP09-EN-TR8-A-3060, CP09-TR8-HD-4400 |  | -214.94d |
|  | 7 | **Clean Sand Layer** |  | 2026-07-30 | 2026-08-24 |  |  |  |
|  | 1 | **Kids & Fitness Area** |  | 2026-07-30 | 2026-08-24 |  |  |  |
| CP09-TR8-HD-4490 |  | Geotextile Sheets | 6d | 2026-07-30 | 2026-08-06 | CP09-TR8-EW-1120, CP09-TR8-EW-1130, CP09-TR8-HD-4810, CP09-TR8-IR-1470, CP09-TR8-EL-1180, CP09-EN-TR7-A-2700, CP09-EN-TR8-A-3070, CP09-TR8-HD-4480 |  | -214.94d |
| CP09-TR8-HD-4500 |  | Install Clean sand layer | 15d | 2026-08-06 | 2026-08-24 | CP09-TR8-HD-4490, CP09-TR8-HD-4480, CP09-TR8-HD-4810, CP09-EN-TR7-A-2700, CP09-PR-HD-DY-1070 |  | -214.94d |
|  | 2 | **Site Improvments** |  | 2026-02-02 | 2026-09-20 |  |  |  |

| ID | WBS | Task | Duration | Start | Finish | Predecessors | Complete | Total float |
| --- | --- | --- | --- | --- | --- | --- | --- | --- |
|  | 6 | **Pools Shower -05** |  | 2026-07-19 | 2026-09-16 |  |  |  |
| CP09-TR8-HD-5060 |  | Plain Concrete Basin | 3d | 2026-07-19 | 2026-07-22 | CP09-EN-TR1-A-1640, CP09-TR8-EL-1180, CP09-TR8-HD-4810, CP09-TR8-HD-4790, CP09-EN-TR2-A-1910, CP09-EN-TR7-A-2750, CP09-EN-TR8-A-3120, CP09-TR8-HD-4560 FF |  | -221.12d |
| CP09-TR8-HD-5070 |  | R.Concrete Basin | 5d | 2026-07-22 | 2026-07-28 | CP09-TR8-HD-5060 |  | -221.12d |
| CP09-TR8-HD-5080 |  | Solid Block Work | 5d | 2026-07-28 | 2026-08-03 | CP09-TR8-HD-5070 |  | -221.12d |
| CP09-TR8-HD-5090 |  | Water Proofing | 2.81d | 2026-08-03 | 2026-08-06 | CP09-TR8-HD-5080 |  | -221.12d |
| CP09-TR8-HD-5100 |  | Backfilling | 5d | 2026-08-06 | 2026-08-12 | CP09-TR8-HD-5090 |  | -221.12d |
| CP09-TR8-HD-5110 |  | Mica Stone Cladding | 7d | 2026-08-12 | 2026-08-20 | CP09-TR8-HD-5100, CP09-PR-HD-DY-1120 |  | -221.12d |
| CP09-TR8-HD-5120 |  | Mica Stone Capping | 5d | 2026-08-20 | 2026-08-26 | CP09-TR8-HD-5110, CP09-PR-HD-DY-1120 |  | -221.12d |
| CP09-TR8-HD-5130 |  | Drainage Cover with Geotextile | 2.81d | 2026-08-26 | 2026-08-30 | CP09-TR8-HD-5120, CP09-PR-HD-DY-1060 |  | -221.12d |
| CP09-TR8-HD-5140 |  | Blast stone blocks for Flooring | 3d | 2026-08-30 | 2026-09-02 | CP09-TR8-HD-5130, CP09-PR-HD-DY-1130 |  | -221.12d |
| CP09-TR8-HD-5150 |  | Blast Stone Blocks Capping | 5d | 2026-09-02 | 2026-09-08 | CP09-TR8-HD-5140, CP09-PR-HD-DY-1130 |  | -221.12d |
| CP09-TR8-HD-5160 |  | Loose Rounded Pebbles | 5d | 2026-09-08 | 2026-09-14 | CP09-TR8-HD-5150, CP09-PR-HD-DY-1140 |  | -221.12d |
| CP09-TR8-HD-5170 |  | Shower Head Fixation | 2.81d | 2026-09-14 | 2026-09-16 | CP09-TR8-HD-5160, CP09-TR8-HD-5140, CP09-TR8-HD-5150, CP09-PR-HD-DY-1150 |  | -217.94d |
|  | 3 | **Pools Shower -06** |  | 2026-07-16 | 2026-09-20 |  |  |  |
| CP09-TR8-HD-2240 |  | Plain Concrete Basin | 3d | 2026-07-16 | 2026-07-20 | CP09-EN-TR1-A-1640, CP09-TR8-EL-1180, CP09-TR8-HD-4810, CP09-TR8-HD-4790, CP09-EN-TR2-A-1910, CP09-EN-TR7-A-2750, CP09-EN-TR8-A-3120 |  | -224.12d |
| CP09-TR8-HD-2250 |  | R.Concrete Basin | 5d | 2026-07-20 | 2026-07-26 | CP09-TR8-HD-2240 |  | -224.12d |
| CP09-TR8-HD-2260 |  | Solid Block Work | 5d | 2026-07-26 | 2026-08-01 | CP09-TR8-HD-2250 |  | -224.12d |
| CP09-TR8-HD-2270 |  | Water Proofing | 2.81d | 2026-08-01 | 2026-08-04 | CP09-TR8-HD-2260 |  | -224.12d |
| CP09-TR8-HD-2280 |  | Backfilling | 5d | 2026-08-04 | 2026-08-10 | CP09-TR8-HD-2270 |  | -224.12d |
| CP09-TR8-HD-2290 |  | Mica Stone Cladding | 7d | 2026-08-10 | 2026-08-18 | CP09-TR8-HD-2280, CP09-PR-HD-DY-1120 |  | -224.12d |
| CP09-TR8-HD-2300 |  | Mica Stone Capping | 5d | 2026-08-18 | 2026-08-24 | CP09-TR8-HD-2290, CP09-PR-HD-DY-1120 |  | -224.12d |
| CP09-TR8-HD-2310 |  | Drainage Cover with Geotextile | 5d | 2026-08-24 | 2026-08-30 | CP09-TR8-HD-2300, CP09-PR-HD-DY-1060 |  | -224.12d |
| CP09-TR8-HD-2320 |  | Blast stone blocks for Flooring | 7d | 2026-08-30 | 2026-09-07 | CP09-TR8-HD-2310, CP09-PR-HD-DY-1130 |  | -224.12d |
| CP09-TR8-HD-2330 |  | Blast Stone Blocks Capping | 5d | 2026-09-07 | 2026-09-13 | CP09-TR8-HD-2320, CP09-PR-HD-DY-1130 |  | -224.12d |
| CP09-TR8-HD-2340 |  | Loose Rounded Pebbles | 3.75d | 2026-09-13 | 2026-09-17 | CP09-TR8-HD-2330, CP09-PR-HD-DY-1140 |  | -224.12d |
| CP09-TR8-HD-2350 |  | Shower Head Fixation | 2.81d | 2026-09-17 | 2026-09-20 | CP09-TR8-HD-2340, CP09-TR8-HD-2320, CP09-TR8-HD-2330, CP09-PR-HD-DY-1150 |  | -220.94d |
|  | 1 | **Marble Steps** |  | 2026-07-14 | 2026-08-03 |  |  |  |
| CP09-TR8-HD-4570 |  | Reinforecd Concrete Step. | 10d | 2026-07-14 | 2026-07-26 | CP09-TR8-EW-1120, CP09-TR8-EW-1130, CP09-EN-TR7-A-2730, CP09-TR8-IR-1470, CP09-TR8-EL-1180, CP09-EN-TR8-A-3100, CP09-TR8-RW-2090, CP09-TR8-RW-2100 |  | -186.5d |
| CP09-TR8-HD-4580 |  | Install Marble Blocks | 6.56d | 2026-07-21 | 2026-07-28 | CP09-TR8-HD-4570 SS+2.81d, CP09-TR8-HD-4570 FF+2.81d, CP09-PR-HD-DY-1100 |  | -186.5d |
| CP09-TR8-HD-4590 |  | Finishing Marble Surface | 5d | 2026-07-28 | 2026-08-03 | CP09-TR8-HD-4580, CP09-TR8-RW-1980, CP09-TR8-RW-1990, CP09-TR8-RW-2090, CP09-TR8-RW-2100 |  | -185.88d |
|  | 4 | **Handrails** |  | 2026-07-28 | 2026-08-04 |  |  |  |
| CP09-TR8-HD-4820 |  | Install & Fix Stainless Handrail (500 mm height) | 5.62d | 2026-07-28 | 2026-08-04 | CP09-TR8-HD-4580, CP09-TR8-HD-4660, CP09-EN-TR7-A-2760, CP09-PR-HD-DY-1160, CP09-EN-TR8-A-3130, CP09-EN-TR8-A-3140 |  | -186.5d |
| CP09-TR8-HD-4830 |  | Install & Fix Glass Handrail (900mm height) | 5.62d | 2026-07-28 | 2026-08-04 | CP09-TR8-HD-4580, CP09-TR8-HD-4660, CP09-EN-TR7-A-2760, CP09-PR-HD-DY-1170, CP09-EN-TR8-A-3130, CP09-EN-TR8-A-3140 |  | -186.5d |
|  | 2 | **Curvelinear Block Seat** |  | 2026-02-02 | 2026-07-21 |  |  |  |
| CP09-TR8-HD-4600 |  | Excavation | 2.81d | 2026-02-02 A | 2026-05-26 | CP09-TR8-EW-1120, CP09-TR8-EW-1130, CP09-EN-TR7-A-2740, CP09-TR8-EL-1180, CP09-EN-TR8-A-3110, CP09-TR8-RW-2090, CP09-TR8-RW-2100 | 30% | -98.81d |
| CP09-TR8-HD-4610 |  | Plaing Concrete with HPDE | 3.75d | 2026-02-02 A | 2026-05-27 | CP09-TR8-HD-4600 | 30% | -99.75d |
| CP09-TR8-HD-4620 |  | Reinforced Concrete for Footing | 5.62d | 2026-02-02 A | 2026-05-30 | CP09-TR8-HD-4610 | 30% | -101.62d |
| CP09-TR8-HD-4630 |  | Reinforced Concrete for beam | 5d | 2026-02-02 A | 2026-05-28 | CP09-TR8-HD-4620 | 30% | -101d |
| CP09-TR8-HD-4640 |  | Waterproofing & Protection | 3.75d | 2026-02-02 A | 2026-05-27 | CP09-TR8-HD-4630 | 30% | -99.75d |
| CP09-TR8-HD-4650 |  | Backfilling | 2.81d | 2026-02-02 A | 2026-05-26 | CP09-TR8-HD-4640 | 30% | -163.81d |
| CP09-TR8-HD-4660 |  | Marble Capping | 5.62d | 2026-07-15 | 2026-07-21 | CP09-TR8-RW-2090, CP09-TR8-RW-2100, CP09-TR8-RW-1980, CP09-TR8-RW-1990, CP09-TR8-HD-4650, CP09-PR-HD-DY-1110 |  | -206d |
|  | 11 | **Sinage** |  | 2026-07-22 | 2026-09-03 |  |  |  |
| CP09-TR8-SN-4950 |  | Excavation | 6d | 2026-07-22 | 2026-07-29 | CP09-TR8-HD-4560, CP09-EN-TR7-A-2800, CP09-EN-TR8-A-3170, CP09-TR8-HD-4660 |  | -206.88d |
| CP09-TR8-SN-4960 |  | Plain Concrete with HDPE | 6d | 2026-07-25 | 2026-08-01 | CP09-TR8-SN-4950 SS+2d, CP09-TR8-SN-4950 FF+2d |  | -206.88d |
| CP09-TR8-SN-4970 |  | Reinforced Concrete | 6d | 2026-07-27 | 2026-08-03 | CP09-TR8-SN-4960 SS+2d, CP09-TR8-SN-4960 FF+2d |  | -206.88d |
| CP09-TR8-SN-4980 |  | Waterproofing | 6d | 2026-07-30 | 2026-08-06 | CP09-TR8-SN-4970 SS+3d, CP09-TR8-SN-4970 FF+3d |  | -206.88d |
| CP09-TR8-SN-4990 |  | Grouting | 6d | 2026-08-02 | 2026-08-09 | CP09-TR8-SN-4980 SS+2d, CP09-TR8-SN-4980 FF+2d |  | -206.88d |
| CP09-TR8-SN-5000 |  | STREET DIRECTIONAL SIGN | 6d | 2026-08-20 | 2026-08-27 | CP09-TR8-SN-4990 SS+5d, CP09-PR-SN-DY-1000, CP09-TR8-SN-4990 FF+5d, CP09-TR8-SF-1730 |  | -217.88d |
| CP09-TR8-SN-5010 |  | DIRECTIONAL SIGN FOR VEHICULAR | 6d | 2026-08-20 | 2026-08-27 | CP09-TR8-SN-4990 SS+5d, CP09-PR-SN-DY-1010, CP09-TR8-SN-4990 FF+5d, CP09-TR8-SF-1730 |  | -217.88d |
| CP09-TR8-SN-5040 |  | RULES SIGN | 6d | 2026-08-20 | 2026-08-27 | CP09-TR8-SN-4990 SS+5d, CP09-PR-SN-DY-1030, CP09-TR8-SN-4990 FF+5d, CP09-TR8-SF-1730 |  | -215.88d |
| CP09-TR8-SN-5020 |  | UNIT ID SIGN (FRONT YARD) | 6d | 2026-08-27 | 2026-09-03 | CP09-TR8-SN-4990, CP09-PR-SN-DY-1020, CP09-TR8-SN-5010, CP09-TR8-SN-5000, CP09-TR8-SN-5040 |  | -215.88d |
| CP09-TR8-SN-5030 |  | UNIT ID SIGN (BACK YARD) | 6d | 2026-08-27 | 2026-09-03 | CP09-TR8-SN-4990, CP09-PR-SN-DY-1020, CP09-TR8-SN-5010, CP09-TR8-SN-5000, CP09-TR8-SN-5040 |  | -215.88d |
| CP09-TR8-SN-5050 |  | IDENTIFICATION SIGN | 6d | 2026-08-27 | 2026-09-03 | CP09-TR8-SN-4990, CP09-PR-SN-DY-1040, CP09-TR8-SN-5010, CP09-TR8-SN-5000, CP09-TR8-SN-5040 |  | -215.88d |
|  | 12 | **Landscape Furntiure** |  | 2026-08-17 | 2026-09-03 |  |  |  |
| CP09-TR8-FN-4840 |  | Install & Fix Pitch Pine Picnic Table | 15d | 2026-08-17 | 2026-09-03 | CP09-TR8-HD-4560, CP09-TR8-HD-4480, CP09-TR8-HD-4470, CP09-TR8-HD-4430, CP09-TR8-HD-4290 FF, CP09-TR8-HD-4340 FF, CP09-EN-TR7-A-2770, CP09-PR-FN-DY-1000, CP09-EN-TR8-A-3140 |  | -215.94d |
| CP09-TR8-FN-4850 |  | Install & Fix Crcular Cast-iron tree grate | 15d | 2026-08-17 | 2026-09-03 | CP09-TR8-HD-4560, CP09-TR8-HD-4480, CP09-TR8-HD-4470, CP09-TR8-HD-4430, CP09-TR8-HD-4390 FF, CP09-TR8-HD-4290 FF, CP09-TR8-HD-4340 FF, CP09-EN-TR7-A-2770, CP09-PR-FN-DY-1010, CP09-EN-TR8-A-3140 |  | -215.94d |
| CP09-TR8-FN-4860 |  | Install & Fix Aluminium Cabana for Pool Shading | 7d | 2026-08-17 | 2026-08-25 | CP09-TR8-HD-4560, CP09-TR8-HD-4480, CP09-TR8-HD-4470, CP09-TR8-HD-4430, CP09-TR8-HD-4390 FF, CP09-TR8-HD-4290 FF, CP09-TR8-HD-4340 FF, CP09-EN-TR7-A-2770, CP09-PR-FN-DY-1020, CP09-EN-TR8-A-3140 |  | -207.94d |
| CP09-TR8-FN-4870 |  | Install & Fix Pitch Pine Benchs | 15d | 2026-08-17 | 2026-09-03 | CP09-TR8-HD-4560, CP09-TR8-HD-4480, CP09-TR8-HD-4470, CP09-TR8-HD-4430, CP09-TR8-HD-4390 FF, CP09-TR8-HD-4290 FF, CP09-TR8-HD-4340 FF, CP09-EN-TR7-A-2770, CP09-PR-FN-DY-1030, CP09-EN-TR8-A-3140 |  | -215.94d |
| CP09-TR8-FN-4880 |  | Install & Fix Polyester Hammocks | 15d | 2026-08-17 | 2026-09-03 | CP09-TR8-HD-4560, CP09-TR8-HD-4480, CP09-TR8-HD-4470, CP09-TR8-HD-4430, CP09-TR8-HD-4390 FF, CP09-TR8-HD-4290 FF, CP09-TR8-HD-4340 FF, CP09-PR-FN-DY-1040, CP09-EN-TR8-A-3140 |  | -215.94d |
| CP09-TR8-FN-4890 |  | Install & Fix Adult Play Swing | 15d | 2026-08-17 | 2026-09-03 | CP09-TR8-HD-4560, CP09-TR8-HD-4480, CP09-TR8-HD-4470, CP09-TR8-HD-4430, CP09-TR8-HD-4390 FF, CP09-TR8-HD-4290 FF, CP09-TR8-HD-4340 FF, CP09-EN-TR7-A-2770, CP09-PR-FN-DY-1050, CP09-EN-TR8-A-3140, CP09-TR8-SN-5000 FF |  | -215.94d |
| CP09-TR8-FN-4900 |  | Install & Fix Aluminum Trash Bin | 15d | 2026-08-17 | 2026-09-03 | CP09-TR8-HD-4560, CP09-TR8-HD-4480, CP09-TR8-HD-4470, CP09-TR8-HD-4430, CP09-TR8-HD-4390 FF, CP09-TR8-HD-4290 FF, CP09-TR8-HD-4340 FF, CP09-EN-TR7-A-2770, CP09-PR-FN-DY-1060, CP09-EN-TR8-A-3140, CP09-TR8-SN-5000 FF |  | -215.94d |
| CP09-TR8-FN-4910 |  | Install & Fix tensile Teflon Tent | 15d | 2026-08-17 | 2026-09-03 | CP09-TR8-HD-4560, CP09-TR8-HD-4480, CP09-TR8-HD-4470, CP09-TR8-HD-4430, CP09-TR8-HD-4390 FF, CP09-TR8-HD-4290 FF, CP09-TR8-HD-4340 FF, CP09-EN-TR7-A-2770, CP09-PR-FN-DY-1070, CP09-EN-TR8-A-3140, CP09-TR8-SN-5000 FF |  | -215.94d |
| CP09-TR8-FN-4920 |  | Lanscape Edging ( Rubber) | 15d | 2026-08-17 | 2026-09-03 | CP09-TR8-HD-4560, CP09-TR8-HD-4480, CP09-TR8-HD-4470, CP09-TR8-HD-4430 FF, CP09-TR8-HD-4390 FF, CP09-TR8-HD-4290 FF, CP09-TR8-HD-4340 FF, CP09-PR-FN-DY-1080, CP09-EN-TR8-A-3140, CP09-TR8-SN-5000 FF |  | -215.94d |
|  | 10 | **Play Field Equipment** |  | 2026-02-02 | 2026-09-06 |  |  |  |
| CP09-TR8-PE-4940 |  | Kids playground equipment | 8d | 2026-02-02 A | 2026-06-01 | CP09-TR8-HD-4500, CP09-PR-PE-DY-1040, CP09-PR-PE-DY-1050, CP09-PR-PE-DY-1060, CP09-PR-PE-DY-1070, CP09-PR-PE-DY-1080, CP09-PR-PE-DY-1090, CP09-PR-PE-DY-1100, CP09-EN-TR8-A-3180, CP09-TR8-SN-5000, CP09-TR8-SN-5010 | 15% | -135.38d |
| CP09-TR8-PE-4930 |  | Fitness areas equipment | 8d | 2026-08-27 | 2026-09-06 | CP09-TR8-HD-4500, CP09-EN-TR7-A-2810, CP09-PR-PE-DY-1000, CP09-PR-PE-DY-1010, CP09-PR-PE-DY-1020, CP09-PR-PE-DY-1030, CP09-EN-TR8-A-3180, CP09-TR8-SN-5000, CP09-TR8-SN-5010 |  | -217.88d |
|  | 7 | **Lighting for Softscape** |  | 2026-06-28 | 2026-08-31 |  |  |  |
|  | 1 | **Exterior Lighting** |  | 2026-06-28 | 2026-08-31 |  |  |  |
| CP09-TR8-SF-1750 |  | Install Diffused Wall Recessed Step | 10d | 2026-06-28 | 2026-07-08 | CP09-EN-TR7-A-2840, CP09-PR-EL-DY-1110 |  | -167.38d |
| CP09-TR8-SF-1760 |  | Install Inground Uplight For Palms | 7d | 2026-07-13 | 2026-07-20 | CP09-TR8-SF-1770 FF, CP09-EN-TR7-A-2840, CP09-PR-EL-DY-1120 |  | -177.38d |

| ID | WBS | Task | Duration | Start | Finish | Predecessors | Complete | Total float |
| --- | --- | --- | --- | --- | --- | --- | --- | --- |
| CP09-TR8-SF-1770 |  | Install Projectors for Trees | 3d | 2026-07-18 | 2026-07-20 | CP09-TR8-SF-1660, CP09-TR8-SF-1670, CP09-TR8-SF-1680, CP09-TR8-SF-1690, CP09-TR8-SF-1700, CP09-TR8-SF-1710, CP09-TR8-SF-1720, CP09-EN-TR7-A-2840, CP09-PR-EL-DY-1130 |  | -177.38d |
| CP09-TR8-SF-1730 |  | Install Landscape Lighting Pole | 25d | 2026-07-22 | 2026-08-20 | CP09-TR8-EL-1170, CP09-EN-TR7-A-2840, CP09-PR-EL-DY-1080, CP09-TR8-HD-4560 |  | -217.88d |
| CP09-TR8-SF-1780 |  | Install Surface Mountaed Down Light for Pool Cabans | 7d | 2026-08-17 | 2026-08-25 | CP09-TR8-FN-4860 FF, CP09-EN-TR7-A-2840, CP09-PR-EL-DY-1100 |  | -207.94d |
| CP09-TR8-SF-1740 |  | Install Bollard for Walkways | 6d | 2026-08-24 | 2026-08-31 | CP09-TR8-EL-1170, CP09-TR8-HD-4560, CP09-TR8-HD-4340, CP09-TR8-HD-4290 FF, CP09-TR8-HD-4390 FF, CP09-TR8-HD-4430, CP09-TR8-HD-4470, CP09-TR8-HD-4480, CP09-TR8-HD-4500, CP09-EN-TR7-A-2840, CP09-PR-EL-DY-1090, CP09-TR8-SF-1730 |  | -212.94d |
|  | 2 | **Outlet Lighting Fixtures** |  | 2026-08-25 | 2026-08-31 |  |  |  |
| CP09-TR8-SF-1790 |  | Install outlet lighting fixtures | 5d | 2026-08-25 | 2026-08-31 | CP09-TR8-SF-1740 FF, CP09-EN-TR7-A-2840, CP09-PR-EL-DY-1150, CP09-EN-TR8-A-3210 |  | -212.94d |
|  | 2 | **Softscape** |  | 2026-04-13 | 2026-07-16 |  |  |  |
|  | 1 | **Planting** |  | 2026-04-13 | 2026-07-16 |  |  |  |
| CP09-TR8-SF-1640 |  | Sweet sand for all plants | 20d | 2026-04-13 A | 2026-06-15 | CP09-TR8-EW-1140, CP09-TR8-HD-4810, CP09-TR8-HD-4560, CP09-EN-TR7-A-2830, CP09-PR-PN-DY-1000, CP09-TR4-SF-1160, CP09-TR4-SF-1170, CP09-EN-TR8-A-3200 | 10% | -177.38d |
| CP09-TR8-SF-1650 |  | Organic Manure | 20d | 2026-04-13 A | 2026-06-15 | CP09-TR8-SF-1640 SS+5d, CP09-EN-TR7-A-2830, CP09-PR-PN-DY-1010, CP09-EN-TR8-A-3200 | 10% | -163.38d |
| CP09-TR8-SF-1660 |  | Large Trees | 10d | 2026-07-02 | 2026-07-13 | CP09-TR8-SF-1650, CP09-TR8-SF-1640, CP09-PR-PN-DY-1020, CP09-TR8-IR-1480, CP09-TR8-IR-1490, CP09-TR8-IR-1500, CP09-TR8-IR-1510, CP09-TR8-IR-1520, CP09-TR8-IR-1530, CP09-TR8-IR-1540 |  | -177.38d |
| CP09-TR8-SF-1670 |  | Shrubs | 10d | 2026-07-06 | 2026-07-16 | CP09-TR8-SF-1650, CP09-TR8-SF-1640, CP09-TR8-SF-1660 SS+3d, CP09-TR8-SF-1660 FF+3d, CP09-PR-PN-DY-1060 |  | -177.38d |
| CP09-TR8-SF-1680 |  | Ground Covers | 10d | 2026-07-06 | 2026-07-16 | CP09-TR8-SF-1650, CP09-TR8-SF-1640, CP09-TR8-SF-1660 SS+3d, CP09-TR8-SF-1660 FF+3d, CP09-PR-PN-DY-1070 |  | -177.38d |
| CP09-TR8-SF-1690 |  | Succulents | 10d | 2026-07-06 | 2026-07-16 | CP09-TR8-SF-1650, CP09-TR8-SF-1640, CP09-TR8-SF-1660 SS+3d, CP09-TR8-SF-1660 FF+3d, CP09-PR-PN-DY-1080 |  | -177.38d |
| CP09-TR8-SF-1700 |  | Vines & Climbers | 10d | 2026-07-06 | 2026-07-16 | CP09-TR8-SF-1650, CP09-TR8-SF-1640, CP09-TR8-SF-1660 SS+3d, CP09-TR8-SF-1660 FF+3d, CP09-PR-PN-DY-1030 |  | -177.38d |
| CP09-TR8-SF-1710 |  | Ornamental grass | 10d | 2026-07-06 | 2026-07-16 | CP09-TR8-SF-1650, CP09-TR8-SF-1640, CP09-TR8-SF-1660 SS+3d, CP09-TR8-SF-1660 FF+3d, CP09-PR-PN-DY-1050 |  | -177.38d |
| CP09-TR8-SF-1720 |  | Lawn | 10d | 2026-07-06 | 2026-07-16 | CP09-TR8-SF-1650, CP09-TR8-SF-1640, CP09-TR8-SF-1660 SS+3d, CP09-TR8-SF-1660 FF+3d, CP09-PR-PN-DY-1040 |  | -177.38d |
|  | 5 | **Testing & Commissioning** |  | 2026-07-01 | 2026-10-22 |  |  |  |
|  | 4 | **Milestone # 01** |  | 2026-07-01 | 2026-07-14 |  |  |  |
|  | 2 | **Hardscape** |  | 2026-07-01 | 2026-07-14 |  |  |  |
| CP09-TC-MS1-HD-1040 |  | Pre-Commissioning of Hardscape Works | 5d | 2026-07-01 | 2026-07-06 | CP09-TR2-RW-1540, CP09-TR2-RW-1550, CP09-TR2-RW-1650, CP09-TR2-RW-1660, CP09-TR2-EL-1110, CP09-TR2-HD-3040, CP09-TR2-HD-2920, CP09-TR2-HD-2720, CP09-TR2-HD-2670, CP09-TR2-HD-2800, CP09-TR2-HD-2830, CP09-TR2-HD-2840, CP09-TR2-HD-2860, CP09-TR2-HD-2950, CP09-TR2-HD-3020, CP09-TR2-HD-3050, CP09-TR2-HD-3060, CP09-PR-HD-DY-1020, CP09-PR-HD-A-1020 FS+7d, CP09-TR1-EW-1030 FS+3d, CP09-TR1-EW-1040 FS+3d, CP09-TR1-IR-1140 FS+3d, CP09-TR1-EL-1060 FS+3d, CP09-TR2-EW-1060 FS+3d, CP09-TR2-EW-1070 FS+3d, CP09-TR2-IR-1250 FS+3d, CP09-TR2-EL-1100 FS+3d, CP09-TR1-RW-1320, CP09-TR1-RW-1330, CP09-TR1-RW-1430, CP09-TR1-RW-1440, CP09-TR1-EL-1070, CP09-TR1-HD-2380, CP09-TR1-HD-2130, CP09-TR1-HD-1910, CP09-TR1-HD-1860, CP09-TR1-HD-2000, CP09-TR1-HD-2040, CP09-TR1-HD-2050, CP09-TR1-HD-2070, CP09-TR1-HD-2160, CP09-TR1-HD-2230, CP09-TR1-HD-2390, CP09-TR1-HD-2400 |  | -147d |
| CP09-TC-MS1-HD-1050 |  | Final Testing & Commissioning of Hardscape Works | 7d | 2026-07-07 | 2026-07-14 | CP09-TC-MS1-HD-1040 |  | -146d |
|  | 5 | **Section # 01** |  | 2026-07-05 | 2026-07-20 |  |  |  |
|  | 3 | **Softscape** |  | 2026-07-05 | 2026-07-20 |  |  |  |
| CP09-TC-SE1-SF-1060 |  | Pre-Commissioning of Softscape Works | 7d | 2026-07-05 | 2026-07-12 | CP09-TR2-IR-1290, CP09-TR2-IR-1300, CP09-TR2-IR-1310, CP09-TR2-SF-1340, CP09-TR2-SF-1350, CP09-TR2-SF-1360, CP09-TR2-SF-1370, CP09-TR2-SF-1380, CP09-TR2-SF-1390, CP09-TR2-SF-1400, CP09-TR2-SF-1430, CP09-TR2-SF-1440, CP09-TR2-SF-1450, CP09-TR2-SF-1470, CP09-TR2-PE-3160, CP09-TR2-PE-3170, CP09-TR2-FN-3110, CP09-TR2-FN-3120, CP09-TR2-FN-3080, CP09-TR2-FN-3130, CP09-TR2-FN-3140, CP09-TR2-FN-3150, CP09-TR2-FN-3100, CP09-TR2-FN-3070, CP09-TR2-SN-3260, CP09-TR2-SN-3270, CP09-TR2-SN-3280, CP09-TR2-SN-3230, CP09-TR2-SN-3240, CP09-TR2-SN-3250, CP09-TR1-HD-2130, CP09-TR1-HD-2050, CP09-TR1-HD-2040, CP09-TR1-HD-2000, CP09-TR1-HD-1860, CP09-TR1-HD-1910, CP09-EN-TR1-A-1660, CP09-PR-FN-DY-1020, CP09-TR1-HD-2390, CP09-TR1-HD-2400, CP09-TR2-HD-2920, CP09-TR2-HD-2840, CP09-TR2-HD-2830, CP09-TR2-HD-2800, CP09-TR2-HD-2670, CP09-TR2-HD-2720, CP09-EN-TR2-A-1930, CP09-EN-TR1-A-1730, CP09-PR-EL-DY-1100, CP09-EN-TR2-A-2000, CP09-TR1-HD-2380, CP09-PR-HD-DY-1020, CP09-TR2-HD-3040, CP09-PR-HD-A-1020 FS+7d, CP09-TR1-EW-1030 FS+3d, CP09-TR1-EW-1040 FS+3d, CP09-TR1-IR-1140 FS+3d, CP09-TR1-EL-1060 FS+3d, CP09-TR2-EW-1060 FS+3d, CP09-TR2-EW-1070 FS+3d, CP09-TR2-IR-1250 FS+3d, CP09-TR2-EL-1100 FS+3d, CP09-TR1-IR-1180, CP09-TR1-IR-1190, CP09-TR1-IR-1200, CP09-TR1-SF-1180, CP09-TR1-SF-1190, CP09-TR1-SF-1200, CP09-TR1-SF-1210, CP09-TR1-SF-1220, CP09-TR1-SF-1230, CP09-TR1-SF-1240, CP09-TR1-SF-1270, CP09-TR1-SF-1280, CP09-TR1-SF-1290, CP09-TR1-SF-1310, CP09-TR1-PE-2500, CP09-TR1-PE-2510, CP09-TR1-FN-2450, CP09-TR1-FN-2460, CP09-TR1-FN-2420, CP09-TR1-FN-2470, CP09-TR1-FN-2480, CP09-TR1-FN-2490, CP09-TR1-FN-2440, CP09-TR1-FN-2410, CP09-TR1-SN-2600, CP09-TR1-SN-2610, CP09-TR1-SN-2620, CP09-TR1-SN-2570, CP09-TR1-SN-2580, CP09-TR1-SN-2590 |  | -156d |
| CP09-TC-SE1-SF-1070 |  | Final Testing & Commissioning of Softscape Works | 7d | 2026-07-13 | 2026-07-20 | CP09-TC-SE1-SF-1060 |  | -154d |
|  | 1 | **Milestone # 02** |  | 2026-07-06 | 2026-07-23 |  |  |  |
|  | 1 | **Swimmimg Pool** |  | 2026-07-06 | 2026-07-22 |  |  |  |
| CP09-TC-MS2-SW-1000 |  | Pre-Commissioning of Swimmimg Pool & MR | 7d | 2026-07-06 | 2026-07-14 | CP09-TR3-SW-1320, CP09-TR3-SW-1360, CP09-TR3-SW-1140, CP09-TR3-SW-1270, CP09-TR4-SW-1630, CP09-TR4-SW-1670, CP09-TR4-SW-1510, CP09-TR4-SW-1710 |  | -156.06d |
| CP09-TC-MS2-SW-1010 |  | Final Testing & Commissioning of Swimmimg Pool & MR | 7d | 2026-07-14 | 2026-07-22 | CP09-TC-MS2-SW-1000 |  | -154.06d |
|  | 2 | **Hardscape** |  | 2026-07-07 | 2026-07-23 |  |  |  |
| CP09-TC-MS2-HD-1020 |  | Pre-Commissioning of Hardscape Works | 7d | 2026-07-07 | 2026-07-15 | CP09-TR3-RW-1200, CP09-TR3-RW-1220, CP09-TR3-RW-1190, CP09-TR3-RW-1210, CP09-TR3-HD-1050, CP09-TR3-HD-1260, CP09-TR3-HD-1520, CP09-TR3-HD-1530, CP09-TR3-HD-1600, CP09-TR3-HD-1360, CP09-TR3-HD-1450, CP09-TR3-HD-1460, CP09-TR3-HD-1540, CP09-TR3-HD-1340, CP09-TR3-HD-1550, CP09-TR3-HD-1570, CP09-TR3-HD-1590, CP09-TR3-HD-1690, CP09-TR3-HD-1810, CP09-TR3-HD-1610, CP09-TR3-HD-1620, CP09-TR3-EL-1030, CP09-TR4-RW-1320, CP09-TR4-RW-1330, CP09-TR4-RW-1430, CP09-TR4-RW-1440, CP09-TR4-HD-2380, CP09-TR4-HD-2130, CP09-TR4-HD-1910, CP09-TR4-HD-1860, CP09-TR4-HD-1960, CP09-TR4-HD-2000, CP09-TR4-HD-2040, CP09-TR4-HD-2050, CP09-TR4-HD-2070, CP09-TR4-HD-2160, CP09-TR4-HD-2230, CP09-TR4-HD-2320, CP09-TR4-HD-2330, CP09-TR4-HD-2340, CP09-TR4-HD-2350, CP09-TR4-HD-2390, CP09-TR4-HD-2400, CP09-TR4-EL-1070 |  | -157.44d |
| CP09-TC-MS2-HD-1030 |  | Final Testing & Commissioning of Hardscape Works | 7d | 2026-07-15 | 2026-07-23 | CP09-TC-MS2-HD-1020 |  | -155.44d |
|  | 6 | **Section # 02** |  | 2026-08-17 | 2026-09-02 |  |  |  |
|  | 3 | **Softscape** |  | 2026-08-17 | 2026-09-02 |  |  |  |
| CP09-TC-SE2-SF-1040 |  | Pre-Commissioning of Softscape Works | 7d | 2026-08-17 | 2026-08-25 | CP09-TR3-FN-1700, CP09-TR3-FN-1710, CP09-TR3-FN-1720, CP09-TR3-FN-1730, CP09-TR3-FN-1740, CP09-TR3-FN-1750, CP09-TR3-FN-1760, CP09-TR3-FN-1770, CP09-TR3-FN-1780, CP09-TR3-SN-1630, CP09-TR3-SN-1640, CP09-TR3-SN-1650, CP09-TR3-SN-1660, CP09-TR3-SN-1670, CP09-TR3-SN-1680, CP09-TR3-PE-1790, CP09-TR3-PE-1800, CP09-TR4-SN-2570, CP09-TR4-SN-2580, CP09-TR4-SN-2590, CP09-TR4-SN-2600, CP09-TR4-SN-2610, CP09-TR4-SN-2620, CP09-TR4-FN-2410, CP09-TR4-FN-2420, CP09-TR4-FN-2430, CP09-TR4-FN-2440, CP09-TR4-FN-2450, CP09-TR4-FN-2460, CP09-TR4-FN-2470, CP09-TR4-FN-2480, CP09-TR4-FN-2490, CP09-TR4-PE-2500, CP09-TR4-PE-2510, CP09-TR3-SF-1010, CP09-TR3-IR-1040, CP09-TR3-IR-1050, CP09-TR3-IR-1060, CP09-TR3-IR-1070, CP09-TR3-IR-1080, CP09-TR3-IR-1090, CP09-TR3-IR-1100, CP09-TR3-SF-1030, CP09-TR3-SF-1040, CP09-TR3-SF-1050, CP09-TR3-SF-1070, CP09-TR3-SF-1080, CP09-TR3-SF-1090, CP09-TR3-SF-1100, CP09-TR3-SF-1060, CP09-TR3-SF-1110, CP09-TR3-SF-1130, CP09-TR3-SF-1140, CP09-TR3-SF-1150, CP09-TR3-SF-1120, CP09-TR4-SF-1160, CP09-TR4-IR-1150, CP09-TR4-IR-1160, CP09-TR4-IR-1170, CP09-TR4-IR-1180, CP09-TR4-IR-1190, CP09-TR4-IR-1200, CP09-TR4-IR-1210, CP09-TR4-SF-1180, CP09-TR4-SF-1220, CP09-TR4-SF-1240, CP09-TR4-SF-1230, CP09-TR4-SF-1190, CP09-TR4-SF-1200, CP09-TR4-SF-1210, CP09-TR4-SF-1260, CP09-TR4-SF-1270, CP09-TR4-SF-1280, CP09-TR4-SF-1290, CP09-TR4-SF-1300, CP09-TR4-SF-1310 |  | -192.94d |
| CP09-TC-SE2-SF-1050 |  | Final Testing & Commissioning of Softscape Works | 7d | 2026-08-25 | 2026-09-02 | CP09-TC-SE2-SF-1040 |  | -190.94d |
|  | 2 | **Milestone # 03** |  | 2026-07-27 | 2026-09-02 |  |  |  |
|  | 1 | **Swimmimg Pool** |  | 2026-07-27 | 2026-08-12 |  |  |  |
| CP09-TC-MS3-SW-1020 |  | Pre-Commissioning of Swimmimg Pool & MR | 7d | 2026-07-27 | 2026-08-04 | CP09-TR5-SW-1990, CP09-TR5-SW-2030, CP09-TR5-SW-2040, CP09-TR5-SW-1870, CP09-TR5-SW-2070, CP09-TR6-SW-2350, CP09-TR6-SW-2390, CP09-TR6-SW-2400, CP09-TR6-SW-2230, CP09-TR6-SW-2430 |  | -189.06d |
| CP09-TC-MS3-SW-1030 |  | Final Testing & Commissioning of Swimmimg Pool & MR | 7d | 2026-08-04 | 2026-08-12 | CP09-TC-MS3-SW-1020 |  | -173.06d |
|  | 2 | **Hardscape** |  | 2026-08-17 | 2026-09-02 |  |  |  |
| CP09-TC-MS3-HD-1040 |  | Pre-Commissioning of Hardscape Works | 7d | 2026-08-17 | 2026-08-25 | CP09-TR5-RW-1540, CP09-TR5-RW-1550, CP09-TR5-RW-1650, CP09-TR5-RW-1660, CP09-TR5-HD-2940, CP09-TR5-HD-2720, CP09-TR5-HD-2670, CP09-TR5-HD-2770, CP09-TR5-HD-2810, CP09-TR5-HD-2850, CP09-TR5-HD-2880, CP09-TR5-HD-2970, CP09-TR5-HD-3040, CP09-TR5-HD-3130, CP09-TR5-HD-3140, CP09-TR5-HD-3150, CP09-TR5-HD-3160, CP09-TR5-HD-3200, CP09-TR5-HD-3210, CP09-TR6-RW-1760, CP09-TR6-RW-1770, CP09-TR6-RW-1870, CP09-TR6-RW-1880, CP09-TR6-HD-3750, CP09-TR6-HD-3530, CP09-TR6-HD-3480, CP09-TR6-HD-3580, CP09-TR6-HD-3620, CP09-TR6-HD-3660, CP09-TR6-HD-3690, CP09-TR6-HD-3780, CP09-TR6-HD-3850, CP09-TR6-HD-3940, CP09-TR6-HD-3950, CP09-TR6-HD-3960, CP09-TR6-HD-3970, CP09-TR6-HD-4010, CP09-TR6-HD-4020 |  | -193.81d |
| CP09-TC-MS3-HD-1050 |  | Final Testing & Commissioning of Hardscape Works | 7d | 2026-08-25 | 2026-09-02 | CP09-TC-MS3-HD-1040 |  | -191.81d |
|  | 7 | **Section # 03** |  | 2026-08-23 | 2026-09-15 |  |  |  |
|  | 3 | **Softscape** |  | 2026-08-23 | 2026-09-15 |  |  |  |
| CP09-TC-SE3-SF-1060 |  | Pre-Commissioning of Softscape Works | 10d | 2026-08-23 | 2026-09-03 | CP09-TR5-SN-3380, CP09-TR5-SN-3390, CP09-TR5-SN-3400, CP09-TR5-SN-3410, CP09-TR5-SN-3420, CP09-TR5-SN-3430, CP09-TR5-FN-3220, CP09-TR5-FN-3230, CP09-TR5-FN-3240, CP09-TR5-FN-3250, CP09-TR5-FN-3260, CP09-TR5-FN-3270, CP09-TR5-FN-3280, CP09-TR5-FN-3290, CP09-TR5-FN-3300, CP09-TR5-PE-3310, CP09-TR5-PE-3320, CP09-TR6-SN-4190, CP09-TR6-SN-4200, CP09-TR6-SN-4210, CP09-TR6-SN-4220, CP09-TR6-SN-4230, CP09-TR6-SN-4240, CP09-TR6-FN-4030, CP09-TR6-FN-4040, CP09-TR6-FN-4050, CP09-TR6-FN-4060, CP09-TR6-FN-4070, CP09-TR6-FN-4080, CP09-TR6-FN-4090, CP09-TR6-FN-4100, CP09-TR6-FN-4110, CP09-TR6-PE-4120, CP09-TR6-PE-4130, CP09-TR5-IR-1290, CP09-TR5-IR-1300, CP09-TR5-IR-1310, CP09-TR5-IR-1320, CP09-TR5-EL-1110, CP09-TR5-SF-1340, CP09-TR5-SF-1350, CP09-TR5-SF-1360, CP09-TR5-SF-1370, CP09-TR5-SF-1380, CP09-TR5-SF-1390, CP09-TR5-SF-1400, CP09-TR5-SF-1420, CP09-TR5-SF-1430, CP09-TR5-SF-1440, CP09-TR5-SF-1450, CP09-TR5-SF-1460, CP09-TR5-SF-1470, CP09-TR6-IR-1400, CP09-TR6-IR-1410, CP09-TR6-IR-1420, CP09-TR6-IR-1430, CP09-TR6-EL-1150, CP09-TR6-SF-1500, CP09-TR6-SF-1510, CP09-TR6-SF-1520, CP09-TR6-SF-1530, CP09-TR6-SF-1540, CP09-TR6-SF-1550, CP09-TR6-SF-1560, CP09-TR6-SF-1580, CP09-TR6-SF-1590, CP09-TR6-SF-1600, CP09-TR6-SF-1610, CP09-TR6-SF-1620, CP09-TR6-SF-1630 |  | -202.69d |
| CP09-TC-SE3-SF-1070 |  | Final Testing & Commissioning of Softscape Works | 10d | 2026-09-03 | 2026-09-15 | CP09-TC-SE3-SF-1060 |  | -202.69d |
|  | 3 | **Milestone # 04** |  | 2026-09-17 | 2026-10-06 |  |  |  |
|  | 1 | **Swimmimg Pool** |  | 2026-09-20 | 2026-10-06 |  |  |  |
| CP09-TC-MS4-SW-1040 |  | Pre-Commissioning of Swimmimg Pool & MR | 7d | 2026-09-20 | 2026-09-28 | CP09-TR8-SW-2580, CP09-TR8-SW-2590, CP09-TR8-SW-2790, CP09-TR8-SW-2800, CP09-TR8-SW-2710, CP09-TR8-SW-2750, CP09-TR8-SW-2760, CP09-TR8-SW-2940, CP09-TR8-SW-2950, CP09-TR8-SW-3150, CP09-TR8-SW-3160, CP09-TR8-SW-3070, CP09-TR8-SW-3110, CP09-TR8-SW-3120, CP09-TR8-HD-2350, CP09-TR8-HD-5170, CP09-TR7-SW-2580, CP09-TR7-SW-2590, CP09-TR7-SW-2790, CP09-TR7-SW-2800, CP09-TR7-SW-2710, CP09-TR7-SW-2750, CP09-TR7-SW-2760, CP09-TR7-SW-2940, CP09-TR7-SW-2950, CP09-TR7-SW-3150, CP09-TR7-SW-3160, CP09-TR7-SW-3070, CP09-TR7-SW-3110, CP09-TR7-SW-3120, CP09-TR7-HD-2350, CP09-TR7-HD-5170 |  | -220.94d |
| CP09-TC-MS4-SW-1050 |  | Final Testing & Commissioning of Swimmimg Pool & MR | 7d | 2026-09-28 | 2026-10-06 | CP09-TC-MS4-SW-1040 |  | -220.94d |
|  | 2 | **Hardscape** |  | 2026-09-17 | 2026-10-04 |  |  |  |
| CP09-TC-MS4-HD-1060 |  | Pre-Commissioning of Hardscape Works | 7d | 2026-09-17 | 2026-09-26 | CP09-TR8-RW-1980, CP09-TR8-RW-1990, CP09-TR8-RW-2090, CP09-TR8-RW-2100, CP09-TR8-EL-1190, CP09-TR8-HD-4560, CP09-TR8-HD-4340, CP09-TR8-HD-4290, CP09-TR8-HD-4390, CP09-TR8-HD-4430, CP09-TR8-HD-4470, CP09-TR8-HD-4480, CP09-TR8-HD-4500, CP09-TR8-HD-4590, CP09-TR8-HD-4660, CP09-TR8-HD-4820, CP09-TR8-HD-4830, CP09-TR8-HD-2320, CP09-TR8-HD-2330, CP09-TR8-HD-2340, CP09-TR8-HD-5140, CP09-TR8-HD-5150, CP09-TR8-HD-5160, CP09-TR7-RW-1980, CP09-TR7-RW-1990, CP09-TR7-RW-2090, CP09-TR7-RW-2100, CP09-TR7-EL-1190, CP09-TR7-HD-4560, CP09-TR7-HD-4340, CP09-TR7-HD-4290, CP09-TR7-HD-4390, CP09-TR7-HD-4430, CP09-TR7-HD-4470, CP09-TR7-HD-4480, CP09-TR7-HD-4500, CP09-TR7-HD-4590, CP09-TR7-HD-4660, CP09-TR7-HD-4820, CP09-TR7-HD-4830, CP09-TR7-HD-2320, CP09-TR7-HD-2330, CP09-TR7-HD-2340, CP09-TR7-HD-5140, CP09-TR7-HD-5150, CP09-TR7-HD-5160 |  | -224.12d |
| CP09-TC-MS4-HD-1070 |  | Final Testing & Commissioning of Hardscape Works | 7d | 2026-09-26 | 2026-10-04 | CP09-TC-MS4-HD-1060 |  | -218.12d |
|  | 8 | **Section # 04** |  | 2026-09-29 | 2026-10-22 |  |  |  |
|  | 3 | **Softscape** |  | 2026-09-29 | 2026-10-22 |  |  |  |
| CP09-TC-SE4-SF-1080 |  | Pre-Commissioning of Softscape Works | 10d | 2026-09-29 | 2026-10-11 | CP09-TR7-PE-4940, CP09-TR7-PE-4930, CP09-TR7-FN-4920, CP09-TR7-FN-4910, CP09-TR7-FN-4900, CP09-TR7-FN-4890, CP09-TR7-FN-4880, CP09-TR7-FN-4870, CP09-TR7-FN-4860, CP09-TR7-FN-4850, CP09-TR7-FN-4840, CP09-TR7-SN-5000, CP09-TR7-SN-5010, CP09-TR7-SN-5020, CP09-TR7-SN-5030, CP09-TR7-SN-5040, CP09-TR7-SN-5050, CP09-TR8-IR-1510, CP09-TR8-IR-1520, CP09-TR8-IR-1530, CP09-TR8-IR-1540, CP09-TR8-SF-1660, CP09-TR8-SF-1670, CP09-TR8-SF-1680, CP09-TR8-SF-1690, CP09-TR8-SF-1700, CP09-TR8-SF-1710, CP09-TR8-SF-1720, CP09-TR8-SF-1740, CP09-TR8-SF-1750, CP09-TR8-SF-1760, CP09-TR8-SF-1770, CP09-TR8-SF-1780, CP09-TR8-SF-1790, CP09-TR8-PE-4940, CP09-TR8-PE-4930, CP09-TR8-FN-4920, CP09-TR8-FN-4910, CP09-TR8-FN-4900, CP09-TR8-FN-4890, CP09-TR8-FN-4880, CP09-TR8-FN-4870, CP09-TR8-FN-4860, CP09-TR8-FN-4850, CP09-TR8-FN-4840, CP09-TR8-SN-5000, CP09-TR8-SN-5010, CP09-TR8-SN-5020, CP09-TR8-SN-5030, CP09-TR8-SN-5040, CP09-TR8-SN-5050, CP09-TR7-IR-1510, CP09-TR7-IR-1520, CP09-TR7-IR-1530, CP09-TR7-IR-1540, CP09-TR7-SF-1660, CP09-TR7-SF-1670, CP09-TR7-SF-1680, CP09-TR7-SF-1690, CP09-TR7-SF-1700, CP09-TR7-SF-1710, CP09-TR7-SF-1720, CP09-TR7-SF-1740, CP09-TR7-SF-1750, CP09-TR7-SF-1760, CP09-TR7-SF-1770, CP09-TR7-SF-1780, CP09-TR7-SF-1790 |  | -237.44d |
| CP09-TC-SE4-SF-1090 |  | Final Testing & Commissioning of Softscape Works | 10d | 2026-10-11 | 2026-10-22 | CP09-TC-SE4-SF-1080 |  | -233.44d |
|  | 6 | **Handing over & As Built Drwaings** |  | 2026-07-05 | 2026-11-04 |  |  |  |
|  | 4 | **Milestone # 01** |  | 2026-07-05 | 2026-07-21 |  |  |  |
|  | 2 | **Hardscape** |  | 2026-07-05 | 2026-07-21 |  |  |  |
| CP09-HO-MS1-HD-1080 |  | Close Snagging for Hardscape Works | 5d | 2026-07-05 | 2026-07-09 | CP09-TC-MS1-HD-1040 SS+3d, CP09-TC-MS1-HD-1040 FF+3d |  | -147d |
| CP09-HO-MS1-HD-1090 |  | Submit As-Built Drawings | 4d | 2026-07-09 | 2026-07-13 | CP09-HO-MS1-HD-1080 SS+3d, CP09-HO-MS1-HD-1080 FF+3d |  | -147d |
| CP09-HO-MS1-HD-1100 |  | Approve As-Built Drawings | 8d | 2026-07-13 | 2026-07-21 | CP09-HO-MS1-HD-1090 SS+3d, CP09-HO-MS1-HD-1090 FF+3d |  | -147d |
| CP09-HO-MS1-HD-1110 |  | Handingover | 5d | 2026-07-16 | 2026-07-21 | CP09-HO-MS1-HD-1100 FF, CP09-TC-MS1-HD-1050 |  | -147d |
|  | 5 | **Section # 01** |  | 2026-07-08 | 2026-07-30 |  |  |  |
|  | 3 | **Softscape** |  | 2026-07-08 | 2026-07-30 |  |  |  |
| CP09-HO-SE1-SF-1120 |  | Close Snagging for Softscape Works | 7d | 2026-07-08 | 2026-07-15 | CP09-TC-SE1-SF-1060 SS+3d, CP09-TC-SE1-SF-1060 FF+3d |  | -156d |
| CP09-HO-SE1-SF-1130 |  | Submit As-Built Drawings | 7d | 2026-07-12 | 2026-07-19 | CP09-HO-SE1-SF-1120 SS+3d, CP09-HO-SE1-SF-1120 FF+3d |  | -156d |

| ID | WBS | Task | Duration | Start | Finish | Predecessors | Total float |
| --- | --- | --- | --- | --- | --- | --- | --- |
| CP09-HO-SE1-SF-1140 |  | Approve As-Built Drawings | 14d | 2026-07-15 | 2026-07-30 | CP09-HO-SE1-SF-1130 SS+3d, CP09-HO-SE1-SF-1130 FF+3d | -156d |
| CP09-HO-SE1-SF-1150 |  | Handingover | 7d | 2026-07-23 | 2026-07-30 | CP09-HO-SE1-SF-1140 FF, CP09-TC-SE1-SF-1070 | -156d |
|  | 1 | **Milestone # 02** |  | 2026-07-09 | 2026-08-03 |  |  |
|  | 1 | **Swimmimg Pool** |  | 2026-07-09 | 2026-08-02 |  |  |
| CP09-HO-MS2-SW-1000 |  | Close Snagging for Swimming Pool & MR | 7d | 2026-07-09 | 2026-07-18 | CP09-TC-MS2-SW-1000 SS+3d, CP09-TC-MS2-SW-1000 FF+3d | -156.06d |
| CP09-HO-MS2-SW-1010 |  | Submit As-Built Drawings | 7d | 2026-07-13 | 2026-07-21 | CP09-HO-MS2-SW-1000 SS+3d, CP09-HO-MS2-SW-1000 FF+3d | -156.06d |
| CP09-HO-MS2-SW-1020 |  | Approve As-Built Drawings | 14d | 2026-07-16 | 2026-08-02 | CP09-HO-MS2-SW-1010 SS+3d, CP09-HO-MS2-SW-1010 FF+3d | -156.06d |
| CP09-HO-MS2-SW-1030 |  | Handingover | 7d | 2026-07-25 | 2026-08-02 | CP09-TC-MS2-SW-1010, CP09-HO-MS2-SW-1020 FF | -156.06d |
|  | 2 | **Hardscape** |  | 2026-07-11 | 2026-08-03 |  |  |
| CP09-HO-MS2-HD-1040 |  | Close Snagging for Hardscape Works | 7d | 2026-07-11 | 2026-07-19 | CP09-TC-MS2-HD-1020 SS+3d, CP09-TC-MS2-HD-1020 FF+3d | -157.44d |
| CP09-HO-MS2-HD-1050 |  | Submit As-Built Drawings | 7d | 2026-07-14 | 2026-07-22 | CP09-HO-MS2-HD-1040 SS+3d, CP09-HO-MS2-HD-1040 FF+3d | -157.44d |
| CP09-HO-MS2-HD-1060 |  | Approve As-Built Drawings | 14d | 2026-07-18 | 2026-08-03 | CP09-HO-MS2-HD-1050 SS+3d, CP09-HO-MS2-HD-1050 FF+3d | -157.44d |
| CP09-HO-MS2-HD-1070 |  | Handingover | 7d | 2026-07-26 | 2026-08-03 | CP09-HO-MS2-HD-1060 FF, CP09-TC-MS2-HD-1030 | -157.44d |
|  | 6 | **Section # 02** |  | 2026-08-20 | 2026-09-13 |  |  |
|  | 3 | **Softscape** |  | 2026-08-20 | 2026-09-13 |  |  |
| CP09-HO-SE2-SF-1080 |  | Close Snagging for Softscape Works | 7d | 2026-08-20 | 2026-08-29 | CP09-TC-SE2-SF-1040 SS+3d, CP09-TC-SE2-SF-1040 FF+3d | -192.94d |
| CP09-HO-SE2-SF-1090 |  | Submit As-Built Drawings | 7d | 2026-08-24 | 2026-09-01 | CP09-HO-SE2-SF-1080 SS+3d, CP09-HO-SE2-SF-1080 FF+3d | -192.94d |
| CP09-HO-SE2-SF-1100 |  | Approve As-Built Drawings | 14d | 2026-08-27 | 2026-09-13 | CP09-HO-SE2-SF-1090 SS+3d, CP09-HO-SE2-SF-1090 FF+3d | -192.94d |
| CP09-HO-SE2-SF-1110 |  | Handingover | 7d | 2026-09-05 | 2026-09-13 | CP09-HO-SE2-SF-1100 FF, CP09-TC-SE2-SF-1050 | -192.94d |
|  | 2 | **Milestone # 03** |  | 2026-07-30 | 2026-09-13 |  |  |
|  | 1 | **Swimmimg Pool** |  | 2026-07-30 | 2026-08-23 |  |  |
| CP09-HO-MS3-SW-1040 |  | Close Snagging for Swimming Pool & MR | 7d | 2026-07-30 | 2026-08-08 | CP09-TC-MS3-SW-1020 SS+3d, CP09-TC-MS3-SW-1020 FF+3d | -189.06d |
| CP09-HO-MS3-SW-1050 |  | Submit As-Built Drawings | 7d | 2026-08-03 | 2026-08-11 | CP09-HO-MS3-SW-1040 SS+3d, CP09-HO-MS3-SW-1040 FF+3d | -175.06d |
| CP09-HO-MS3-SW-1060 |  | Approve As-Built Drawings | 14d | 2026-08-06 | 2026-08-23 | CP09-HO-MS3-SW-1050 SS+3d, CP09-HO-MS3-SW-1050 FF+3d | -175.06d |
| CP09-HO-MS3-SW-1070 |  | Handingover | 7d | 2026-08-15 | 2026-08-23 | CP09-HO-MS3-SW-1060 FF, CP09-TC-MS3-SW-1030 | -175.06d |
|  | 2 | **Hardscape** |  | 2026-08-20 | 2026-09-13 |  |  |
| CP09-HO-MS3-HD-1080 |  | Close Snagging for Hardscape Works | 7d | 2026-08-20 | 2026-08-29 | CP09-TC-MS3-HD-1040 FF+3d, CP09-TC-MS3-HD-1040 SS+3d | -193.81d |
| CP09-HO-MS3-HD-1090 |  | Submit As-Built Drawings | 7d | 2026-08-24 | 2026-09-01 | CP09-HO-MS3-HD-1080 SS+3d, CP09-HO-MS3-HD-1080 FF+3d | -193.81d |
| CP09-HO-MS3-HD-1100 |  | Approve As-Built Drawings | 14d | 2026-08-27 | 2026-09-13 | CP09-HO-MS3-HD-1090 SS+3d, CP09-HO-MS3-HD-1090 FF+3d | -193.81d |
| CP09-HO-MS3-HD-1110 |  | Handingover | 7d | 2026-09-05 | 2026-09-13 | CP09-HO-MS3-HD-1100 FF, CP09-TC-MS3-HD-1050 | -193.81d |
|  | 7 | **Section # 03** |  | 2026-08-31 | 2026-09-23 |  |  |
|  | 3 | **Softscape** |  | 2026-08-31 | 2026-09-23 |  |  |
| CP09-HO-SE3-SF-1120 |  | Close Snagging for Softscape Works | 7d | 2026-08-31 | 2026-09-08 | CP09-TC-SE3-SF-1060 SS+4d, CP09-TC-SE3-SF-1060 FF+4d | -202.69d |
| CP09-HO-SE3-SF-1130 |  | Submit As-Built Drawings | 7d | 2026-09-03 | 2026-09-12 | CP09-HO-SE3-SF-1120 SS+3d, CP09-HO-SE3-SF-1120 FF+3d | -202.69d |
| CP09-HO-SE3-SF-1140 |  | Approve As-Built Drawings | 14d | 2026-09-07 | 2026-09-23 | CP09-HO-SE3-SF-1130 SS+3d, CP09-HO-SE3-SF-1130 FF+3d | -202.69d |
| CP09-HO-SE3-SF-1150 |  | Handingover | 7d | 2026-09-15 | 2026-09-23 | CP09-HO-SE3-SF-1140 FF, CP09-TC-SE3-SF-1070 | -202.69d |
|  | 3 | **Milestone # 04** |  | 2026-08-08 | 2026-10-19 |  |  |
|  | 1 | **Swimmimg Pool** |  | 2026-08-08 | 2026-10-14 |  |  |
| CP09-HO-MS4-SW-1080 |  | Close Snagging for Swimming Pool & MR | 7d | 2026-08-08 | 2026-08-16 | CP09-HO-MS3-SW-1040 | -189.06d |
| CP09-HO-MS4-SW-1090 |  | Submit As-Built Drawings | 7d | 2026-08-11 | 2026-08-19 | CP09-HO-MS4-SW-1080 SS+3d, CP09-HO-MS4-SW-1080 FF+3d | -189.06d |
| CP09-HO-MS4-SW-1100 |  | Approve As-Built Drawings | 14d | 2026-08-15 | 2026-08-31 | CP09-HO-MS4-SW-1090 SS+3d, CP09-HO-MS4-SW-1090 FF+3d | -189.06d |
| CP09-HO-MS4-SW-1110 |  | Handingover | 7d | 2026-10-06 | 2026-10-14 | CP09-HO-MS4-SW-1100, CP09-TC-MS4-SW-1050 | -220.94d |
|  | 2 | **Hardscape** |  | 2026-09-26 | 2026-10-19 |  |  |
| CP09-HO-MS4-HD-1120 |  | Close Snagging for Hardscape Works | 7d | 2026-09-26 | 2026-10-04 | CP09-TC-MS4-HD-1060 | -224.12d |
| CP09-HO-MS4-HD-1130 |  | Submit As-Built Drawings | 7d | 2026-09-29 | 2026-10-07 | CP09-HO-MS4-HD-1120 SS+3d, CP09-HO-MS4-HD-1120 FF+3d | -224.12d |
| CP09-HO-MS4-HD-1140 |  | Approve As-Built Drawings | 14d | 2026-10-03 | 2026-10-19 | CP09-HO-MS4-HD-1130 SS+3d, CP09-HO-MS4-HD-1130 FF+3d | -224.12d |
| CP09-HO-MS4-HD-1150 |  | Handingover | 7d | 2026-10-11 | 2026-10-19 | CP09-HO-MS4-HD-1140 FF, CP09-TC-MS4-HD-1070 | -224.12d |
|  | 8 | **Section # 04** |  | 2026-10-11 | 2026-11-04 |  |  |
|  | 3 | **Softscape** |  | 2026-10-11 | 2026-11-04 |  |  |
| CP09-HO-SE4-SF-1160 |  | Close Snagging for Softscape Works | 7d | 2026-10-11 | 2026-10-19 | CP09-TC-SE4-SF-1080 | -237.44d |
| CP09-HO-SE4-SF-1170 |  | Submit As-Built Drawings | 7d | 2026-10-14 | 2026-10-22 | CP09-HO-SE4-SF-1160 SS+3d, CP09-HO-SE4-SF-1160 FF+3d | -237.44d |
| CP09-HO-SE4-SF-1180 |  | Approve As-Built Drawings | 14d | 2026-10-19 | 2026-11-04 | CP09-HO-SE4-SF-1170 SS+4d, CP09-HO-SE4-SF-1170 FF+4d | -237.44d |
| CP09-HO-SE4-SF-1190 |  | Handingover | 7d | 2026-10-27 | 2026-11-04 | CP09-HO-SE4-SF-1180 FF, CP09-TC-SE4-SF-1090 | -237.44d |

## Version 2 (data date 2026-06-07, saved 2026-06-07, file Silver Sand  - Land Scape - Update 07- jun- 2026.xer)

Note of the change: feat: Primavera Studio - XER import/export, validation/repair, workspace browsing, full persistence layer + UI (Phase 9)

Last finish 2026-11-04 → 2026-11-18 (+14d).

Changed:

| ID | Task | Start | Finish | Total float |
| --- | --- | --- | --- | --- |
| 1 | **Contract Sections & Milestones** |  | 2026-11-04 → 2026-11-18 (+14d) |  |
| CP09-MS-1000 | Project Completion Date | 2026-11-04 → 2026-11-18 (+14d) | 2026-11-04 → 2026-11-18 (+14d) | -237.06d → -249.06d |
| ADM | **Adminstratlve &Pre- Construction** |  | 2026-06-16 → 2026-06-30 (+14d) |  |
| SUB | **Pre-Construction Submittals** |  | 2026-06-03 → 2026-06-17 (+14d) |  |
| SS.CSM.1060 | Risk Mangement Plan Submittal | 2026-05-24 → 2026-06-07 (+14d) | 2026-05-31 → 2026-06-14 (+14d) | -117d → -129d |
| SS.CSM.1070 | Logistic Plan Submittal | 2026-05-24 → 2026-06-07 (+14d) | 2026-05-31 → 2026-06-14 (+14d) | -117d → -129d |
| SS.CSM.1080 | Performance Bond Insurance | 2026-05-24 → 2026-06-07 (+14d) | 2026-06-03 → 2026-06-17 (+14d) | -106d → -118d |
| APP | **Pre-Construction Approvals** |  | 2026-06-16 → 2026-06-30 (+14d) |  |
| SS.CSM.1130 | Risk Mangement Plan Approval | 2026-06-01 → 2026-06-15 (+14d) | 2026-06-16 → 2026-06-30 (+14d) | -117d → -129d |
| SS.CSM.1140 | Logistic Plan Approval | 2026-06-01 → 2026-06-15 (+14d) | 2026-06-16 → 2026-06-30 (+14d) | -117d → -129d |
| 1 | **Key Dates & Milestones** | 2026-07-21 → 2026-08-04 (+14d) | 2026-11-04 → 2026-11-18 (+14d) |  |
| CP09-MS1-1000 | Completion of all Hardscape Works for Terraces 1,2 | 2026-07-21 → 2026-08-04 (+14d) | 2026-07-21 → 2026-08-04 (+14d) | -171d → -185d |
| CP09-SE1-1010 | Completion of all Softcape Works for Terraces 1,2 | 2026-07-30 → 2026-08-13 (+14d) | 2026-07-30 → 2026-08-13 (+14d) | -181d → -195d |
| CP09-MS2-1000 | Completion of all Hardscape Works for Terraces 3,4 | 2026-08-03 → 2026-08-17 (+14d) | 2026-08-03 → 2026-08-17 (+14d) | -183.44d → -197.44d |
| CP09-MS3-1000 | Completion of all Hardscape Works for Terraces 5,6 | 2026-09-13 → 2026-09-27 (+14d) | 2026-09-13 → 2026-09-27 (+14d) | -225.81d → -239.81d |
| CP09-SE2-1010 | Completion of all Softscape Works for Terraces 3,4 | 2026-09-13 → 2026-09-27 (+14d) | 2026-09-13 → 2026-09-27 (+14d) | -224.94d → -238.94d |
| CP09-SE3-1010 | Completion of all Softcape Works for Terraces 5.6 | 2026-09-23 → 2026-10-07 (+14d) | 2026-09-23 → 2026-10-07 (+14d) | -235.69d → -249.69d |
| CP09-MS4-1000 | Completion of all Hardscape Works for Terraces 7,8 | 2026-10-19 → 2026-11-02 (+14d) | 2026-10-19 → 2026-11-02 (+14d) | -261.12d → -275.12d |
| CP09-SE4-1010 | Completion of all Softcape Works for Terraces 7,8 | 2026-11-04 → 2026-11-18 (+14d) | 2026-11-04 → 2026-11-18 (+14d) | -276.44d → -290.44d |
| 3 | **Procurement** |  | 2026-07-05 → 2026-07-19 (+14d) |  |
| 3 | **Material PO Issued** |  | 2026-05-28 → 2026-06-11 (+14d) |  |
| 1 | **Civil Materials** |  | 2026-05-26 → 2026-06-09 (+14d) |  |
| CP09-PR-CV-PO-1030 | Mosaic - Material PO-Issued | 2026-05-24 → 2026-06-07 (+14d) | 2026-05-26 → 2026-06-09 (+14d) | -175.56d → -187.56d |
| CP09-PR-CV-PO-1040 | Granite for Swimming Pool - Material PO-Issued | 2026-05-24 → 2026-06-07 (+14d) | 2026-05-26 → 2026-06-09 (+14d) | -164.31d → -176.31d |
| CP09-PR-CV-PO-1050 | Stanless Steel Ladders for Swimming Pool - Material PO-Issued | 2026-05-24 → 2026-06-07 (+14d) | 2026-05-26 → 2026-06-09 (+14d) | -156.81d → -168.81d |
| CP09-PR-CV-PO-1060 | Stanless Steel Handrial for Swimming Pool - Material PO-Issued | 2026-05-24 → 2026-06-07 (+14d) | 2026-05-26 → 2026-06-09 (+14d) | -154d → -166d |
| CP09-PR-CV-PO-1090 | Geotextile & Geocomposit for Machine Room - Material PO-Issued | 2026-05-24 → 2026-06-07 (+14d) | 2026-05-26 → 2026-06-09 (+14d) | -152d → -164d |
| CP09-PR-CV-PO-1100 | Drainage Gravel for Machine Room - Material PO-Issued | 2026-05-24 → 2026-06-07 (+14d) | 2026-05-26 → 2026-06-09 (+14d) | -152d → -164d |
| 2 | **Hardscape Materials** |  | 2026-05-26 → 2026-06-09 (+14d) |  |
| CP09-PR-HD-PO-1030 | Gravel Layer - Material PO-Issued | 2026-05-24 → 2026-06-07 (+14d) | 2026-05-26 → 2026-06-09 (+14d) | -184.38d → -196.38d |
| CP09-PR-HD-PO-1040 | Crushed Dolomite stone - Material PO-Issued | 2026-05-24 → 2026-06-07 (+14d) | 2026-05-26 → 2026-06-09 (+14d) | -176.56d → -188.56d |
| CP09-PR-HD-PO-1050 | Loose gravel - Material PO-Issued | 2026-05-24 → 2026-06-07 (+14d) | 2026-05-26 → 2026-06-09 (+14d) | -183.38d → -195.38d |
| CP09-PR-HD-PO-1110 | Marble for Seat - Material PO-Issued | 2026-05-24 → 2026-06-07 (+14d) | 2026-05-26 → 2026-06-09 (+14d) | -194d → -206d |
| CP09-PR-HD-PO-1120 | Mica - Material PO-Issued | 2026-05-24 → 2026-06-07 (+14d) | 2026-05-26 → 2026-06-09 (+14d) | -171.75d → -183.75d |
| CP09-PR-HD-PO-1130 | Blast stone blocks - Material PO-Issued | 2026-05-24 → 2026-06-07 (+14d) | 2026-05-26 → 2026-06-09 (+14d) | -155.81d → -167.81d |
| CP09-PR-HD-PO-1140 | Loose Rounded Pebbles - Material PO-Issued | 2026-05-24 → 2026-06-07 (+14d) | 2026-05-26 → 2026-06-09 (+14d) | -144d → -156d |
| CP09-PR-HD-PO-1150 | Shower Head - Material PO-Issued | 2026-05-24 → 2026-06-07 (+14d) | 2026-05-26 → 2026-06-09 (+14d) | -138d → -150d |
| CP09-PR-HD-PO-1160 | Stainless Handrail - Material PO-Issued | 2026-05-24 → 2026-06-07 (+14d) | 2026-05-26 → 2026-06-09 (+14d) | -175.62d → -187.62d |
| CP09-PR-HD-PO-1170 | Glass Handrail - Material PO-Issued | 2026-05-24 → 2026-06-07 (+14d) | 2026-05-26 → 2026-06-09 (+14d) | -175.62d → -187.62d |
| 4 | **Electrical Materials** |  | 2026-05-26 → 2026-06-09 (+14d) |  |
| 1 | **Swimming pool & MR** |  | 2026-05-26 → 2026-06-09 (+14d) |  |
| CP09-PR-EL-PO-1000 | Conduits - Material PO-Issued | 2026-05-24 → 2026-06-07 (+14d) | 2026-05-26 → 2026-06-09 (+14d) | -207d → -219d |
| CP09-PR-EL-PO-1010 | Cable tray - Material PO-Issued | 2026-05-24 → 2026-06-07 (+14d) | 2026-05-26 → 2026-06-09 (+14d) | -207d → -219d |
| CP09-PR-EL-PO-1020 | Panel boards - Material PO-Issued | 2026-05-24 → 2026-06-07 (+14d) | 2026-05-26 → 2026-06-09 (+14d) | -193.06d → -205.06d |
| CP09-PR-EL-PO-1040 | Earthing System - - Material PO-Issued | 2026-05-24 → 2026-06-07 (+14d) | 2026-05-26 → 2026-06-09 (+14d) | -164.06d → -176.06d |
| CP09-PR-EL-PO-1050 | Lighting Outlets , Switches Fixture - Material PO-Issued | 2026-05-24 → 2026-06-07 (+14d) | 2026-05-26 → 2026-06-09 (+14d) | -169.06d → -181.06d |
| CP09-PR-EL-PO-1140 | Underwater Recessed Spotlight - Material PO-Issued | 2026-05-24 → 2026-06-07 (+14d) | 2026-05-26 → 2026-06-09 (+14d) | -169.06d → -181.06d |
| 10 | **Long Lead Item** |  | 2026-05-28 → 2026-06-11 (+14d) |  |
| 1 | **Electrical Material** |  | 2026-05-28 → 2026-06-11 (+14d) |  |
| CP09-PR-EL-PO-1070 | Connecting Pillars - Material PO-Issued | 2026-05-24 → 2026-06-07 (+14d) | 2026-05-28 → 2026-06-11 (+14d) | -169d → -181d |
| CP09-PR-EL-PO-1100 | Surface Mountaed Down Light for Pool Cabans - Material PO-Issued | 2026-05-24 → 2026-06-07 (+14d) | 2026-05-28 → 2026-06-11 (+14d) | -168d → -180d |
| CP09-PR-EL-PO-1110 | Diffused Wall Recessed Step - Material PO-Issued | 2026-05-24 → 2026-06-07 (+14d) | 2026-05-28 → 2026-06-11 (+14d) | -168d → -180d |
| CP09-PR-EL-PO-1120 | Inground Uplight For Palms - Material PO-Issued | 2026-05-24 → 2026-06-07 (+14d) | 2026-05-28 → 2026-06-11 (+14d) | -168d → -180d |
| CP09-PR-EL-PO-1130 | Projectors for Trees - Material PO-Issued | 2026-05-24 → 2026-06-07 (+14d) | 2026-05-28 → 2026-06-11 (+14d) | -168d → -180d |
| CP09-PR-EL-PO-1150 | Outlet lighting fixtures - Material PO-Issued | 2026-05-24 → 2026-06-07 (+14d) | 2026-05-28 → 2026-06-11 (+14d) | -162.38d → -174.38d |
| 4 | **Material Delivery** |  | 2026-07-05 → 2026-07-19 (+14d) |  |
| 1 | **Civil Materials** |  | 2026-06-09 → 2026-06-23 (+14d) |  |
| CP09-PR-CV-DY-1120 | Marble for Cheek & Retainig Walls Material Delivery | 2026-05-24 → 2026-06-07 (+14d) | 2026-06-06 → 2026-06-20 (+14d) | -236.25d → -250.25d |
| CP09-PR-CV-DY-1030 | Mosaic - Material Delivery | 2026-05-27 → 2026-06-10 (+14d) | 2026-06-09 → 2026-06-23 (+14d) | -204.56d → -218.56d |
| CP09-PR-CV-DY-1040 | Granite for Swimming Pool - Material Delivery | 2026-05-27 → 2026-06-10 (+14d) | 2026-06-09 → 2026-06-23 (+14d) | -191.31d → -205.31d |
| CP09-PR-CV-DY-1050 | Stanless Steel Ladders for Swimming Pool - Material Delivery | 2026-05-27 → 2026-06-10 (+14d) | 2026-06-09 → 2026-06-23 (+14d) | -182.81d → -196.81d |
| CP09-PR-CV-DY-1060 | Stanless Steel Handrial for Swimming Pool - Material Delivery | 2026-05-27 → 2026-06-10 (+14d) | 2026-06-09 → 2026-06-23 (+14d) | -179d → -193d |
| CP09-PR-CV-DY-1090 | Geotextile & Geocomposit for Machine Room - Material Delivery | 2026-05-27 → 2026-06-10 (+14d) | 2026-06-09 → 2026-06-23 (+14d) | -177d → -191d |
| CP09-PR-CV-DY-1100 | Drainage Gravel for Machine Room - Material Delivery | 2026-05-27 → 2026-06-10 (+14d) | 2026-06-09 → 2026-06-23 (+14d) | -177d → -191d |
| 2 | **Hardscape Materials** |  | 2026-06-09 → 2026-06-23 (+14d) |  |
| CP09-PR-HD-DY-1030 | Gravel Layer - Material Delivery | 2026-05-27 → 2026-06-10 (+14d) | 2026-06-09 → 2026-06-23 (+14d) | -215.38d → -229.38d |
| CP09-PR-HD-DY-1040 | Crushed Dolomite stone - Material Delivery | 2026-05-27 → 2026-06-10 (+14d) | 2026-06-09 → 2026-06-23 (+14d) | -205.56d → -219.56d |
| CP09-PR-HD-DY-1050 | Loose gravel - Material Delivery | 2026-05-27 → 2026-06-10 (+14d) | 2026-06-09 → 2026-06-23 (+14d) | -213.38d → -227.38d |
| CP09-PR-HD-DY-1110 | Marble for Seat - Material Delivery | 2026-05-27 → 2026-06-10 (+14d) | 2026-06-09 → 2026-06-23 (+14d) | -226d → -240d |
| CP09-PR-HD-DY-1120 | Mica - Material Delivery | 2026-05-27 → 2026-06-10 (+14d) | 2026-06-09 → 2026-06-23 (+14d) | -199.75d → -213.75d |

| ID | Task | Start | Finish | Total float |
| --- | --- | --- | --- | --- |
| CP09-PR-HD-DY-1130 | Blast stone blocks - Material Delivery | 2026-05-27 → 2026-06-10 (+14d) | 2026-06-09 → 2026-06-23 (+14d) | -181.81d → -195.81d |
| CP09-PR-HD-DY-1140 | Loose Rounded Pebbles - Material Delivery | 2026-05-27 → 2026-06-10 (+14d) | 2026-06-09 → 2026-06-23 (+14d) | -168d → -182d |
| CP09-PR-HD-DY-1150 | Shower Head - Material Delivery | 2026-05-27 → 2026-06-10 (+14d) | 2026-06-09 → 2026-06-23 (+14d) | -161d → -175d |
| CP09-PR-HD-DY-1160 | Stainless Handrail - Material Delivery | 2026-05-27 → 2026-06-10 (+14d) | 2026-06-09 → 2026-06-23 (+14d) | -204.62d → -218.62d |
| CP09-PR-HD-DY-1170 | Glass Handrail - Material Delivery | 2026-05-27 → 2026-06-10 (+14d) | 2026-06-09 → 2026-06-23 (+14d) | -204.62d → -218.62d |
| 4 | **Electrical Materials** |  | 2026-06-10 → 2026-06-24 (+14d) |  |
| 1 | **Swimming pool & MR** |  | 2026-06-10 → 2026-06-24 (+14d) |  |
| CP09-PR-EL-DY-1000 | Conduits - Material Delivery | 2026-05-27 → 2026-06-10 (+14d) | 2026-06-10 → 2026-06-24 (+14d) | -242.06d → -256.06d |
| CP09-PR-EL-DY-1010 | Cable tray - Material Delivery | 2026-05-27 → 2026-06-10 (+14d) | 2026-06-10 → 2026-06-24 (+14d) | -242.06d → -256.06d |
| CP09-PR-EL-DY-1020 | Panel boards - Material Delivery | 2026-05-27 → 2026-06-10 (+14d) | 2026-06-10 → 2026-06-24 (+14d) | -225.06d → -239.06d |
| CP09-PR-EL-DY-1040 | Earthing System - - Material Delivery | 2026-05-27 → 2026-06-10 (+14d) | 2026-06-10 → 2026-06-24 (+14d) | -191.06d → -205.06d |
| CP09-PR-EL-DY-1050 | Lighting Outlets , Switches Fixture - Material Delivery | 2026-05-27 → 2026-06-10 (+14d) | 2026-06-10 → 2026-06-24 (+14d) | -197.06d → -211.06d |
| CP09-PR-EL-DY-1140 | Underwater Recessed Spotlight | 2026-05-27 → 2026-06-10 (+14d) | 2026-06-10 → 2026-06-24 (+14d) | -197.06d → -211.06d |
| 5 | **Plantings Materials** |  | 2026-06-22 → 2026-07-06 (+14d) |  |
| CP09-PR-PN-DY-1050 | Ornamental grass - Material Delivery | 2026-05-24 → 2026-06-07 (+14d) | 2026-06-22 → 2026-07-06 (+14d) | -202.38d → -216.38d |
| 10 | **Long Lead Item** |  | 2026-07-05 → 2026-07-19 (+14d) |  |
| 1 | **Electrical Material** |  | 2026-06-27 → 2026-07-11 (+14d) |  |
| CP09-PR-EL-DY-1070 | Connecting Pillars - Material Delivery | 2026-05-29 → 2026-06-12 (+14d) | 2026-06-27 → 2026-07-11 (+14d) | -197d → -211d |
| CP09-PR-EL-DY-1100 | Surface Mountaed Down Light for Pool Cabans - Material Delivery | 2026-05-29 → 2026-06-12 (+14d) | 2026-06-27 → 2026-07-11 (+14d) | -195.38d → -209.38d |
| CP09-PR-EL-DY-1110 | Diffused Wall Recessed Step - Material Delivery | 2026-05-29 → 2026-06-12 (+14d) | 2026-06-27 → 2026-07-11 (+14d) | -195.38d → -209.38d |
| CP09-PR-EL-DY-1120 | Inground Uplight For Palms - Material Delivery | 2026-05-29 → 2026-06-12 (+14d) | 2026-06-27 → 2026-07-11 (+14d) | -195.38d → -209.38d |
| CP09-PR-EL-DY-1130 | Projectors for Trees - Material Delivery | 2026-05-29 → 2026-06-12 (+14d) | 2026-06-27 → 2026-07-11 (+14d) | -195.38d → -209.38d |
| CP09-PR-EL-DY-1150 | Outlet lighting fixtures - Material Delivery | 2026-05-29 → 2026-06-12 (+14d) | 2026-06-27 → 2026-07-11 (+14d) | -189.38d → -203.38d |
| 9 | **Play Field Equipment** |  | 2026-07-05 → 2026-07-19 (+14d) |  |
| 2 | **Kids playground equipment** | 2026-05-24 → 2026-06-07 (+14d) | 2026-07-05 → 2026-07-19 (+14d) |  |
| CP09-PR-PE-DY-1040 | Log Pile - Material Delivery | 2026-05-24 → 2026-06-07 (+14d) | 2026-07-05 → 2026-07-19 (+14d) | -206.19d → -220.19d |
| CP09-PR-PE-DY-1050 | Log Tangle - Material Delivery | 2026-05-24 → 2026-06-07 (+14d) | 2026-07-05 → 2026-07-19 (+14d) | -206.19d → -220.19d |
| CP09-PR-PE-DY-1060 | Offset Ladder Grid - Material Delivery | 2026-05-24 → 2026-06-07 (+14d) | 2026-07-05 → 2026-07-19 (+14d) | -206.19d → -220.19d |
| CP09-PR-PE-DY-1070 | Single Bay Belt Swing - Material Delivery | 2026-05-24 → 2026-06-07 (+14d) | 2026-07-05 → 2026-07-19 (+14d) | -206.19d → -220.19d |
| CP09-PR-PE-DY-1080 | Stepper Cluster - Material Delivery | 2026-05-24 → 2026-06-07 (+14d) | 2026-07-05 → 2026-07-19 (+14d) | -206.19d → -220.19d |
| CP09-PR-PE-DY-1090 | Wobble Board /Small - Material Delivery | 2026-05-24 → 2026-06-07 (+14d) | 2026-07-05 → 2026-07-19 (+14d) | -206.19d → -220.19d |
| CP09-PR-PE-DY-1100 | Wobble Board /Large - Material Delivery | 2026-05-24 → 2026-06-07 (+14d) | 2026-07-05 → 2026-07-19 (+14d) | -206.19d → -220.19d |
| 7 | **Landscape Furntiure** |  | 2026-06-21 → 2026-07-05 (+14d) |  |
| CP09-PR-FN-DY-1010 | Crcular Cast-iron tree grate - Material Delivery | 2026-05-24 → 2026-06-07 (+14d) | 2026-06-21 → 2026-07-05 (+14d) | -194.5d → -208.5d |
| CP09-PR-FN-DY-1020 | Aluminium Cabana for Pool Shading - Material Delivery | 2026-05-24 → 2026-06-07 (+14d) | 2026-06-21 → 2026-07-05 (+14d) | -199.12d → -213.12d |
| CP09-PR-FN-DY-1080 | Lanscape Edging ( Rubber) - Material Delivery | 2026-05-24 → 2026-06-07 (+14d) | 2026-06-21 → 2026-07-05 (+14d) | -194.5d → -208.5d |
| 4 | **Construction** |  | 2026-09-29 → 2026-10-13 (+14d) |  |
| 15 | **Terrace # 01** |  | 2026-07-04 → 2026-07-18 (+14d) |  |
| 1 | **Irrigation Works** |  | 2026-05-31 → 2026-06-14 (+14d) |  |
| 2 | **Fittings & Accessories** |  | 2026-05-31 → 2026-06-14 (+14d) |  |
| CP09-TR1-IR-1150 | Installation of Dripline |  | 2026-05-26 → 2026-06-09 (+14d) | -103d → -115d |
| CP09-TR1-IR-1160 | Installation of Sprinklers |  | 2026-05-28 → 2026-06-11 (+14d) | -103d → -115d |
| CP09-TR1-IR-1170 | Installation Valves & Rings |  | 2026-05-31 → 2026-06-14 (+14d) | -103d → -115d |
| 4 | **Electrical Works** |  | 2026-05-28 → 2026-06-11 (+14d) |  |
| 1 | **Power Cable & Pillars** |  | 2026-05-28 → 2026-06-11 (+14d) |  |
| CP09-TR1-EL-1040 | Excavation |  | 2026-05-28 → 2026-06-11 (+14d) | -101d → -113d |
| 3 | **Hardscape** |  | 2026-06-14 → 2026-06-28 (+14d) |  |
| 2 | **Site Improvments** |  | 2026-06-14 → 2026-06-28 (+14d) |  |
| 4 | **Handrails** | 2026-06-10 → 2026-06-24 (+14d) | 2026-06-14 → 2026-06-28 (+14d) |  |
| CP09-TR1-HD-2390 | Install & Fix Stainless Handrail (500 mm height) | 2026-06-10 → 2026-06-24 (+14d) | 2026-06-13 → 2026-06-27 (+14d) | -138d → -150d |
| CP09-TR1-HD-2400 | Install & Fix Glass Handrail (900mm height) | 2026-06-10 → 2026-06-24 (+14d) | 2026-06-14 → 2026-06-28 (+14d) | -139d → -151d |
| 7 | **Landscape Furntiure** |  | 2026-06-01 → 2026-06-15 (+14d) |  |
| CP09-TR1-FN-2480 | Install & Fix tensile Teflon Tent |  | 2026-06-01 → 2026-06-15 (+14d) | -127.5d → -139.5d |
| 10 | **Play Field Equipment** |  | 2026-05-28 → 2026-06-11 (+14d) |  |
| CP09-TR1-PE-2500 | Fitness areas equipment | 2026-05-24 → 2026-06-07 (+14d) | 2026-05-28 → 2026-06-11 (+14d) | -125d → -137d |
| 5 | **Lighting for Softscape** |  | 2026-07-04 → 2026-07-18 (+14d) |  |
| 1 | **Exterior Lighting** |  | 2026-07-04 → 2026-07-18 (+14d) |  |
| CP09-TR1-SF-1270 | Install Diffused Wall Recessed Step | 2026-06-28 → 2026-07-12 (+14d) | 2026-07-04 → 2026-07-18 (+14d) | -156d → -168d |
| 2 | **Softscape** |  | 2026-05-30 → 2026-06-13 (+14d) |  |
| 1 | **Planting** |  | 2026-05-30 → 2026-06-13 (+14d) |  |
| CP09-TR1-SF-1200 | Ground Covers |  | 2026-05-26 → 2026-06-09 (+14d) | -123d → -135d |
| CP09-TR1-SF-1190 | Shrubs |  | 2026-05-26 → 2026-06-09 (+14d) | -123d → -135d |
| CP09-TR1-SF-1230 | Ornamental grass |  | 2026-05-30 → 2026-06-13 (+14d) | -126d → -138d |
| CP09-TR1-SF-1240 | Lawn |  | 2026-05-30 → 2026-06-13 (+14d) | -126d → -138d |
| 17 | **Terrace # 02** |  | 2026-07-04 → 2026-07-18 (+14d) |  |
| 1 | **Irrigation Works** |  | 2026-06-04 → 2026-06-18 (+14d) |  |
| 2 | **Fittings & Accessories** |  | 2026-06-04 → 2026-06-18 (+14d) |  |
| CP09-TR2-IR-1260 | Installation of Dripline |  | 2026-05-26 → 2026-06-09 (+14d) | -131d → -143d |
| CP09-TR2-IR-1290 | Installation of Electrical solenoid valve |  | 2026-05-26 → 2026-06-09 (+14d) | -123d → -135d |
| CP09-TR2-IR-1320 | Installation of Decoder one station | 2026-05-24 → 2026-06-07 (+14d) | 2026-05-26 → 2026-06-09 (+14d) | -99d → -111d |

| ID | Task | Start | Finish | Complete | Total float |
| --- | --- | --- | --- | --- | --- |
| CP09-TR2-IR-1270 | Installation of Sprinklers | 2026-05-26 → 2026-06-09 (+14d) | 2026-05-28 → 2026-06-11 (+14d) |  | -131d → -143d |
| CP09-TR2-IR-1280 | Installation Valves & Rings | 2026-05-28 → 2026-06-11 (+14d) | 2026-06-02 → 2026-06-16 (+14d) |  | -131d → -143d |
| CP09-TR2-IR-1300 | Installation of Controller (decoder system plastic pedestal) | 2026-06-03 → 2026-06-17 (+14d) | 2026-06-04 → 2026-06-18 (+14d) |  | -131d → -143d |
| 4 | **Electrical Works** |  | 2026-06-30 → 2026-07-14 (+14d) |  |  |
| 1 | **Power Cable & Pillars** |  | 2026-06-30 → 2026-07-14 (+14d) |  |  |
| CP09-TR2-EL-1110 | Installation of Connecting Pillars | 2026-06-28 → 2026-07-12 (+14d) | 2026-06-30 → 2026-07-14 (+14d) |  | -147d → -159d |
| 3 | **Hardscape** |  | 2026-06-16 → 2026-06-30 (+14d) |  |  |
| 2 | **Site Improvments** |  | 2026-06-16 → 2026-06-30 (+14d) |  |  |
| 2 | **Curvelinear Block Seat** |  | 2026-06-11 → 2026-06-25 (+14d) |  |  |
| CP09-TR2-HD-3020 | Marble Capping | 2026-06-10 → 2026-06-24 (+14d) | 2026-06-11 → 2026-06-25 (+14d) |  | -135d → -147d |
| 4 | **Handrails** | 2026-06-13 → 2026-06-27 (+14d) | 2026-06-16 → 2026-06-30 (+14d) |  |  |
| CP09-TR2-HD-3050 | Install & Fix Stainless Handrail (500 mm height) | 2026-06-13 → 2026-06-27 (+14d) | 2026-06-15 → 2026-06-29 (+14d) |  | -134d → -146d |
| CP09-TR2-HD-3060 | Install & Fix Glass Handrail (900mm height) | 2026-06-13 → 2026-06-27 (+14d) | 2026-06-16 → 2026-06-30 (+14d) |  | -135d → -147d |
| 7 | **Landscape Furntiure** |  | 2026-05-26 → 2026-06-09 (+14d) |  |  |
| CP09-TR2-FN-3140 | Install & Fix tensile Teflon Tent | 2026-05-24 → 2026-06-07 (+14d) | 2026-05-26 → 2026-06-09 (+14d) |  | -122.81d → -134.81d |
| 10 | **Play Field Equipment** |  | 2026-05-28 → 2026-06-11 (+14d) |  |  |
| CP09-TR2-PE-3160 | Fitness areas equipment | 2026-05-24 → 2026-06-07 (+14d) | 2026-05-28 → 2026-06-11 (+14d) |  | -125d → -137d |
| 5 | **Lighting for Softscape** |  | 2026-07-04 → 2026-07-18 (+14d) |  |  |
| 1 | **Exterior Lighting** |  | 2026-07-04 → 2026-07-18 (+14d) |  |  |
| CP09-TR2-SF-1430 | Install Diffused Wall Recessed Step | 2026-06-28 → 2026-07-12 (+14d) | 2026-07-04 → 2026-07-18 (+14d) |  | -156d → -168d |
| CP09-TR2-SF-1440 | Install Inground Uplight For Palms | 2026-06-28 → 2026-07-12 (+14d) | 2026-07-04 → 2026-07-18 (+14d) |  | -156d → -168d |
| CP09-TR2-SF-1450 | Install Projectors for Trees | 2026-06-28 → 2026-07-12 (+14d) | 2026-07-01 → 2026-07-15 (+14d) |  | -156d → -168d |
| 2 | **Softscape** |  | 2026-06-03 → 2026-06-17 (+14d) |  |  |
| 1 | **Planting** |  | 2026-06-03 → 2026-06-17 (+14d) |  |  |
| CP09-TR2-SF-1340 | Large Trees |  | 2026-05-31 → 2026-06-14 (+14d) |  | -136d → -148d |
| CP09-TR2-SF-1350 | Shrubs |  | 2026-06-03 → 2026-06-17 (+14d) |  | -136d → -148d |
| CP09-TR2-SF-1360 | Ground Covers |  | 2026-06-03 → 2026-06-17 (+14d) |  | -136d → -148d |
| CP09-TR2-SF-1370 | Succulents |  | 2026-06-03 → 2026-06-17 (+14d) |  | -136d → -148d |
| CP09-TR2-SF-1380 | Vines & Climbers |  | 2026-06-03 → 2026-06-17 (+14d) |  | -136d → -148d |
| CP09-TR2-SF-1390 | Ornamental grass |  | 2026-06-03 → 2026-06-17 (+14d) |  | -136d → -148d |
| CP09-TR2-SF-1400 | Lawn |  | 2026-06-03 → 2026-06-17 (+14d) |  | -136d → -148d |
| 2 | **Terrace # 03** |  | 2026-07-23 → 2026-08-06 (+14d) |  |  |
| 8 | **Swimming Pool-SP01 & Mechnical Room-MR-01** |  | 2026-07-06 → 2026-07-20 (+14d) |  |  |
| 3 | **Finishing Works for Swimming Pool** |  | 2026-06-18 → 2026-07-02 (+14d) |  |  |
| CP09-TR3-SW-1090 | Mosaics Tiles |  | 2026-06-06 → 2026-06-20 (+14d) | 80% → 90% | -138.06d → -150.06d |
| CP09-TR3-SW-1130 | Stanless Steel Ladders | 2026-06-10 → 2026-06-24 (+14d) | 2026-06-13 → 2026-06-27 (+14d) |  | -141.81d → -153.81d |
| CP09-TR3-SW-1140 | Stanless Steel Handrial | 2026-06-13 → 2026-06-27 (+14d) | 2026-06-18 → 2026-07-02 (+14d) |  | -141.81d → -153.81d |
| 4 | **Machine Room_MR01** |  | 2026-06-14 → 2026-06-28 (+14d) |  |  |
| CP09-TR3-SW-1270 | Epoxy for flooring |  | 2026-05-26 → 2026-06-09 (+14d) |  | -122d → -134d |
| CP09-TR3-SW-1280 | Metal Works | 2026-05-24 → 2026-06-07 (+14d) | 2026-05-28 → 2026-06-11 (+14d) |  | -101d → -113d |
| CP09-TR3-SW-1240 | Drainage Gravel including Geotextile & Geocomposit | 2026-06-10 → 2026-06-24 (+14d) | 2026-06-14 → 2026-06-28 (+14d) |  | -114.75d → -126.75d |
| 2 | **MEP Works for Swimmimg Pool & Machine Room** |  | 2026-07-06 → 2026-07-20 (+14d) |  |  |
| 2 | **Electrical Works-SW** | 2026-06-10 → 2026-06-24 (+14d) | 2026-07-06 → 2026-07-20 (+14d) |  |  |
| CP09-TR3-SW-1310 | Conduits, Cable tray | 2026-06-10 → 2026-06-24 (+14d) | 2026-06-17 → 2026-07-01 (+14d) |  | -156.06d → -168.06d |
| CP09-TR3-SW-1330 | Panel boards | 2026-06-17 → 2026-07-01 (+14d) | 2026-06-22 → 2026-07-06 (+14d) |  | -156.06d → -168.06d |
| CP09-TR3-SW-1340 | Power Cables & Wires | 2026-06-22 → 2026-07-06 (+14d) | 2026-06-28 → 2026-07-12 (+14d) |  | -156.06d → -168.06d |
| CP09-TR3-SW-1350 | Earthing System | 2026-06-22 → 2026-07-06 (+14d) | 2026-06-28 → 2026-07-12 (+14d) |  | -126.06d → -138.06d |
| CP09-TR3-SW-1360 | (Lighting Outlets , Switches, Fixture ) | 2026-06-28 → 2026-07-12 (+14d) | 2026-07-06 → 2026-07-20 (+14d) |  | -156.06d → -168.06d |
| 9 | **Retaining & Cheek Walls** |  | 2026-06-23 → 2026-07-07 (+14d) |  |  |
| 1 | **Soild Block Work Cheek Walls** |  | 2026-06-23 → 2026-07-07 (+14d) |  |  |
| CP09-TR3-RW-1100 | Reinforced Concrete for Column |  | 2026-05-25 → 2026-06-08 (+14d) |  | -97.8d → -109.8d |
| CP09-TR3-RW-1200 | Marble Cladding | 2026-06-07 → 2026-06-21 (+14d) | 2026-06-17 → 2026-07-01 (+14d) |  | -171.94d → -183.94d |
| CP09-TR3-RW-1220 | Marble Copping | 2026-06-11 → 2026-06-25 (+14d) | 2026-06-23 → 2026-07-07 (+14d) |  | -171.94d → -183.94d |
| 2 | **Solid Block Retaining Walls** |  | 2026-06-23 → 2026-07-07 (+14d) |  |  |
| CP09-TR3-RW-1190 | Marble Cladding | 2026-06-07 → 2026-06-21 (+14d) | 2026-06-17 → 2026-07-01 (+14d) |  | -171.94d → -183.94d |
| CP09-TR3-RW-1210 | Marble Copping | 2026-06-11 → 2026-06-25 (+14d) | 2026-06-23 → 2026-07-07 (+14d) |  | -171.94d → -183.94d |
| 1 | **Irrigation Works** |  | 2026-06-18 → 2026-07-02 (+14d) |  |  |
| 2 | **Fittings & Accessories** |  | 2026-06-18 → 2026-07-02 (+14d) |  |  |
| CP09-TR3-IR-1040 | Installation of Dripline |  | 2026-06-01 → 2026-06-15 (+14d) | 75% → 80% | -142d → -154d |
| CP09-TR3-IR-1100 | Installation of Decoder one station | 2026-05-24 → 2026-06-07 (+14d) | 2026-05-26 → 2026-06-09 (+14d) |  | -122d → -134d |
| CP09-TR3-IR-1050 | Installation of Sprinklers | 2026-06-02 → 2026-06-16 (+14d) | 2026-06-07 → 2026-06-21 (+14d) |  | -142d → -154d |
| CP09-TR3-IR-1060 | Installation Valves & Rings | 2026-06-08 → 2026-06-22 (+14d) | 2026-06-11 → 2026-06-25 (+14d) |  | -142d → -154d |
| CP09-TR3-IR-1070 | Installation of Electrical solenoid valve | 2026-06-08 → 2026-06-22 (+14d) | 2026-06-14 → 2026-06-28 (+14d) |  | -138d → -150d |
| CP09-TR3-IR-1080 | Installation of Controller (decoder system plastic pedestal) | 2026-06-13 → 2026-06-27 (+14d) | 2026-06-18 → 2026-07-02 (+14d) |  | -142d → -154d |
| 4 | **Electrical Works** |  | 2026-06-30 → 2026-07-14 (+14d) |  |  |
| 1 | **Power Cable & Pillars** |  | 2026-06-30 → 2026-07-14 (+14d) |  |  |
| CP09-TR3-EL-1030 | Installation of Connecting Pillars | 2026-06-28 → 2026-07-12 (+14d) | 2026-06-30 → 2026-07-14 (+14d) |  | -152d → -164d |
| 3 | **Hardscape** |  | 2026-07-06 → 2026-07-20 (+14d) |  |  |
| 6 | **Concrete Curb** |  | 2026-05-26 → 2026-06-09 (+14d) |  |  |
| CP09-TR3-HD-1050 | Instal precast Flush Curb | 2026-05-24 → 2026-06-07 (+14d) | 2026-05-26 → 2026-06-09 (+14d) |  | -156.62d → -168.62d |

| ID | Task | Start | Finish | Complete | Total float |
| --- | --- | --- | --- | --- | --- |
| 1 | **Side wake & Plazes** |  | 2026-06-25 → 2026-07-09 (+14d) |  |  |
| 2 | **Concrete in Situ** |  | 2026-06-03 → 2026-06-17 (+14d) |  |  |
| 1 | **Slab on Garde** |  | 2026-05-30 → 2026-06-13 (+14d) |  |  |
| CP09-TR3-HD-1070 | Plain Concrete with HDPE |  | 2026-05-27 → 2026-06-10 (+14d) |  | -99.75d → -111.75d |
| CP09-TR3-HD-1230 | Reinfored Concrete slab on grade |  | 2026-05-30 → 2026-06-13 (+14d) |  | -101.62d → -113.62d |
| CP09-TR3-HD-1330 | Waterproofing & Screed |  | 2026-05-27 → 2026-06-10 (+14d) |  | -99.75d → -111.75d |
| 2 | **Concrete In-situ w./Exposed Aggregate Finish** |  | 2026-06-03 → 2026-06-17 (+14d) |  |  |
| CP09-TR3-HD-1390 | Concrete casting (including Joints & Wire Mish) |  | 2026-06-03 → 2026-06-17 (+14d) |  | -105.38d → -117.38d |
| CP09-TR3-HD-1520 | Finishing Concrete Surface |  | 2026-05-28 → 2026-06-11 (+14d) |  | -142.75d → -154.75d |
| 1 | **Marble Paving** |  | 2026-05-31 → 2026-06-14 (+14d) |  |  |
| 1 | **Slab on Garde** |  | 2026-05-30 → 2026-06-13 (+14d) |  |  |
| CP09-TR3-HD-1060 | Plain Concrete with HDPE |  | 2026-05-27 → 2026-06-10 (+14d) |  | -99.75d → -111.75d |
| CP09-TR3-HD-1220 | Reinfored Concrete slab on grade |  | 2026-05-30 → 2026-06-13 (+14d) |  | -101.62d → -113.62d |
| CP09-TR3-HD-1320 | Waterproofing & Screed |  | 2026-05-28 → 2026-06-11 (+14d) |  | -101d → -113d |
| 2 | **Marble Tiles** |  | 2026-05-31 → 2026-06-14 (+14d) |  |  |
| CP09-TR3-HD-1420 | Marble Fixiation |  | 2026-05-31 → 2026-06-14 (+14d) |  | -103d → -115d |
| CP09-TR3-HD-1530 | Marble Surfcae Finishing |  | 2026-05-27 → 2026-06-10 (+14d) |  | -141.75d → -153.75d |
| 3 | **Wooden Floor Boards** |  | 2026-06-08 → 2026-06-22 (+14d) |  |  |
| 2 | **Wood- Plastic Composit** | 2026-05-27 → 2026-06-10 (+14d) | 2026-06-08 → 2026-06-22 (+14d) |  |  |
| CP09-TR3-HD-1350 | WPC Installation | 2026-05-27 → 2026-06-10 (+14d) | 2026-06-03 → 2026-06-17 (+14d) |  | -147.31d → -159.31d |
| CP09-TR3-HD-1600 | WPC surface finishing & Accessories | 2026-06-03 → 2026-06-17 (+14d) | 2026-06-08 → 2026-06-22 (+14d) |  | -147.31d → -159.31d |
| 4 | **Gravel layer** | 2026-05-24 → 2026-06-07 (+14d) | 2026-06-17 → 2026-07-01 (+14d) |  |  |
| 1 | **Slab on Garde** | 2026-05-24 → 2026-06-07 (+14d) | 2026-06-01 → 2026-06-15 (+14d) |  |  |
| CP09-TR3-HD-1090 | Plain Concrete with HDPE | 2026-05-24 → 2026-06-07 (+14d) | 2026-05-26 → 2026-06-09 (+14d) |  | -154.94d → -166.94d |
| CP09-TR3-HD-1170 | Mortar bed | 2026-05-26 → 2026-06-09 (+14d) | 2026-06-01 → 2026-06-15 (+14d) |  | -154.94d → -166.94d |
| 2 | **Gravel Layer, w./Earth Colors** | 2026-06-10 → 2026-06-24 (+14d) | 2026-06-17 → 2026-07-01 (+14d) |  |  |
| CP09-TR3-HD-1360 | Furnish & install Garvel Layer | 2026-06-10 → 2026-06-24 (+14d) | 2026-06-17 → 2026-07-01 (+14d) |  | -162.12d → -174.12d |
| 5 | **Crushed Stone** |  | 2026-06-25 → 2026-07-09 (+14d) |  |  |
| 1 | **Slab on Garde** |  | 2026-05-28 → 2026-06-11 (+14d) |  |  |
| CP09-TR3-HD-1100 | Geotextile membrane |  | 2026-05-26 → 2026-06-09 (+14d) | 75% → 80% | -98.81d → -110.81d |
| CP09-TR3-HD-1180 | Gravel fix sheets |  | 2026-05-28 → 2026-06-11 (+14d) | 75% → 80% | -140.56d → -152.56d |
| 2 | **Crushed Dolomite Stone** | 2026-06-17 → 2026-07-01 (+14d) | 2026-06-25 → 2026-07-09 (+14d) |  |  |
| CP09-TR3-HD-1450 | Furnish & Install Crushed Dolomite stone , w./ mixed colors | 2026-06-17 → 2026-07-01 (+14d) | 2026-06-25 → 2026-07-09 (+14d) |  | -162.12d → -174.12d |
| 6 | **Loose Gravel** | 2026-06-10 → 2026-06-24 (+14d) | 2026-06-17 → 2026-07-01 (+14d) |  |  |
| 2 | **Loose Gravel 50mm** | 2026-06-10 → 2026-06-24 (+14d) | 2026-06-17 → 2026-07-01 (+14d) |  |  |
| CP09-TR3-HD-1460 | Furnish & Install loose gravel w./earth colors. | 2026-06-10 → 2026-06-24 (+14d) | 2026-06-17 → 2026-07-01 (+14d) |  | -155.56d → -167.56d |
| 2 | **Site Improvments** |  | 2026-07-06 → 2026-07-20 (+14d) |  |  |
| 1 | **Marble Steps** | 2026-05-24 → 2026-06-07 (+14d) | 2026-06-29 → 2026-07-13 (+14d) |  |  |
| CP09-TR3-HD-1130 | Reinforecd Concrete Step. | 2026-05-24 → 2026-06-07 (+14d) | 2026-05-31 → 2026-06-14 (+14d) |  | -152.44d → -164.44d |
| CP09-TR3-HD-1190 | Install Marble Blocks | 2026-05-26 → 2026-06-09 (+14d) | 2026-06-07 → 2026-06-21 (+14d) |  | -152.44d → -164.44d |
| CP09-TR3-HD-1340 | Finishing Marble Surface | 2026-06-23 → 2026-07-07 (+14d) | 2026-06-29 → 2026-07-13 (+14d) |  | -150.69d → -162.69d |
| 2 | **Curvelinear Block Seat** |  | 2026-06-30 → 2026-07-14 (+14d) |  |  |
| CP09-TR3-HD-1550 | Marble Capping | 2026-06-23 → 2026-07-07 (+14d) | 2026-06-30 → 2026-07-14 (+14d) |  | -171.94d → -183.94d |
| 3 | **Pools Shower-01** | 2026-05-27 → 2026-06-10 (+14d) | 2026-07-06 → 2026-07-20 (+14d) |  |  |
| CP09-TR3-HD-1150 | Plain Concrete Basin | 2026-05-27 → 2026-06-10 (+14d) | 2026-05-28 → 2026-06-11 (+14d) |  | -156.62d → -168.62d |
| CP09-TR3-HD-1210 | R.Concrete Basin | 2026-05-30 → 2026-06-13 (+14d) | 2026-06-02 → 2026-06-16 (+14d) |  | -156.62d → -168.62d |
| CP09-TR3-HD-1280 | Solid Block Work | 2026-06-02 → 2026-06-16 (+14d) | 2026-06-07 → 2026-06-21 (+14d) |  | -156.62d → -168.62d |
| CP09-TR3-HD-1370 | Water Proofing | 2026-06-07 → 2026-06-21 (+14d) | 2026-06-09 → 2026-06-23 (+14d) |  | -156.62d → -168.62d |
| CP09-TR3-HD-1400 | Backfilling | 2026-06-09 → 2026-06-23 (+14d) | 2026-06-13 → 2026-06-27 (+14d) |  | -156.62d → -168.62d |
| CP09-TR3-HD-1430 | Mica Stone Cladding | 2026-06-13 → 2026-06-27 (+14d) | 2026-06-16 → 2026-06-30 (+14d) |  | -156.62d → -168.62d |
| CP09-TR3-HD-1490 | Mica Stone Capping | 2026-06-16 → 2026-06-30 (+14d) | 2026-06-18 → 2026-07-02 (+14d) |  | -156.62d → -168.62d |
| CP09-TR3-HD-1510 | Drainage Cover with Geotextile | 2026-06-18 → 2026-07-02 (+14d) | 2026-06-22 → 2026-07-06 (+14d) |  | -156.62d → -168.62d |
| CP09-TR3-HD-1570 | Blast stone blocks for Flooring | 2026-06-22 → 2026-07-06 (+14d) | 2026-06-25 → 2026-07-09 (+14d) |  | -156.62d → -168.62d |
| CP09-TR3-HD-1590 | Blast Stone Blocks Capping | 2026-06-25 → 2026-07-09 (+14d) | 2026-06-29 → 2026-07-13 (+14d) |  | -156.62d → -168.62d |
| CP09-TR3-HD-1690 | Loose Rounded Pebbles | 2026-06-29 → 2026-07-13 (+14d) | 2026-07-02 → 2026-07-16 (+14d) |  | -156.62d → -168.62d |
| CP09-TR3-HD-1810 | Shower Head Fixation | 2026-07-02 → 2026-07-16 (+14d) | 2026-07-06 → 2026-07-20 (+14d) |  | -156.62d → -168.62d |
| 4 | **Handrails** | 2026-06-30 → 2026-07-14 (+14d) | 2026-07-06 → 2026-07-20 (+14d) |  |  |
| CP09-TR3-HD-1610 | Install & Fix Stainless Handrail (500 mm height) | 2026-06-30 → 2026-07-14 (+14d) | 2026-07-06 → 2026-07-20 (+14d) |  | -171.94d → -183.94d |
| CP09-TR3-HD-1620 | Install & Fix Glass Handrail (900mm height) | 2026-06-30 → 2026-07-14 (+14d) | 2026-07-06 → 2026-07-20 (+14d) |  | -171.94d → -183.94d |
| 7 | **Sinage** |  | 2026-06-03 → 2026-06-17 (+14d) |  |  |
| CP09-TR3-SN-1650 | UNIT ID SIGN (FRONT YARD) | 2026-05-24 → 2026-06-07 (+14d) | 2026-06-03 → 2026-06-17 (+14d) |  | -129d → -141d |
| CP09-TR3-SN-1660 | UNIT ID SIGN (BACK YARD) | 2026-05-24 → 2026-06-07 (+14d) | 2026-06-03 → 2026-06-17 (+14d) |  | -129d → -141d |
| 5 | **Landscape Furntiure** |  | 2026-07-23 → 2026-08-06 (+14d) |  |  |
| CP09-TR3-FN-1770 | Install & Fix tensile Teflon Tent | 2026-07-06 → 2026-07-20 (+14d) | 2026-07-23 → 2026-08-06 (+14d) |  | -171.94d → -183.94d |
| 10 | **Play Field Equipment** |  | 2026-06-09 → 2026-06-23 (+14d) |  |  |
| CP09-TR3-PE-1790 | Fitness areas equipment | 2026-05-24 → 2026-06-07 (+14d) | 2026-06-09 → 2026-06-23 (+14d) |  | -134d → -146d |
| 11 | **Lighting for Softscape** | 2026-05-24 → 2026-06-07 (+14d) | 2026-07-13 → 2026-07-27 (+14d) |  |  |
| 1 | **Exterior Lighting** | 2026-05-24 → 2026-06-07 (+14d) | 2026-07-11 → 2026-07-25 (+14d) |  |  |
| CP09-TR3-SF-1000 | Install Landscape Lighting Pole | 2026-05-24 → 2026-06-07 (+14d) | 2026-06-16 → 2026-06-30 (+14d) |  | -155d → -167d |
| CP09-TR3-SF-1060 | Install Bollard for Walkways | 2026-06-25 → 2026-07-09 (+14d) | 2026-07-07 → 2026-07-21 (+14d) |  | -162.12d → -174.12d |

| ID | Task | Start | Finish | Complete | Total float |
| --- | --- | --- | --- | --- | --- |
| CP09-TR3-SF-1150 | Install Surface Mountaed Down Light for Pool Cabans | 2026-06-28 → 2026-07-12 (+14d) | 2026-07-05 → 2026-07-19 (+14d) |  | -156d → -168d |
| CP09-TR3-SF-1110 | Install Diffused Wall Recessed Step | 2026-06-29 → 2026-07-13 (+14d) | 2026-07-07 → 2026-07-21 (+14d) |  | -157.12d → -169.12d |
| CP09-TR3-SF-1130 | Install Inground Uplight For Palms | 2026-07-05 → 2026-07-19 (+14d) | 2026-07-11 → 2026-07-25 (+14d) |  | -161d → -173d |
| CP09-TR3-SF-1140 | Install Projectors for Trees | 2026-07-05 → 2026-07-19 (+14d) | 2026-07-08 → 2026-07-22 (+14d) |  | -161d → -173d |
| 2 | **Outlet Lighting Fixtures** | 2026-07-07 → 2026-07-21 (+14d) | 2026-07-13 → 2026-07-27 (+14d) |  |  |
| CP09-TR3-SF-1120 | Install outlet lighting fixtures | 2026-07-07 → 2026-07-21 (+14d) | 2026-07-13 → 2026-07-27 (+14d) |  | -162.12d → -174.12d |
| 2 | **Softscape** |  | 2026-07-04 → 2026-07-18 (+14d) |  |  |
| 1 | **Planting** |  | 2026-07-04 → 2026-07-18 (+14d) |  |  |
| CP09-TR3-SF-1020 | Organic Manure |  | 2026-06-01 → 2026-06-15 (+14d) |  | -143d → -155d |
| CP09-TR3-SF-1010 | Sweet sand for all plants |  | 2026-06-03 → 2026-06-17 (+14d) |  | -145d → -157d |
| CP09-TR3-SF-1030 | Large Trees |  | 2026-05-31 → 2026-06-14 (+14d) |  | -135d → -147d |
| CP09-TR3-SF-1080 | Shrubs |  | 2026-06-03 → 2026-06-17 (+14d) |  | -135d → -147d |
| CP09-TR3-SF-1090 | Ground Covers |  | 2026-06-03 → 2026-06-17 (+14d) |  | -135d → -147d |
| CP09-TR3-SF-1050 | Lawn |  | 2026-06-03 → 2026-06-17 (+14d) |  | -135d → -147d |
| CP09-TR3-SF-1100 | Succulents |  | 2026-06-03 → 2026-06-17 (+14d) |  | -135d → -147d |
| CP09-TR3-SF-1040 | Vines & Climbers | 2026-06-04 → 2026-06-18 (+14d) | 2026-06-15 → 2026-06-29 (+14d) |  | -145d → -157d |
| CP09-TR3-SF-1070 | Ornamental grass | 2026-06-23 → 2026-07-07 (+14d) | 2026-07-04 → 2026-07-18 (+14d) |  | -161d → -173d |
| 4 | **Terrace # 04** |  | 2026-08-17 → 2026-08-31 (+14d) |  |  |
| 8 | **Swimming Pool-SP02 & Mechnical Room-MR-02** |  | 2026-07-06 → 2026-07-20 (+14d) |  |  |
| 3 | **Finishing Works for Swimming Pool** |  | 2026-06-28 → 2026-07-12 (+14d) |  |  |
| CP09-TR4-SW-1470 | Granite for Pool Edg |  | 2026-05-27 → 2026-06-10 (+14d) | 75% → 85% | -130.56d → -142.56d |
| CP09-TR4-SW-1480 | Garnite for Drinage Grate |  | 2026-05-27 → 2026-06-10 (+14d) | 75% → 85% | -130.56d → -142.56d |
| CP09-TR4-SW-1490 | Granite for Pool Coping |  | 2026-05-27 → 2026-06-10 (+14d) | 75% → 85% | -130.56d → -142.56d |
| CP09-TR4-SW-1460 | Mosaics Tiles | 2026-06-10 → 2026-06-24 (+14d) | 2026-06-18 → 2026-07-02 (+14d) |  | -149.81d → -161.81d |
| CP09-TR4-SW-1500 | Stanless Steel Ladders | 2026-06-20 → 2026-07-04 (+14d) | 2026-06-22 → 2026-07-06 (+14d) |  | -149.81d → -161.81d |
| CP09-TR4-SW-1510 | Stanless Steel Handrial | 2026-06-22 → 2026-07-06 (+14d) | 2026-06-28 → 2026-07-12 (+14d) |  | -149.81d → -161.81d |
| 4 | **Machine Room_MR02** |  | 2026-06-14 → 2026-06-28 (+14d) |  |  |
| CP09-TR4-SW-1710 | Epoxy for flooring |  | 2026-05-26 → 2026-06-09 (+14d) |  | -122d → -134d |
| CP09-TR4-SW-1720 | Metal Works | 2026-05-24 → 2026-06-07 (+14d) | 2026-05-28 → 2026-06-11 (+14d) |  | -101d → -113d |
| CP09-TR4-SW-1610 | Drainage Gravel including Geotextile & Geocomposit | 2026-06-10 → 2026-06-24 (+14d) | 2026-06-14 → 2026-06-28 (+14d) |  | -114.75d → -126.75d |
| 2 | **MEP Works for Swimmimg Pool & Machine Room** |  | 2026-07-06 → 2026-07-20 (+14d) |  |  |
| 1 | **Mechnical Works** |  | 2026-06-21 → 2026-07-05 (+14d) |  |  |
| CP09-TR4-SW-1620 | UPVC pipes, fitting, valves, |  | 2026-06-03 → 2026-06-17 (+14d) |  | -144d → -156d |
| CP09-TR4-SW-1630 | Mechnical Equipment (Valves, Pumps, Filtters, Controllers ,Dosinng,& Ventilation exahust fan) | 2026-06-04 → 2026-06-18 (+14d) | 2026-06-21 → 2026-07-05 (+14d) |  | -144d → -156d |
| 2 | **Electrical Works-SW** | 2026-06-10 → 2026-06-24 (+14d) | 2026-07-06 → 2026-07-20 (+14d) |  |  |
| CP09-TR4-SW-1640 | Conduits, Cable tray | 2026-06-10 → 2026-06-24 (+14d) | 2026-06-16 → 2026-06-30 (+14d) |  | -156.06d → -168.06d |
| CP09-TR4-SW-1650 | Panel boards | 2026-06-16 → 2026-06-30 (+14d) | 2026-06-22 → 2026-07-06 (+14d) |  | -156.06d → -168.06d |
| CP09-TR4-SW-1660 | Power Cables & Wires | 2026-06-22 → 2026-07-06 (+14d) | 2026-06-28 → 2026-07-12 (+14d) |  | -156.06d → -168.06d |
| CP09-TR4-SW-1680 | Earthing System | 2026-06-22 → 2026-07-06 (+14d) | 2026-06-28 → 2026-07-12 (+14d) |  | -126.06d → -138.06d |
| CP09-TR4-SW-1670 | (Lighting Outlets , Switches, Fixture ) | 2026-06-28 → 2026-07-12 (+14d) | 2026-07-06 → 2026-07-20 (+14d) |  | -156.06d → -168.06d |
| 9 | **Retaining & Cheek Walls** |  | 2026-06-23 → 2026-07-07 (+14d) |  |  |
| 1 | **Soild Block Work Cheek Walls** |  | 2026-06-23 → 2026-07-07 (+14d) |  |  |
| CP09-TR4-RW-1320 | Marble Cladding | 2026-06-07 → 2026-06-21 (+14d) | 2026-06-17 → 2026-07-01 (+14d) |  | -192.94d → -204.94d |
| CP09-TR4-RW-1330 | Marble Copping | 2026-06-11 → 2026-06-25 (+14d) | 2026-06-23 → 2026-07-07 (+14d) |  | -192.94d → -204.94d |
| 2 | **Solid Block Retaining Walls** |  | 2026-06-23 → 2026-07-07 (+14d) |  |  |
| CP09-TR4-RW-1430 | Marble Cladding | 2026-06-07 → 2026-06-21 (+14d) | 2026-06-17 → 2026-07-01 (+14d) |  | -192.94d → -204.94d |
| CP09-TR4-RW-1440 | Marble Copping | 2026-06-11 → 2026-06-25 (+14d) | 2026-06-23 → 2026-07-07 (+14d) |  | -192.94d → -204.94d |
| 1 | **Irrigation Works** |  | 2026-06-07 → 2026-06-21 (+14d) |  |  |
| 1 | **Sub-Main & Lateral** |  | 2026-06-07 → 2026-06-21 (+14d) |  |  |
| CP09-TR4-IR-1110 | Excavation for Sub-main & Lateral Pieps |  | 2026-05-27 → 2026-06-10 (+14d) |  | -186.75d → -198.75d |
| CP09-TR4-IR-1120 | Sub-main & Lateral Pieps laying out and installation |  | 2026-06-02 → 2026-06-16 (+14d) |  | -186.75d → -198.75d |
| CP09-TR4-IR-1130 | Sub-main & Lateral Pieps Testing |  | 2026-06-04 → 2026-06-18 (+14d) |  | -186.75d → -198.75d |
| CP09-TR4-IR-1140 | Backfilling forSub-main & Lateral Pieps |  | 2026-06-07 → 2026-06-21 (+14d) |  | -186.75d → -198.75d |
| 2 | **Fittings & Accessories** |  | 2026-06-06 → 2026-06-20 (+14d) |  |  |
| CP09-TR4-IR-1150 | Installation of Dripline |  | 2026-05-30 → 2026-06-13 (+14d) | 10% → 15% | -131d → -143d |
| CP09-TR4-IR-1200 | Installation of Controller decoder cables |  | 2026-05-30 → 2026-06-13 (+14d) |  | -128d → -140d |
| CP09-TR4-IR-1160 | Installation of Sprinklers | 2026-05-24 → 2026-06-07 (+14d) | 2026-05-28 → 2026-06-11 (+14d) |  | -131d → -143d |
| CP09-TR4-IR-1170 | Installation Valves & Rings | 2026-05-24 → 2026-06-07 (+14d) | 2026-05-30 → 2026-06-13 (+14d) |  | -131d → -143d |
| CP09-TR4-IR-1180 | Installation of Electrical solenoid valve | 2026-05-24 → 2026-06-07 (+14d) | 2026-05-30 → 2026-06-13 (+14d) |  | -131d → -143d |
| CP09-TR4-IR-1190 | Installation of Controller (decoder system plastic pedestal) | 2026-05-31 → 2026-06-14 (+14d) | 2026-06-06 → 2026-06-20 (+14d) |  | -131d → -143d |
| CP09-TR4-IR-1210 | Installation of Decoder one station | 2026-05-31 → 2026-06-14 (+14d) | 2026-06-02 → 2026-06-16 (+14d) |  | -128d → -140d |
| 4 | **Electrical Works** |  | 2026-06-30 → 2026-07-14 (+14d) |  |  |
| 1 | **Power Cable & Pillars** |  | 2026-06-30 → 2026-07-14 (+14d) |  |  |
| CP09-TR4-EL-1070 | Installation of Connecting Pillars | 2026-06-28 → 2026-07-12 (+14d) | 2026-06-30 → 2026-07-14 (+14d) |  | -152d → -164d |
| 3 | **Hardscape** |  | 2026-07-07 → 2026-07-21 (+14d) |  |  |
| 6 | **Concrete Curb** |  | 2026-05-26 → 2026-06-09 (+14d) |  |  |
| CP09-TR4-HD-2380 | Instal Flush Curb | 2026-05-24 → 2026-06-07 (+14d) | 2026-05-26 → 2026-06-09 (+14d) |  | -207.44d → -219.44d |
| 1 | **Side wake & Plazes** |  | 2026-06-29 → 2026-07-13 (+14d) |  |  |
| 2 | **Concrete in Situ** |  | 2026-06-03 → 2026-06-17 (+14d) |  |  |
| 1 | **Slab on Garde** |  | 2026-05-30 → 2026-06-13 (+14d) |  |  |

| ID | Task | Start | Finish | Total float |
| --- | --- | --- | --- | --- |
| CP09-TR4-HD-1870 | Plain Concrete with HDPE |  | 2026-05-27 → 2026-06-10 (+14d) | -99.75d → -111.75d |
| CP09-TR4-HD-1880 | Reinfored Concrete slab on grade |  | 2026-05-30 → 2026-06-13 (+14d) | -101.62d → -113.62d |
| CP09-TR4-HD-1890 | Waterproofing & Screed |  | 2026-05-27 → 2026-06-10 (+14d) | -99.75d → -111.75d |
| 2 | **Concrete In-situ w./Exposed Aggregate Finish** |  | 2026-06-03 → 2026-06-17 (+14d) |  |
| CP09-TR4-HD-1900 | Concrete casting (including Joints & Wire Mish) |  | 2026-06-03 → 2026-06-17 (+14d) | -105.38d → -117.38d |
| CP09-TR4-HD-1910 | Finishing Concrete Surface |  | 2026-05-28 → 2026-06-11 (+14d) | -163.75d → -175.75d |
| 3 | **Wooden Floor Boards** |  | 2026-06-08 → 2026-06-22 (+14d) |  |
| 2 | **Wood- Plastic Composit** | 2026-05-27 → 2026-06-10 (+14d) | 2026-06-08 → 2026-06-22 (+14d) |  |
| CP09-TR4-HD-1950 | WPC Installation | 2026-05-27 → 2026-06-10 (+14d) | 2026-06-03 → 2026-06-17 (+14d) | -168.31d → -180.31d |
| CP09-TR4-HD-1960 | WPC surface finishing & Accessories | 2026-06-03 → 2026-06-17 (+14d) | 2026-06-08 → 2026-06-22 (+14d) | -168.31d → -180.31d |
| 4 | **Gravel layer** | 2026-06-08 → 2026-06-22 (+14d) | 2026-06-22 → 2026-07-06 (+14d) |  |
| 1 | **Slab on Garde** | 2026-06-08 → 2026-06-22 (+14d) | 2026-06-14 → 2026-06-28 (+14d) |  |
| CP09-TR4-HD-1970 | Plain Concrete with HDPE | 2026-06-08 → 2026-06-22 (+14d) | 2026-06-10 → 2026-06-24 (+14d) | -186.75d → -198.75d |
| CP09-TR4-HD-1990 | Mortar bed | 2026-06-10 → 2026-06-24 (+14d) | 2026-06-14 → 2026-06-28 (+14d) | -186.75d → -198.75d |
| 2 | **Gravel Layer, w./Earth Colors** | 2026-06-14 → 2026-06-28 (+14d) | 2026-06-22 → 2026-07-06 (+14d) |  |
| CP09-TR4-HD-2000 | Furnish & install Garvel Layer | 2026-06-14 → 2026-06-28 (+14d) | 2026-06-22 → 2026-07-06 (+14d) | -186.75d → -198.75d |
| 5 | **Crushed Stone** | 2026-06-08 → 2026-06-22 (+14d) | 2026-06-29 → 2026-07-13 (+14d) |  |
| 1 | **Slab on Garde** | 2026-06-08 → 2026-06-22 (+14d) | 2026-06-21 → 2026-07-05 (+14d) |  |
| CP09-TR4-HD-2010 | Geotextile membrane | 2026-06-08 → 2026-06-22 (+14d) | 2026-06-13 → 2026-06-27 (+14d) | -180d → -192d |
| CP09-TR4-HD-2030 | Gravel fix sheets | 2026-06-14 → 2026-06-28 (+14d) | 2026-06-21 → 2026-07-05 (+14d) | -180d → -192d |
| 2 | **Crushed Dolomite Stone** | 2026-06-22 → 2026-07-06 (+14d) | 2026-06-29 → 2026-07-13 (+14d) |  |
| CP09-TR4-HD-2040 | Furnish & Install Crushed Dolomite stone , w./ mixed colors | 2026-06-22 → 2026-07-06 (+14d) | 2026-06-29 → 2026-07-13 (+14d) | -186.75d → -198.75d |
| 6 | **Loose Gravel** | 2026-06-10 → 2026-06-24 (+14d) | 2026-06-17 → 2026-07-01 (+14d) |  |
| 2 | **Loose Gravel 50mm** | 2026-06-10 → 2026-06-24 (+14d) | 2026-06-17 → 2026-07-01 (+14d) |  |
| CP09-TR4-HD-2050 | Furnish & Install loose gravel w./earth colors. | 2026-06-10 → 2026-06-24 (+14d) | 2026-06-17 → 2026-07-01 (+14d) | -176.56d → -188.56d |
| 7 | **Clean Sand Layer** |  | 2026-06-03 → 2026-06-17 (+14d) |  |
| 1 | **Kids & Fitness Area** |  | 2026-06-03 → 2026-06-17 (+14d) |  |
| CP09-TR4-HD-2060 | Geotextile Sheets |  | 2026-05-28 → 2026-06-11 (+14d) | -101d → -113d |
| CP09-TR4-HD-2070 | Install Clean sand layer |  | 2026-06-03 → 2026-06-17 (+14d) | -150.38d → -162.38d |
| 2 | **Site Improvments** |  | 2026-07-07 → 2026-07-21 (+14d) |  |
| 1 | **Marble Steps** |  | 2026-06-29 → 2026-07-13 (+14d) |  |
| CP09-TR4-HD-2150 | Install Marble Blocks | 2026-05-24 → 2026-06-07 (+14d) | 2026-05-31 → 2026-06-14 (+14d) | -167.19d → -179.19d |
| CP09-TR4-HD-2160 | Finishing Marble Surface | 2026-06-23 → 2026-07-07 (+14d) | 2026-06-29 → 2026-07-13 (+14d) | -150.69d → -162.69d |
| 2 | **Curvelinear Block Seat** |  | 2026-06-30 → 2026-07-14 (+14d) |  |
| CP09-TR4-HD-2230 | Marble Capping | 2026-06-23 → 2026-07-07 (+14d) | 2026-06-30 → 2026-07-14 (+14d) | -192.94d → -204.94d |
| 3 | **Pools Shower-02** | 2026-05-27 → 2026-06-10 (+14d) | 2026-07-07 → 2026-07-21 (+14d) |  |
| CP09-TR4-HD-2240 | Plain Concrete Basin | 2026-05-27 → 2026-06-10 (+14d) | 2026-05-28 → 2026-06-11 (+14d) | -157.44d → -169.44d |
| CP09-TR4-HD-2250 | R.Concrete Basin | 2026-05-30 → 2026-06-13 (+14d) | 2026-06-02 → 2026-06-16 (+14d) | -157.44d → -169.44d |
| CP09-TR4-HD-2260 | Solid Block Work | 2026-06-02 → 2026-06-16 (+14d) | 2026-06-07 → 2026-06-21 (+14d) | -157.44d → -169.44d |
| CP09-TR4-HD-2270 | Water Proofing | 2026-06-07 → 2026-06-21 (+14d) | 2026-06-10 → 2026-06-24 (+14d) | -157.44d → -169.44d |
| CP09-TR4-HD-2280 | Backfilling | 2026-06-10 → 2026-06-24 (+14d) | 2026-06-14 → 2026-06-28 (+14d) | -157.44d → -169.44d |
| CP09-TR4-HD-2290 | Mica Stone Cladding | 2026-06-14 → 2026-06-28 (+14d) | 2026-06-17 → 2026-07-01 (+14d) | -157.44d → -169.44d |
| CP09-TR4-HD-2300 | Mica Stone Capping | 2026-06-17 → 2026-07-01 (+14d) | 2026-06-20 → 2026-07-04 (+14d) | -157.44d → -169.44d |
| CP09-TR4-HD-2310 | Drainage Cover with Geotextile | 2026-06-20 → 2026-07-04 (+14d) | 2026-06-22 → 2026-07-06 (+14d) | -157.44d → -169.44d |
| CP09-TR4-HD-2320 | Blast stone blocks for Flooring | 2026-06-22 → 2026-07-06 (+14d) | 2026-06-25 → 2026-07-09 (+14d) | -157.44d → -169.44d |
| CP09-TR4-HD-2330 | Blast Stone Blocks Capping | 2026-06-25 → 2026-07-09 (+14d) | 2026-06-29 → 2026-07-13 (+14d) | -157.44d → -169.44d |
| CP09-TR4-HD-2340 | Loose Rounded Pebbles | 2026-06-29 → 2026-07-13 (+14d) | 2026-07-04 → 2026-07-18 (+14d) | -157.44d → -169.44d |
| CP09-TR4-HD-2350 | Shower Head Fixation | 2026-07-04 → 2026-07-18 (+14d) | 2026-07-07 → 2026-07-21 (+14d) | -157.44d → -169.44d |
| 4 | **Handrails** | 2026-06-30 → 2026-07-14 (+14d) | 2026-07-06 → 2026-07-20 (+14d) |  |
| CP09-TR4-HD-2390 | Install & Fix Stainless Handrail (500 mm height) | 2026-06-30 → 2026-07-14 (+14d) | 2026-07-06 → 2026-07-20 (+14d) | -192.94d → -204.94d |
| CP09-TR4-HD-2400 | Install & Fix Glass Handrail (900mm height) | 2026-06-30 → 2026-07-14 (+14d) | 2026-07-06 → 2026-07-20 (+14d) | -192.94d → -204.94d |
| 7 | **Sinage** |  | 2026-06-03 → 2026-06-17 (+14d) |  |
| CP09-TR4-SN-2590 | UNIT ID SIGN (FRONT YARD) | 2026-05-24 → 2026-06-07 (+14d) | 2026-06-03 → 2026-06-17 (+14d) | -129d → -141d |
| CP09-TR4-SN-2600 | UNIT ID SIGN (BACK YARD) | 2026-05-24 → 2026-06-07 (+14d) | 2026-06-03 → 2026-06-17 (+14d) | -129d → -141d |
| 5 | **Landscape Furntiure** | 2026-07-06 → 2026-07-20 (+14d) | 2026-07-23 → 2026-08-06 (+14d) |  |
| CP09-TR4-FN-2410 | Install & Fix Pitch Pine Picnic Table | 2026-07-06 → 2026-07-20 (+14d) | 2026-07-23 → 2026-08-06 (+14d) | -171.94d → -183.94d |
| CP09-TR4-FN-2420 | Install & Fix Crcular Cast-iron tree grate | 2026-07-06 → 2026-07-20 (+14d) | 2026-07-23 → 2026-08-06 (+14d) | -171.94d → -183.94d |
| CP09-TR4-FN-2430 | Install & Fix Aluminium Cabana for Pool Shading | 2026-07-06 → 2026-07-20 (+14d) | 2026-07-18 → 2026-08-01 (+14d) | -170.94d → -182.94d |
| CP09-TR4-FN-2440 | Install & Fix Pitch Pine Benchs | 2026-07-06 → 2026-07-20 (+14d) | 2026-07-23 → 2026-08-06 (+14d) | -171.94d → -183.94d |
| CP09-TR4-FN-2450 | Install & Fix Polyester Hammocks | 2026-07-06 → 2026-07-20 (+14d) | 2026-07-23 → 2026-08-06 (+14d) | -171.94d → -183.94d |
| CP09-TR4-FN-2460 | Install & Fix Adult Play Swing | 2026-07-06 → 2026-07-20 (+14d) | 2026-07-23 → 2026-08-06 (+14d) | -171.94d → -183.94d |
| CP09-TR4-FN-2470 | Install & Fix Aluminum Trash Bin | 2026-07-06 → 2026-07-20 (+14d) | 2026-07-23 → 2026-08-06 (+14d) | -192.94d → -204.94d |
| CP09-TR4-FN-2480 | Install & Fix tensile Teflon Tent | 2026-07-06 → 2026-07-20 (+14d) | 2026-07-23 → 2026-08-06 (+14d) | -171.94d → -183.94d |
| CP09-TR4-FN-2490 | Lanscape Edging ( Rubber) | 2026-07-06 → 2026-07-20 (+14d) | 2026-07-20 → 2026-08-03 (+14d) | -168.94d → -180.94d |
| 10 | **Play Field Equipment** | 2026-07-23 → 2026-08-06 (+14d) | 2026-08-17 → 2026-08-31 (+14d) |  |
| CP09-TR4-PE-2500 | Fitness areas equipment | 2026-07-23 → 2026-08-06 (+14d) | 2026-08-17 → 2026-08-31 (+14d) | -192.94d → -204.94d |
| CP09-TR4-PE-2510 | Kids playground equipment | 2026-07-23 → 2026-08-06 (+14d) | 2026-08-17 → 2026-08-31 (+14d) | -192.94d → -204.94d |
| 11 | **Lighting for Softscape** | 2026-05-24 → 2026-06-07 (+14d) | 2026-07-25 → 2026-08-08 (+14d) |  |
| 1 | **Exterior Lighting** | 2026-05-24 → 2026-06-07 (+14d) | 2026-07-25 → 2026-08-08 (+14d) |  |
| CP09-TR4-SF-1250 | Install Landscape Lighting Pole | 2026-05-24 → 2026-06-07 (+14d) | 2026-06-16 → 2026-06-30 (+14d) | -162d → -174d |

| ID | Task | Start | Finish | Complete | Total float |
| --- | --- | --- | --- | --- | --- |
| CP09-TR4-SF-1290 | Install Projectors for Trees | 2026-06-28 → 2026-07-12 (+14d) | 2026-07-01 → 2026-07-15 (+14d) |  | -155d → -167d |
| CP09-TR4-SF-1260 | Install Bollard for Walkways | 2026-06-29 → 2026-07-13 (+14d) | 2026-07-11 → 2026-07-25 (+14d) |  | -172.75d → -184.75d |
| CP09-TR4-SF-1280 | Install Inground Uplight For Palms | 2026-06-29 → 2026-07-13 (+14d) | 2026-07-06 → 2026-07-20 (+14d) |  | -156.75d → -168.75d |
| CP09-TR4-SF-1270 | Install Diffused Wall Recessed Step | 2026-07-11 → 2026-07-25 (+14d) | 2026-07-25 → 2026-08-08 (+14d) |  | -172.75d → -184.75d |
| CP09-TR4-SF-1300 | Install Surface Mountaed Down Light for Pool Cabans | 2026-07-18 → 2026-08-01 (+14d) | 2026-07-22 → 2026-08-05 (+14d) |  | -170.94d → -182.94d |
| 2 | **Outlet Lighting Fixtures** | 2026-07-11 → 2026-07-25 (+14d) | 2026-07-16 → 2026-07-30 (+14d) |  |  |
| CP09-TR4-SF-1310 | Install outlet lighting fixtures | 2026-07-11 → 2026-07-25 (+14d) | 2026-07-16 → 2026-07-30 (+14d) |  | -165.75d → -177.75d |
| 2 | **Softscape** |  | 2026-06-08 → 2026-06-22 (+14d) |  |  |
| 1 | **Planting** |  | 2026-06-08 → 2026-06-22 (+14d) |  |  |
| CP09-TR4-SF-1160 | Sweet sand for all plants |  | 2026-06-06 → 2026-06-20 (+14d) |  | -131d → -143d |
| CP09-TR4-SF-1170 | Organic Manure |  | 2026-06-03 → 2026-06-17 (+14d) |  | -106d → -118d |
| CP09-TR4-SF-1180 | Large Trees |  | 2026-06-04 → 2026-06-18 (+14d) |  | -139d → -151d |
| CP09-TR4-SF-1190 | Shrubs |  | 2026-06-08 → 2026-06-22 (+14d) |  | -139d → -151d |
| CP09-TR4-SF-1200 | Ground Covers |  | 2026-06-08 → 2026-06-22 (+14d) |  | -139d → -151d |
| CP09-TR4-SF-1210 | Succulents |  | 2026-06-08 → 2026-06-22 (+14d) |  | -139d → -151d |
| CP09-TR4-SF-1220 | Vines & Climbers |  | 2026-06-08 → 2026-06-22 (+14d) |  | -139d → -151d |
| CP09-TR4-SF-1230 | Ornamental grass |  | 2026-06-08 → 2026-06-22 (+14d) |  | -139d → -151d |
| CP09-TR4-SF-1240 | Lawn |  | 2026-06-08 → 2026-06-22 (+14d) |  | -139d → -151d |
| 6 | **Terrace # 05** |  | 2026-08-17 → 2026-08-31 (+14d) |  |  |
| 8 | **Swimming Pool-SP03 & Mechnical Room-MR-03** |  | 2026-07-27 → 2026-08-10 (+14d) |  |  |
| 3 | **Finishing Works for Swimming Pool** | 2026-06-10 → 2026-06-24 (+14d) | 2026-07-11 → 2026-07-25 (+14d) |  |  |
| CP09-TR5-SW-1820 | Mosaics Tiles | 2026-06-10 → 2026-06-24 (+14d) | 2026-06-23 → 2026-07-07 (+14d) |  | -175.56d → -187.56d |
| CP09-TR5-SW-1830 | Granite for Pool Edg | 2026-06-23 → 2026-07-07 (+14d) | 2026-06-27 → 2026-07-11 (+14d) |  | -175.56d → -187.56d |
| CP09-TR5-SW-1840 | Garnite for Drinage Grate | 2026-06-23 → 2026-07-07 (+14d) | 2026-06-27 → 2026-07-11 (+14d) |  | -171.81d → -183.81d |
| CP09-TR5-SW-1850 | Granite for Pool Coping | 2026-06-28 → 2026-07-12 (+14d) | 2026-07-01 → 2026-07-15 (+14d) |  | -175.56d → -187.56d |
| CP09-TR5-SW-1860 | Stanless Steel Ladders | 2026-07-01 → 2026-07-15 (+14d) | 2026-07-05 → 2026-07-19 (+14d) |  | -175.56d → -187.56d |
| CP09-TR5-SW-1870 | Stanless Steel Handrial | 2026-07-05 → 2026-07-19 (+14d) | 2026-07-11 → 2026-07-25 (+14d) |  | -175.56d → -187.56d |
| 4 | **Machine Room_MR03** |  | 2026-06-14 → 2026-06-28 (+14d) |  |  |
| CP09-TR5-SW-2070 | Epoxy for flooring |  | 2026-05-26 → 2026-06-09 (+14d) |  | -137d → -149d |
| CP09-TR5-SW-2080 | Metal Works | 2026-05-24 → 2026-06-07 (+14d) | 2026-05-28 → 2026-06-11 (+14d) |  | -101d → -113d |
| CP09-TR5-SW-1970 | Drainage Gravel including Geotextile & Geocomposit | 2026-06-10 → 2026-06-24 (+14d) | 2026-06-14 → 2026-06-28 (+14d) |  | -114.75d → -126.75d |
| 2 | **MEP Works for Swimmimg Pool & Machine Room** |  | 2026-07-27 → 2026-08-10 (+14d) |  |  |
| 1 | **Mechnical Works** |  | 2026-07-14 → 2026-07-28 (+14d) |  |  |
| CP09-TR5-SW-1980 | UPVC pipes, fitting, valves, |  | 2026-06-09 → 2026-06-23 (+14d) |  | -179d → -191d |
| CP09-TR5-SW-1990 | Mechnical Equipment (Valves, Pumps, Filtters, Controllers ,Dosinng,& Ventilation exahust fan) | 2026-06-10 → 2026-06-24 (+14d) | 2026-07-14 → 2026-07-28 (+14d) |  | -179d → -191d |
| 2 | **Electrical Works-SW** | 2026-06-10 → 2026-06-24 (+14d) | 2026-07-27 → 2026-08-10 (+14d) |  |  |
| CP09-TR5-SW-2000 | Conduits, Cable tray | 2026-06-10 → 2026-06-24 (+14d) | 2026-06-16 → 2026-06-30 (+14d) |  | -189.06d → -201.06d |
| CP09-TR5-SW-2010 | Panel boards | 2026-06-16 → 2026-06-30 (+14d) | 2026-06-22 → 2026-07-06 (+14d) |  | -189.06d → -201.06d |
| CP09-TR5-SW-2020 | Power Cables & Wires | 2026-06-22 → 2026-07-06 (+14d) | 2026-07-04 → 2026-07-18 (+14d) |  | -189.06d → -201.06d |
| CP09-TR5-SW-2040 | Earthing System | 2026-06-22 → 2026-07-06 (+14d) | 2026-07-09 → 2026-07-23 (+14d) |  | -174.06d → -186.06d |
| CP09-TR5-SW-2030 | (Lighting Outlets , Switches, Fixture ) | 2026-07-04 → 2026-07-18 (+14d) | 2026-07-27 → 2026-08-10 (+14d) |  | -189.06d → -201.06d |
| 9 | **Retaining & Cheek Walls** |  | 2026-06-23 → 2026-07-07 (+14d) |  |  |
| 1 | **Soild Block Work Cheek Walls** |  | 2026-06-23 → 2026-07-07 (+14d) |  |  |
| CP09-TR5-RW-1540 | Marble Cladding | 2026-06-07 → 2026-06-21 (+14d) | 2026-06-17 → 2026-07-01 (+14d) |  | -157.94d → -169.94d |
| CP09-TR5-RW-1550 | Marble Copping | 2026-06-11 → 2026-06-25 (+14d) | 2026-06-23 → 2026-07-07 (+14d) |  | -157.94d → -169.94d |
| 2 | **Solid Block Retaining Walls** |  | 2026-06-21 → 2026-07-05 (+14d) |  |  |
| CP09-TR5-RW-1650 | Marble Cladding | 2026-06-07 → 2026-06-21 (+14d) | 2026-06-15 → 2026-06-29 (+14d) |  | -155.94d → -167.94d |
| CP09-TR5-RW-1660 | Marble Copping | 2026-06-11 → 2026-06-25 (+14d) | 2026-06-21 → 2026-07-05 (+14d) |  | -155.94d → -167.94d |
| 1 | **Irrigation Works** |  | 2026-06-16 → 2026-06-30 (+14d) |  |  |
| 1 | **Sub-Main & Lateral** |  | 2026-06-07 → 2026-06-21 (+14d) |  |  |
| CP09-TR5-IR-1240 | Sub-main & Lateral Pieps Testing |  | 2026-06-04 → 2026-06-18 (+14d) |  | -177.75d → -189.75d |
| CP09-TR5-IR-1250 | Backfilling forSub-main & Lateral Pieps |  | 2026-06-07 → 2026-06-21 (+14d) |  | -177.75d → -189.75d |
| CP09-TR5-IR-1220 | Excavation for Sub-main & Lateral Pieps |  | 2026-05-27 → 2026-06-10 (+14d) |  | -177.75d → -189.75d |
| CP09-TR5-IR-1230 | Sub-main & Lateral Pieps laying out and installation |  | 2026-06-02 → 2026-06-16 (+14d) |  | -177.75d → -189.75d |
| 2 | **Fittings & Accessories** | 2026-06-06 → 2026-06-20 (+14d) | 2026-06-16 → 2026-06-30 (+14d) |  |  |
| CP09-TR5-IR-1260 | Installation of Dripline | 2026-06-06 → 2026-06-20 (+14d) | 2026-06-16 → 2026-06-30 (+14d) |  | -141d → -153d |
| CP09-TR5-IR-1270 | Installation of Sprinklers | 2026-06-06 → 2026-06-20 (+14d) | 2026-06-14 → 2026-06-28 (+14d) |  | -141d → -153d |
| CP09-TR5-IR-1280 | Installation Valves & Rings | 2026-06-06 → 2026-06-20 (+14d) | 2026-06-09 → 2026-06-23 (+14d) |  | -141d → -153d |
| CP09-TR5-IR-1290 | Installation of Electrical solenoid valve | 2026-06-06 → 2026-06-20 (+14d) | 2026-06-11 → 2026-06-25 (+14d) |  | -141d → -153d |
| CP09-TR5-IR-1300 | Installation of Controller (decoder system plastic pedestal) | 2026-06-06 → 2026-06-20 (+14d) | 2026-06-11 → 2026-06-25 (+14d) |  | -141d → -153d |
| CP09-TR5-IR-1310 | Installation of Controller decoder cables | 2026-06-06 → 2026-06-20 (+14d) | 2026-06-11 → 2026-06-25 (+14d) |  | -141d → -153d |
| CP09-TR5-IR-1320 | Installation of Decoder one station | 2026-06-06 → 2026-06-20 (+14d) | 2026-06-10 → 2026-06-24 (+14d) |  | -140d → -152d |
| 4 | **Electrical Works** |  | 2026-07-14 → 2026-07-28 (+14d) |  |  |
| 1 | **Power Cable & Pillars** |  | 2026-07-14 → 2026-07-28 (+14d) |  |  |
| CP09-TR5-EL-1090 | Installation of Power Cables |  | 2026-05-31 → 2026-06-14 (+14d) | 75% → 85% | -193.81d → -205.81d |
| CP09-TR5-EL-1100 | Backfilling for Power Cables |  | 2026-06-02 → 2026-06-16 (+14d) | 75% → 85% | -193.81d → -205.81d |
| CP09-TR5-EL-1080 | Excavation |  | 2026-05-28 → 2026-06-11 (+14d) | 75% → 85% | -193.81d → -205.81d |
| CP09-TR5-EL-1110 | Installation of Connecting Pillars | 2026-06-28 → 2026-07-12 (+14d) | 2026-07-14 → 2026-07-28 (+14d) |  | -169d → -181d |
| 3 | **Hardscape** |  | 2026-08-17 → 2026-08-31 (+14d) |  |  |
| 1 | **Side wake & Plazes** |  | 2026-06-29 → 2026-07-13 (+14d) |  |  |

| ID | Task | Start | Finish | Complete | Total float |
| --- | --- | --- | --- | --- | --- |
| 2 | **Concrete in Situ** |  | 2026-06-03 → 2026-06-17 (+14d) |  |  |
| 1 | **Slab on Garde** |  | 2026-05-30 → 2026-06-13 (+14d) |  |  |
| CP09-TR5-HD-2680 | Plain Concrete with HDPE |  | 2026-05-27 → 2026-06-10 (+14d) |  | -99.75d → -111.75d |
| CP09-TR5-HD-2690 | Reinfored Concrete slab on grade |  | 2026-05-30 → 2026-06-13 (+14d) |  | -101.62d → -113.62d |
| CP09-TR5-HD-2700 | Waterproofing & Screed |  | 2026-05-27 → 2026-06-10 (+14d) |  | -99.75d → -111.75d |
| 2 | **Concrete In-situ w./Exposed Aggregate Finish** |  | 2026-06-03 → 2026-06-17 (+14d) |  |  |
| CP09-TR5-HD-2710 | Concrete casting (including Joints & Wire Mish) |  | 2026-06-03 → 2026-06-17 (+14d) |  | -105.38d → -117.38d |
| CP09-TR5-HD-2720 | Finishing Concrete Surface |  | 2026-05-28 → 2026-06-11 (+14d) |  | -154.75d → -166.75d |
| 3 | **Wooden Floor Boards** |  | 2026-06-04 → 2026-06-18 (+14d) |  |  |
| 1 | **Slab on Garde** |  | 2026-05-28 → 2026-06-11 (+14d) |  |  |
| CP09-TR5-HD-2740 | Reinfored Concrete slab on grade |  | 2026-05-28 → 2026-06-11 (+14d) |  | -169.75d → -181.75d |
| 2 | **Wood- Plastic Composit** | 2026-05-24 → 2026-06-07 (+14d) | 2026-06-04 → 2026-06-18 (+14d) |  |  |
| CP09-TR5-HD-2760 | WPC Installation | 2026-05-24 → 2026-06-07 (+14d) | 2026-05-31 → 2026-06-14 (+14d) |  | -156.31d → -168.31d |
| CP09-TR5-HD-2770 | WPC surface finishing & Accessories | 2026-05-31 → 2026-06-14 (+14d) | 2026-06-04 → 2026-06-18 (+14d) |  | -156.31d → -168.31d |
| 4 | **Gravel layer** | 2026-06-08 → 2026-06-22 (+14d) | 2026-06-22 → 2026-07-06 (+14d) |  |  |
| 1 | **Slab on Garde** | 2026-06-08 → 2026-06-22 (+14d) | 2026-06-14 → 2026-06-28 (+14d) |  |  |
| CP09-TR5-HD-2780 | Plain Concrete with HDPE | 2026-06-08 → 2026-06-22 (+14d) | 2026-06-10 → 2026-06-24 (+14d) |  | -177.75d → -189.75d |
| CP09-TR5-HD-2800 | Mortar bed | 2026-06-10 → 2026-06-24 (+14d) | 2026-06-14 → 2026-06-28 (+14d) |  | -177.75d → -189.75d |
| 2 | **Gravel Layer, w./Earth Colors** | 2026-06-14 → 2026-06-28 (+14d) | 2026-06-22 → 2026-07-06 (+14d) |  |  |
| CP09-TR5-HD-2810 | Furnish & install Garvel Layer | 2026-06-14 → 2026-06-28 (+14d) | 2026-06-22 → 2026-07-06 (+14d) |  | -177.75d → -189.75d |
| 5 | **Crushed Stone** | 2026-06-10 → 2026-06-24 (+14d) | 2026-06-29 → 2026-07-13 (+14d) |  |  |
| 1 | **Slab on Garde** | 2026-06-10 → 2026-06-24 (+14d) | 2026-06-17 → 2026-07-01 (+14d) |  |  |
| CP09-TR5-HD-2820 | Geotextile membrane | 2026-06-10 → 2026-06-24 (+14d) | 2026-06-14 → 2026-06-28 (+14d) |  | -171.19d → -183.19d |
| CP09-TR5-HD-2840 | Gravel fix sheets | 2026-06-14 → 2026-06-28 (+14d) | 2026-06-17 → 2026-07-01 (+14d) |  | -171.19d → -183.19d |
| 2 | **Crushed Dolomite Stone** | 2026-06-22 → 2026-07-06 (+14d) | 2026-06-29 → 2026-07-13 (+14d) |  |  |
| CP09-TR5-HD-2850 | Furnish & Install Crushed Dolomite stone , w./ mixed colors | 2026-06-22 → 2026-07-06 (+14d) | 2026-06-29 → 2026-07-13 (+14d) |  | -177.75d → -189.75d |
| 6 | **Loose Gravel** | 2026-06-10 → 2026-06-24 (+14d) | 2026-06-18 → 2026-07-02 (+14d) |  |  |
| 2 | **Loose Gravel 50mm** | 2026-06-10 → 2026-06-24 (+14d) | 2026-06-18 → 2026-07-02 (+14d) |  |  |
| CP09-TR5-HD-2860 | Furnish & Install loose gravel w./earth colors. | 2026-06-10 → 2026-06-24 (+14d) | 2026-06-18 → 2026-07-02 (+14d) |  | -168.38d → -180.38d |
| 7 | **Clean Sand Layer** |  | 2026-05-28 → 2026-06-11 (+14d) |  |  |
| 1 | **Kids & Fitness Area** |  | 2026-05-28 → 2026-06-11 (+14d) |  |  |
| CP09-TR5-HD-2870 | Geotextile Sheets |  | 2026-05-28 → 2026-06-11 (+14d) | 40% → 50% | -101d → -113d |
| CP09-TR5-HD-2880 | Install Clean sand layer |  | 2026-05-28 → 2026-06-11 (+14d) | 40% → 50% | -144d → -156d |
| 2 | **Site Improvments** |  | 2026-08-17 → 2026-08-31 (+14d) |  |  |
| 1 | **Marble Steps** |  | 2026-06-02 → 2026-06-16 (+14d) |  |  |
| CP09-TR5-HD-2950 | Reinforecd Concrete Step. |  | 2026-05-30 → 2026-06-13 (+14d) |  | -134.06d → -146.06d |
| CP09-TR5-HD-2960 | Install Marble Blocks |  | 2026-06-02 → 2026-06-16 (+14d) |  | -134.06d → -146.06d |
| CP09-TR5-HD-2970 | Finishing Marble Surface |  | 2026-05-28 → 2026-06-11 (+14d) |  | -125d → -137d |
| 2 | **Curvelinear Block Seat** |  | 2026-06-30 → 2026-07-14 (+14d) |  |  |
| CP09-TR5-HD-3040 | Marble Capping | 2026-06-23 → 2026-07-07 (+14d) | 2026-06-30 → 2026-07-14 (+14d) |  | -157.94d → -169.94d |
| 3 | **Pools Shower-03** | 2026-06-03 → 2026-06-17 (+14d) | 2026-08-17 → 2026-08-31 (+14d) |  |  |
| CP09-TR5-HD-3050 | Plain Concrete Basin | 2026-06-03 → 2026-06-17 (+14d) | 2026-06-08 → 2026-06-22 (+14d) |  | -193.81d → -205.81d |
| CP09-TR5-HD-3060 | R.Concrete Basin | 2026-06-09 → 2026-06-23 (+14d) | 2026-06-16 → 2026-06-30 (+14d) |  | -193.81d → -205.81d |
| CP09-TR5-HD-3070 | Solid Block Work | 2026-06-17 → 2026-07-01 (+14d) | 2026-06-24 → 2026-07-08 (+14d) |  | -193.81d → -205.81d |
| CP09-TR5-HD-3080 | Water Proofing | 2026-06-25 → 2026-07-09 (+14d) | 2026-06-30 → 2026-07-14 (+14d) |  | -193.81d → -205.81d |
| CP09-TR5-HD-3090 | Backfilling | 2026-07-01 → 2026-07-15 (+14d) | 2026-07-06 → 2026-07-20 (+14d) |  | -193.81d → -205.81d |
| CP09-TR5-HD-3100 | Mica Stone Cladding | 2026-07-07 → 2026-07-21 (+14d) | 2026-07-12 → 2026-07-26 (+14d) |  | -193.81d → -205.81d |
| CP09-TR5-HD-3110 | Mica Stone Capping | 2026-07-13 → 2026-07-27 (+14d) | 2026-07-18 → 2026-08-01 (+14d) |  | -193.81d → -205.81d |
| CP09-TR5-HD-3120 | Drainage Cover with Geotextile | 2026-07-19 → 2026-08-02 (+14d) | 2026-07-23 → 2026-08-06 (+14d) |  | -193.81d → -205.81d |
| CP09-TR5-HD-3130 | Blast stone blocks for Flooring | 2026-07-25 → 2026-08-08 (+14d) | 2026-07-30 → 2026-08-13 (+14d) |  | -193.81d → -205.81d |
| CP09-TR5-HD-3140 | Blast Stone Blocks Capping | 2026-08-01 → 2026-08-15 (+14d) | 2026-08-06 → 2026-08-20 (+14d) |  | -193.81d → -205.81d |
| CP09-TR5-HD-3150 | Loose Rounded Pebbles | 2026-08-08 → 2026-08-22 (+14d) | 2026-08-13 → 2026-08-27 (+14d) |  | -193.81d → -205.81d |
| CP09-TR5-HD-3160 | Shower Head Fixation | 2026-08-15 → 2026-08-29 (+14d) | 2026-08-17 → 2026-08-31 (+14d) |  | -193.81d → -205.81d |
| 4 | **Handrails** | 2026-06-30 → 2026-07-14 (+14d) | 2026-07-06 → 2026-07-20 (+14d) |  |  |
| CP09-TR5-HD-3200 | Install & Fix Stainless Handrail (500 mm height) | 2026-06-30 → 2026-07-14 (+14d) | 2026-07-06 → 2026-07-20 (+14d) |  | -157.94d → -169.94d |
| CP09-TR5-HD-3210 | Install & Fix Glass Handrail (900mm height) | 2026-06-30 → 2026-07-14 (+14d) | 2026-07-06 → 2026-07-20 (+14d) |  | -157.94d → -169.94d |
| 7 | **Sinage** |  | 2026-06-15 → 2026-06-29 (+14d) |  |  |
| CP09-TR5-SN-3380 | STREET DIRECTIONAL SIGN | 2026-05-24 → 2026-06-07 (+14d) | 2026-06-03 → 2026-06-17 (+14d) |  | -144d → -156d |
| CP09-TR5-SN-3390 | DIRECTIONAL SIGN FOR VEHICULAR | 2026-05-24 → 2026-06-07 (+14d) | 2026-06-03 → 2026-06-17 (+14d) |  | -144d → -156d |
| CP09-TR5-SN-3420 | RULES SIGN | 2026-05-24 → 2026-06-07 (+14d) | 2026-06-03 → 2026-06-17 (+14d) |  | -134d → -146d |
| CP09-TR5-SN-3400 | UNIT ID SIGN (FRONT YARD) | 2026-06-04 → 2026-06-18 (+14d) | 2026-06-15 → 2026-06-29 (+14d) |  | -144d → -156d |
| CP09-TR5-SN-3410 | UNIT ID SIGN (BACK YARD) | 2026-06-04 → 2026-06-18 (+14d) | 2026-06-15 → 2026-06-29 (+14d) |  | -144d → -156d |
| CP09-TR5-SN-3430 | IDENTIFICATION SIGN | 2026-06-04 → 2026-06-18 (+14d) | 2026-06-15 → 2026-06-29 (+14d) |  | -144d → -156d |
| 5 | **Landscape Furntiure** | 2026-06-29 → 2026-07-13 (+14d) | 2026-07-22 → 2026-08-05 (+14d) |  |  |
| CP09-TR5-FN-3220 | Install & Fix Pitch Pine Picnic Table | 2026-06-29 → 2026-07-13 (+14d) | 2026-07-16 → 2026-07-30 (+14d) |  | -170.75d → -182.75d |
| CP09-TR5-FN-3230 | Install & Fix Crcular Cast-iron tree grate | 2026-06-29 → 2026-07-13 (+14d) | 2026-07-16 → 2026-07-30 (+14d) |  | -170.75d → -182.75d |
| CP09-TR5-FN-3240 | Install & Fix Aluminium Cabana for Pool Shading | 2026-06-29 → 2026-07-13 (+14d) | 2026-07-13 → 2026-07-27 (+14d) |  | -177.75d → -189.75d |
| CP09-TR5-FN-3250 | Install & Fix Pitch Pine Benchs | 2026-06-29 → 2026-07-13 (+14d) | 2026-07-22 → 2026-08-05 (+14d) |  | -175.75d → -187.75d |
| CP09-TR5-FN-3260 | Install & Fix Polyester Hammocks | 2026-06-29 → 2026-07-13 (+14d) | 2026-07-16 → 2026-07-30 (+14d) |  | -170.75d → -182.75d |
| CP09-TR5-FN-3270 | Install & Fix Adult Play Swing | 2026-06-29 → 2026-07-13 (+14d) | 2026-07-16 → 2026-07-30 (+14d) |  | -170.75d → -182.75d |

| ID | Task | Start | Finish | Complete | Total float |
| --- | --- | --- | --- | --- | --- |
| CP09-TR5-FN-3280 | Install & Fix Aluminum Trash Bin | 2026-06-29 → 2026-07-13 (+14d) | 2026-07-22 → 2026-08-05 (+14d) |  | -175.75d → -187.75d |
| CP09-TR5-FN-3290 | Install & Fix tensile Teflon Tent | 2026-06-29 → 2026-07-13 (+14d) | 2026-07-22 → 2026-08-05 (+14d) |  | -175.75d → -187.75d |
| CP09-TR5-FN-3300 | Lanscape Edging ( Rubber) | 2026-06-29 → 2026-07-13 (+14d) | 2026-07-16 → 2026-07-30 (+14d) |  | -170.75d → -182.75d |
| 10 | **Play Field Equipment** | 2026-05-30 → 2026-06-13 (+14d) | 2026-07-22 → 2026-08-05 (+14d) |  |  |
| CP09-TR5-PE-3310 | Fitness areas equipment | 2026-05-30 → 2026-06-13 (+14d) | 2026-06-15 → 2026-06-29 (+14d) |  | -144d → -156d |
| CP09-TR5-PE-3320 | Kids playground equipment | 2026-07-05 → 2026-07-19 (+14d) | 2026-07-22 → 2026-08-05 (+14d) |  | -175.19d → -187.19d |
| 11 | **Lighting for Softscape** | 2026-06-01 → 2026-06-15 (+14d) | 2026-07-25 → 2026-08-08 (+14d) |  |  |
| 1 | **Exterior Lighting** | 2026-06-01 → 2026-06-15 (+14d) | 2026-07-25 → 2026-08-08 (+14d) |  |  |
| CP09-TR5-SF-1410 | Install Landscape Lighting Pole | 2026-06-01 → 2026-06-15 (+14d) | 2026-06-29 → 2026-07-13 (+14d) |  | -176d → -188d |
| CP09-TR5-SF-1420 | Install Bollard for Walkways | 2026-06-30 → 2026-07-14 (+14d) | 2026-07-11 → 2026-07-25 (+14d) |  | -176d → -188d |
| CP09-TR5-SF-1440 | Install Inground Uplight For Palms | 2026-07-05 → 2026-07-19 (+14d) | 2026-07-15 → 2026-07-29 (+14d) |  | -170d → -182d |
| CP09-TR5-SF-1450 | Install Projectors for Trees | 2026-07-05 → 2026-07-19 (+14d) | 2026-07-15 → 2026-07-29 (+14d) |  | -170d → -182d |
| CP09-TR5-SF-1430 | Install Diffused Wall Recessed Step | 2026-07-12 → 2026-07-26 (+14d) | 2026-07-22 → 2026-08-05 (+14d) |  | -176d → -188d |
| CP09-TR5-SF-1460 | Install Surface Mountaed Down Light for Pool Cabans | 2026-07-13 → 2026-07-27 (+14d) | 2026-07-25 → 2026-08-08 (+14d) |  | -177.75d → -189.75d |
| 2 | **Outlet Lighting Fixtures** | 2026-07-12 → 2026-07-26 (+14d) | 2026-07-16 → 2026-07-30 (+14d) |  |  |
| CP09-TR5-SF-1470 | Install outlet lighting fixtures | 2026-07-12 → 2026-07-26 (+14d) | 2026-07-16 → 2026-07-30 (+14d) |  | -171d → -183d |
| 2 | **Softscape** |  | 2026-07-04 → 2026-07-18 (+14d) |  |  |
| 1 | **Planting** |  | 2026-07-04 → 2026-07-18 (+14d) |  |  |
| CP09-TR5-SF-1330 | Organic Manure |  | 2026-06-03 → 2026-06-17 (+14d) |  | -154d → -166d |
| CP09-TR5-SF-1320 | Sweet sand for all plants |  | 2026-06-03 → 2026-06-17 (+14d) |  | -154d → -166d |
| CP09-TR5-SF-1350 | Shrubs |  | 2026-06-07 → 2026-06-21 (+14d) |  | -147d → -159d |
| CP09-TR5-SF-1340 | Large Trees |  | 2026-06-03 → 2026-06-17 (+14d) |  | -147d → -159d |
| CP09-TR5-SF-1360 | Ground Covers |  | 2026-06-07 → 2026-06-21 (+14d) |  | -147d → -159d |
| CP09-TR5-SF-1370 | Succulents | 2026-06-04 → 2026-06-18 (+14d) | 2026-06-15 → 2026-06-29 (+14d) |  | -154d → -166d |
| CP09-TR5-SF-1380 | Vines & Climbers | 2026-06-04 → 2026-06-18 (+14d) | 2026-06-15 → 2026-06-29 (+14d) |  | -154d → -166d |
| CP09-TR5-SF-1400 | Lawn | 2026-06-04 → 2026-06-18 (+14d) | 2026-06-15 → 2026-06-29 (+14d) |  | -154d → -166d |
| CP09-TR5-SF-1390 | Ornamental grass | 2026-06-23 → 2026-07-07 (+14d) | 2026-07-04 → 2026-07-18 (+14d) |  | -170d → -182d |
| 9 | **Terrace # 06** |  | 2026-08-23 → 2026-09-06 (+14d) |  |  |
| 8 | **Swimming Pool-SP04 & Mechnical Room-MR-04** |  | 2026-07-27 → 2026-08-10 (+14d) |  |  |
| 3 | **Finishing Works for Swimming Pool** | 2026-06-10 → 2026-06-24 (+14d) | 2026-07-11 → 2026-07-25 (+14d) |  |  |
| CP09-TR6-SW-2180 | Mosaics Tiles | 2026-06-10 → 2026-06-24 (+14d) | 2026-06-23 → 2026-07-07 (+14d) |  | -175.56d → -187.56d |
| CP09-TR6-SW-2190 | Granite for Pool Edg | 2026-06-23 → 2026-07-07 (+14d) | 2026-06-27 → 2026-07-11 (+14d) |  | -175.56d → -187.56d |
| CP09-TR6-SW-2200 | Garnite for Drinage Grate | 2026-06-23 → 2026-07-07 (+14d) | 2026-06-27 → 2026-07-11 (+14d) |  | -171.81d → -183.81d |
| CP09-TR6-SW-2210 | Granite for Pool Coping | 2026-06-28 → 2026-07-12 (+14d) | 2026-07-01 → 2026-07-15 (+14d) |  | -175.56d → -187.56d |
| CP09-TR6-SW-2220 | Stanless Steel Ladders | 2026-07-01 → 2026-07-15 (+14d) | 2026-07-05 → 2026-07-19 (+14d) |  | -175.56d → -187.56d |
| CP09-TR6-SW-2230 | Stanless Steel Handrial | 2026-07-05 → 2026-07-19 (+14d) | 2026-07-11 → 2026-07-25 (+14d) |  | -175.56d → -187.56d |
| 4 | **Machine Room_MR04** |  | 2026-06-14 → 2026-06-28 (+14d) |  |  |
| CP09-TR6-SW-2430 | Epoxy for flooring |  | 2026-05-26 → 2026-06-09 (+14d) |  | -137d → -149d |
| CP09-TR6-SW-2440 | Metal Works | 2026-05-24 → 2026-06-07 (+14d) | 2026-05-28 → 2026-06-11 (+14d) |  | -101d → -113d |
| CP09-TR6-SW-2330 | Drainage Gravel including Geotextile & Geocomposit | 2026-06-10 → 2026-06-24 (+14d) | 2026-06-14 → 2026-06-28 (+14d) |  | -114.75d → -126.75d |
| 2 | **MEP Works for Swimmimg Pool & Machine Room** |  | 2026-07-27 → 2026-08-10 (+14d) |  |  |
| 1 | **Mechnical Works** |  | 2026-07-14 → 2026-07-28 (+14d) |  |  |
| CP09-TR6-SW-2340 | UPVC pipes, fitting, valves, |  | 2026-06-09 → 2026-06-23 (+14d) |  | -179d → -191d |
| CP09-TR6-SW-2350 | Mechnical Equipment (Valves, Pumps, Filtters, Controllers ,Dosinng,& Ventilation exahust fan) | 2026-06-10 → 2026-06-24 (+14d) | 2026-07-14 → 2026-07-28 (+14d) |  | -179d → -191d |
| 2 | **Electrical Works-SW** | 2026-06-10 → 2026-06-24 (+14d) | 2026-07-27 → 2026-08-10 (+14d) |  |  |
| CP09-TR6-SW-2360 | Conduits, Cable tray | 2026-06-10 → 2026-06-24 (+14d) | 2026-06-16 → 2026-06-30 (+14d) |  | -189.06d → -201.06d |
| CP09-TR6-SW-2370 | Panel boards | 2026-06-16 → 2026-06-30 (+14d) | 2026-06-22 → 2026-07-06 (+14d) |  | -189.06d → -201.06d |
| CP09-TR6-SW-2380 | Power Cables & Wires | 2026-06-22 → 2026-07-06 (+14d) | 2026-07-04 → 2026-07-18 (+14d) |  | -189.06d → -201.06d |
| CP09-TR6-SW-2400 | Earthing System | 2026-06-22 → 2026-07-06 (+14d) | 2026-07-09 → 2026-07-23 (+14d) |  | -174.06d → -186.06d |
| CP09-TR6-SW-2390 | (Lighting Outlets , Switches, Fixture ) | 2026-07-04 → 2026-07-18 (+14d) | 2026-07-27 → 2026-08-10 (+14d) |  | -189.06d → -201.06d |
| 9 | **Retaining & Cheek Walls** |  | 2026-07-14 → 2026-07-28 (+14d) |  |  |
| 1 | **Soild Block Work Cheek Walls** |  | 2026-07-14 → 2026-07-28 (+14d) |  |  |
| CP09-TR6-RW-1690 | Reinforced Concrete for Tie beam |  | 2026-06-07 → 2026-06-21 (+14d) | 95% → 98% | -202.69d → -214.69d |
| CP09-TR6-RW-1700 | Reinforced Concrete for Column |  | 2026-06-09 → 2026-06-23 (+14d) | 95% → 98% | -202.69d → -214.69d |
| CP09-TR6-RW-1730 | Reinforced Concrete for Beam |  | 2026-06-21 → 2026-07-05 (+14d) | 95% → 98% | -202.69d → -214.69d |
| CP09-TR6-RW-1750 | Backfilling |  | 2026-07-02 → 2026-07-16 (+14d) | 95% → 98% | -202.69d → -214.69d |
| CP09-TR6-RW-1670 | Plaing Concrete with HPDE |  | 2026-05-31 → 2026-06-14 (+14d) | 95% → 98% | -202.69d → -214.69d |
| CP09-TR6-RW-1680 | Reinforced Concrete for Footing |  | 2026-06-03 → 2026-06-17 (+14d) | 95% → 98% | -202.69d → -214.69d |
| CP09-TR6-RW-1710 | Soild Block Work |  | 2026-06-16 → 2026-06-30 (+14d) | 95% → 98% | -202.69d → -214.69d |
| CP09-TR6-RW-1720 | Excavation |  | 2026-05-27 → 2026-06-10 (+14d) | 95% → 98% | -202.69d → -214.69d |
| CP09-TR6-RW-1740 | Waterproofing & Protection |  | 2026-06-29 → 2026-07-13 (+14d) | 95% → 98% | -202.69d → -214.69d |
| CP09-TR6-RW-1760 | Marble Cladding | 2026-06-28 → 2026-07-12 (+14d) | 2026-07-09 → 2026-07-23 (+14d) |  | -192.25d → -204.25d |
| CP09-TR6-RW-1770 | Marble Copping | 2026-07-04 → 2026-07-18 (+14d) | 2026-07-14 → 2026-07-28 (+14d) |  | -192.25d → -204.25d |
| 2 | **Solid Block Retaining Walls** |  | 2026-07-14 → 2026-07-28 (+14d) |  |  |
| CP09-TR6-RW-1780 | Plaing Concrete with HPDE |  | 2026-05-31 → 2026-06-14 (+14d) |  | -202.69d → -214.69d |
| CP09-TR6-RW-1790 | Reinforced Concrete for Footing |  | 2026-06-03 → 2026-06-17 (+14d) | 95% → 98% | -202.69d → -214.69d |
| CP09-TR6-RW-1810 | Reinforced Concrete for Column |  | 2026-06-09 → 2026-06-23 (+14d) | 95% → 98% | -202.69d → -214.69d |
| CP09-TR6-RW-1840 | Reinforced Concrete for Beam |  | 2026-06-21 → 2026-07-05 (+14d) | 95% → 98% | -202.69d → -214.69d |
| CP09-TR6-RW-1850 | Waterproofing & Protection |  | 2026-06-29 → 2026-07-13 (+14d) | 95% → 98% | -202.69d → -214.69d |
| CP09-TR6-RW-1800 | Reinforced Concrete for Tie beam |  | 2026-06-07 → 2026-06-21 (+14d) | 95% → 98% | -202.69d → -214.69d |

| ID | Task | Start | Finish | Complete | Total float |
| --- | --- | --- | --- | --- | --- |
| CP09-TR6-RW-1820 | Soild Block Work |  | 2026-06-16 → 2026-06-30 (+14d) | 95% → 98% | -202.69d → -214.69d |
| CP09-TR6-RW-1830 | Excavation |  | 2026-05-27 → 2026-06-10 (+14d) | 95% → 98% | -202.69d → -214.69d |
| CP09-TR6-RW-1860 | Backfilling |  | 2026-07-02 → 2026-07-16 (+14d) | 95% → 98% | -202.69d → -214.69d |
| CP09-TR6-RW-1870 | Marble Cladding | 2026-06-30 → 2026-07-14 (+14d) | 2026-07-08 → 2026-07-22 (+14d) |  | -191.31d → -203.31d |
| CP09-TR6-RW-1880 | Marble Copping | 2026-07-06 → 2026-07-20 (+14d) | 2026-07-14 → 2026-07-28 (+14d) |  | -191.31d → -203.31d |
| 1 | **Irrigation Works** |  | 2026-06-22 → 2026-07-06 (+14d) |  |  |
| 1 | **Sub-Main & Lateral** |  | 2026-06-07 → 2026-06-21 (+14d) |  |  |
| CP09-TR6-IR-1330 | Excavation for Sub-main & Lateral Pieps |  | 2026-05-27 → 2026-06-10 (+14d) |  | -173.56d → -185.56d |
| CP09-TR6-IR-1340 | Sub-main & Lateral Pieps laying out and installation |  | 2026-06-02 → 2026-06-16 (+14d) |  | -173.56d → -185.56d |
| CP09-TR6-IR-1360 | Backfilling forSub-main & Lateral Pieps |  | 2026-06-07 → 2026-06-21 (+14d) |  | -173.56d → -185.56d |
| CP09-TR6-IR-1350 | Sub-main & Lateral Pieps Testing |  | 2026-06-04 → 2026-06-18 (+14d) |  | -173.56d → -185.56d |
| 2 | **Fittings & Accessories** | 2026-06-06 → 2026-06-20 (+14d) | 2026-06-22 → 2026-07-06 (+14d) |  |  |
| CP09-TR6-IR-1370 | Installation of Dripline | 2026-06-06 → 2026-06-20 (+14d) | 2026-06-10 → 2026-06-24 (+14d) |  | -168d → -180d |
| CP09-TR6-IR-1380 | Installation of Sprinklers | 2026-06-06 → 2026-06-20 (+14d) | 2026-06-10 → 2026-06-24 (+14d) |  | -168d → -180d |
| CP09-TR6-IR-1390 | Installation Valves & Rings | 2026-06-11 → 2026-06-25 (+14d) | 2026-06-16 → 2026-06-30 (+14d) |  | -168d → -180d |
| CP09-TR6-IR-1400 | Installation of Electrical solenoid valve | 2026-06-11 → 2026-06-25 (+14d) | 2026-06-16 → 2026-06-30 (+14d) |  | -163d → -175d |
| CP09-TR6-IR-1410 | Installation of Controller (decoder system plastic pedestal) | 2026-06-17 → 2026-07-01 (+14d) | 2026-06-22 → 2026-07-06 (+14d) |  | -168d → -180d |
| CP09-TR6-IR-1420 | Installation of Controller decoder cables | 2026-06-17 → 2026-07-01 (+14d) | 2026-06-22 → 2026-07-06 (+14d) |  | -168d → -180d |
| CP09-TR6-IR-1430 | Installation of Decoder one station | 2026-06-17 → 2026-07-01 (+14d) | 2026-06-22 → 2026-07-06 (+14d) |  | -168d → -180d |
| 4 | **Electrical Works** |  | 2026-06-30 → 2026-07-14 (+14d) |  |  |
| 1 | **Power Cable & Pillars** |  | 2026-06-30 → 2026-07-14 (+14d) |  |  |
| CP09-TR6-EL-1120 | Excavation |  | 2026-05-28 → 2026-06-11 (+14d) |  | -193.81d → -205.81d |
| CP09-TR6-EL-1130 | Installation of Power Cables |  | 2026-05-31 → 2026-06-14 (+14d) |  | -193.81d → -205.81d |
| CP09-TR6-EL-1140 | Backfilling for Power Cables |  | 2026-06-02 → 2026-06-16 (+14d) |  | -193.81d → -205.81d |
| CP09-TR6-EL-1150 | Installation of Connecting Pillars | 2026-06-28 → 2026-07-12 (+14d) | 2026-06-30 → 2026-07-14 (+14d) |  | -157d → -169d |
| 3 | **Hardscape** |  | 2026-08-17 → 2026-08-31 (+14d) |  |  |
| 6 | **Concrete Curb** |  | 2026-05-26 → 2026-06-09 (+14d) |  |  |
| CP09-TR6-HD-4000 | Instal Flush Curb | 2026-05-24 → 2026-06-07 (+14d) | 2026-05-26 → 2026-06-09 (+14d) |  | -187.81d → -199.81d |
| 1 | **Side wake & Plazes** |  | 2026-07-02 → 2026-07-16 (+14d) |  |  |
| 8 | **Interlocking Paving** |  | 2026-06-09 → 2026-06-23 (+14d) |  |  |
| CP09-TR6-HD-3720 | Crush Stone for Interlock Types IL-(01,02,06,07) |  | 2026-05-31 → 2026-06-14 (+14d) |  | -182.38d → -194.38d |
| CP09-TR6-HD-3730 | Sand Layer for Interlock Types IL-(01,02,06,07) |  | 2026-06-06 → 2026-06-20 (+14d) |  | -182.38d → -194.38d |
| CP09-TR6-HD-3740 | Motar Bed Interlock Types IL-(03,04,08,09,10) |  | 2026-06-03 → 2026-06-17 (+14d) |  | -180.81d → -192.81d |
| CP09-TR6-HD-3750 | Interlocking Paving |  | 2026-06-09 → 2026-06-23 (+14d) |  | -183d → -195d |
| 2 | **Concrete in Situ** |  | 2026-06-03 → 2026-06-17 (+14d) |  |  |
| 1 | **Slab on Garde** |  | 2026-05-30 → 2026-06-13 (+14d) |  |  |
| CP09-TR6-HD-3490 | Plain Concrete with HDPE |  | 2026-05-27 → 2026-06-10 (+14d) |  | -99.75d → -111.75d |
| CP09-TR6-HD-3500 | Reinfored Concrete slab on grade |  | 2026-05-30 → 2026-06-13 (+14d) |  | -101.62d → -113.62d |
| CP09-TR6-HD-3510 | Waterproofing & Screed |  | 2026-05-27 → 2026-06-10 (+14d) |  | -99.75d → -111.75d |
| 2 | **Concrete In-situ w./Exposed Aggregate Finish** |  | 2026-06-03 → 2026-06-17 (+14d) |  |  |
| CP09-TR6-HD-3520 | Concrete casting (including Joints & Wire Mish) |  | 2026-06-03 → 2026-06-17 (+14d) |  | -105.38d → -117.38d |
| CP09-TR6-HD-3530 | Finishing Concrete Surface |  | 2026-05-28 → 2026-06-11 (+14d) |  | -147.75d → -159.75d |
| 1 | **Marble Paving** |  | 2026-05-31 → 2026-06-14 (+14d) |  |  |
| 1 | **Slab on Garde** |  | 2026-05-30 → 2026-06-13 (+14d) |  |  |
| CP09-TR6-HD-3440 | Plain Concrete with HDPE |  | 2026-05-27 → 2026-06-10 (+14d) |  | -99.75d → -111.75d |
| CP09-TR6-HD-3450 | Reinfored Concrete slab on grade |  | 2026-05-30 → 2026-06-13 (+14d) |  | -101.62d → -113.62d |
| CP09-TR6-HD-3460 | Waterproofing & Screed |  | 2026-05-28 → 2026-06-11 (+14d) |  | -101d → -113d |
| 2 | **Marble Tiles** |  | 2026-05-31 → 2026-06-14 (+14d) |  |  |
| CP09-TR6-HD-3470 | Marble Fixiation |  | 2026-05-31 → 2026-06-14 (+14d) |  | -103d → -115d |
| CP09-TR6-HD-3480 | Marble Surfcae Finishing |  | 2026-05-27 → 2026-06-10 (+14d) |  | -146.75d → -158.75d |
| 3 | **Wooden Floor Boards** | 2026-06-08 → 2026-06-22 (+14d) | 2026-07-01 → 2026-07-15 (+14d) |  |  |
| 1 | **Slab on Garde** | 2026-06-08 → 2026-06-22 (+14d) | 2026-06-20 → 2026-07-04 (+14d) |  |  |
| CP09-TR6-HD-3540 | Plain Concrete with HDPE | 2026-06-08 → 2026-06-22 (+14d) | 2026-06-10 → 2026-06-24 (+14d) |  | -172.94d → -184.94d |
| CP09-TR6-HD-3550 | Reinfored Concrete slab on grade | 2026-06-10 → 2026-06-24 (+14d) | 2026-06-16 → 2026-06-30 (+14d) |  | -172.94d → -184.94d |
| CP09-TR6-HD-3560 | Waterproofing & Screed | 2026-06-16 → 2026-06-30 (+14d) | 2026-06-20 → 2026-07-04 (+14d) |  | -172.94d → -184.94d |
| 2 | **Wood- Plastic Composit** | 2026-06-20 → 2026-07-04 (+14d) | 2026-07-01 → 2026-07-15 (+14d) |  |  |
| CP09-TR6-HD-3570 | WPC Installation | 2026-06-20 → 2026-07-04 (+14d) | 2026-06-28 → 2026-07-12 (+14d) |  | -172.94d → -184.94d |
| CP09-TR6-HD-3580 | WPC surface finishing & Accessories | 2026-06-28 → 2026-07-12 (+14d) | 2026-07-01 → 2026-07-15 (+14d) |  | -172.94d → -184.94d |
| 4 | **Gravel layer** | 2026-06-08 → 2026-06-22 (+14d) | 2026-06-22 → 2026-07-06 (+14d) |  |  |
| 1 | **Slab on Garde** | 2026-06-08 → 2026-06-22 (+14d) | 2026-06-14 → 2026-06-28 (+14d) |  |  |
| CP09-TR6-HD-3590 | Plain Concrete with HDPE | 2026-06-08 → 2026-06-22 (+14d) | 2026-06-10 → 2026-06-24 (+14d) |  | -173.56d → -185.56d |
| CP09-TR6-HD-3610 | Mortar bed | 2026-06-10 → 2026-06-24 (+14d) | 2026-06-14 → 2026-06-28 (+14d) |  | -173.56d → -185.56d |
| 2 | **Gravel Layer, w./Earth Colors** | 2026-06-14 → 2026-06-28 (+14d) | 2026-06-22 → 2026-07-06 (+14d) |  |  |
| CP09-TR6-HD-3620 | Furnish & install Garvel Layer | 2026-06-14 → 2026-06-28 (+14d) | 2026-06-22 → 2026-07-06 (+14d) |  | -173.56d → -185.56d |
| 5 | **Crushed Stone** | 2026-06-22 → 2026-07-06 (+14d) | 2026-07-02 → 2026-07-16 (+14d) |  |  |
| 1 | **Slab on Garde** | 2026-06-22 → 2026-07-06 (+14d) | 2026-06-28 → 2026-07-12 (+14d) |  |  |
| CP09-TR6-HD-3630 | Geotextile membrane | 2026-06-22 → 2026-07-06 (+14d) | 2026-06-24 → 2026-07-08 (+14d) |  | -173.56d → -185.56d |
| CP09-TR6-HD-3650 | Gravel fix sheets | 2026-06-25 → 2026-07-09 (+14d) | 2026-06-28 → 2026-07-12 (+14d) |  | -173.56d → -185.56d |
| 2 | **Crushed Dolomite Stone** | 2026-06-25 → 2026-07-09 (+14d) | 2026-07-02 → 2026-07-16 (+14d) |  |  |
| CP09-TR6-HD-3660 | Furnish & Install Crushed Dolomite stone , w./ mixed colors | 2026-06-25 → 2026-07-09 (+14d) | 2026-07-02 → 2026-07-16 (+14d) |  | -173.56d → -185.56d |

| ID | Task | Start | Finish | Total float |
| --- | --- | --- | --- | --- |
| 6 | **Loose Gravel** | 2026-06-10 → 2026-06-24 (+14d) | 2026-06-18 → 2026-07-02 (+14d) |  |
| 2 | **Loose Gravel 50mm** | 2026-06-10 → 2026-06-24 (+14d) | 2026-06-18 → 2026-07-02 (+14d) |  |
| CP09-TR6-HD-3670 | Furnish & Install loose gravel w./earth colors. | 2026-06-10 → 2026-06-24 (+14d) | 2026-06-18 → 2026-07-02 (+14d) | -161.38d → -173.38d |
| 7 | **Clean Sand Layer** |  | 2026-05-28 → 2026-06-11 (+14d) |  |
| 1 | **Kids & Fitness Area** |  | 2026-05-28 → 2026-06-11 (+14d) |  |
| CP09-TR6-HD-3680 | Geotextile Sheets |  | 2026-05-28 → 2026-06-11 (+14d) | -101d → -113d |
| CP09-TR6-HD-3690 | Install Clean sand layer |  | 2026-05-28 → 2026-06-11 (+14d) | -139d → -151d |
| 2 | **Site Improvments** |  | 2026-08-17 → 2026-08-31 (+14d) |  |
| 1 | **Marble Steps** |  | 2026-07-20 → 2026-08-03 (+14d) |  |
| CP09-TR6-HD-3760 | Reinforecd Concrete Step. |  | 2026-05-30 → 2026-06-13 (+14d) | -150.06d → -162.06d |
| CP09-TR6-HD-3770 | Install Marble Blocks | 2026-05-25 → 2026-06-08 (+14d) | 2026-06-02 → 2026-06-16 (+14d) | -150.06d → -162.06d |
| CP09-TR6-HD-3780 | Finishing Marble Surface | 2026-07-15 → 2026-07-29 (+14d) | 2026-07-20 → 2026-08-03 (+14d) | -170d → -182d |
| 2 | **Curvelinear Block Seat** |  | 2026-07-21 → 2026-08-04 (+14d) |  |
| CP09-TR6-HD-3850 | Marble Capping | 2026-07-15 → 2026-07-29 (+14d) | 2026-07-21 → 2026-08-04 (+14d) | -192.25d → -204.25d |
| 3 | **Pools Shower-04** | 2026-06-03 → 2026-06-17 (+14d) | 2026-08-17 → 2026-08-31 (+14d) |  |
| CP09-TR6-HD-3860 | Plain Concrete Basin | 2026-06-03 → 2026-06-17 (+14d) | 2026-06-08 → 2026-06-22 (+14d) | -193.81d → -205.81d |
| CP09-TR6-HD-3870 | R.Concrete Basin | 2026-06-09 → 2026-06-23 (+14d) | 2026-06-16 → 2026-06-30 (+14d) | -193.81d → -205.81d |
| CP09-TR6-HD-3880 | Solid Block Work | 2026-06-17 → 2026-07-01 (+14d) | 2026-06-24 → 2026-07-08 (+14d) | -193.81d → -205.81d |
| CP09-TR6-HD-3890 | Water Proofing | 2026-06-25 → 2026-07-09 (+14d) | 2026-06-30 → 2026-07-14 (+14d) | -193.81d → -205.81d |
| CP09-TR6-HD-3900 | Backfilling | 2026-07-01 → 2026-07-15 (+14d) | 2026-07-06 → 2026-07-20 (+14d) | -193.81d → -205.81d |
| CP09-TR6-HD-3910 | Mica Stone Cladding | 2026-07-07 → 2026-07-21 (+14d) | 2026-07-12 → 2026-07-26 (+14d) | -193.81d → -205.81d |
| CP09-TR6-HD-3920 | Mica Stone Capping | 2026-07-13 → 2026-07-27 (+14d) | 2026-07-18 → 2026-08-01 (+14d) | -193.81d → -205.81d |
| CP09-TR6-HD-3930 | Drainage Cover with Geotextile | 2026-07-19 → 2026-08-02 (+14d) | 2026-07-23 → 2026-08-06 (+14d) | -193.81d → -205.81d |
| CP09-TR6-HD-3940 | Blast stone blocks for Flooring | 2026-07-25 → 2026-08-08 (+14d) | 2026-07-30 → 2026-08-13 (+14d) | -193.81d → -205.81d |
| CP09-TR6-HD-3950 | Blast Stone Blocks Capping | 2026-08-01 → 2026-08-15 (+14d) | 2026-08-06 → 2026-08-20 (+14d) | -193.81d → -205.81d |
| CP09-TR6-HD-3960 | Loose Rounded Pebbles | 2026-08-08 → 2026-08-22 (+14d) | 2026-08-13 → 2026-08-27 (+14d) | -193.81d → -205.81d |
| CP09-TR6-HD-3970 | Shower Head Fixation | 2026-08-15 → 2026-08-29 (+14d) | 2026-08-17 → 2026-08-31 (+14d) | -193.81d → -205.81d |
| 4 | **Handrails** | 2026-07-21 → 2026-08-04 (+14d) | 2026-07-28 → 2026-08-11 (+14d) |  |
| CP09-TR6-HD-4010 | Install & Fix Stainless Handrail (500 mm height) | 2026-07-21 → 2026-08-04 (+14d) | 2026-07-28 → 2026-08-11 (+14d) | -192.25d → -204.25d |
| CP09-TR6-HD-4020 | Install & Fix Glass Handrail (900mm height) | 2026-07-21 → 2026-08-04 (+14d) | 2026-07-28 → 2026-08-11 (+14d) | -192.25d → -204.25d |
| 11 | **Sinage** | 2026-07-02 → 2026-07-16 (+14d) | 2026-08-23 → 2026-09-06 (+14d) |  |
| CP09-TR6-SN-4140 | Excavation | 2026-07-02 → 2026-07-16 (+14d) | 2026-07-14 → 2026-07-28 (+14d) | -202.69d → -214.69d |
| CP09-TR6-SN-4150 | Plain Concrete with HDPE | 2026-07-08 → 2026-07-22 (+14d) | 2026-07-16 → 2026-07-30 (+14d) | -202.69d → -214.69d |
| CP09-TR6-SN-4160 | Reinforced Concrete | 2026-07-11 → 2026-07-25 (+14d) | 2026-07-25 → 2026-08-08 (+14d) | -202.69d → -214.69d |
| CP09-TR6-SN-4170 | Waterproofing | 2026-07-22 → 2026-08-05 (+14d) | 2026-07-28 → 2026-08-11 (+14d) | -202.69d → -214.69d |
| CP09-TR6-SN-4180 | Grouting | 2026-07-25 → 2026-08-08 (+14d) | 2026-07-30 → 2026-08-13 (+14d) | -202.69d → -214.69d |
| CP09-TR6-SN-4190 | STREET DIRECTIONAL SIGN | 2026-07-30 → 2026-08-13 (+14d) | 2026-08-11 → 2026-08-25 (+14d) | -202.69d → -214.69d |
| CP09-TR6-SN-4200 | DIRECTIONAL SIGN FOR VEHICULAR | 2026-07-30 → 2026-08-13 (+14d) | 2026-08-11 → 2026-08-25 (+14d) | -202.69d → -214.69d |
| CP09-TR6-SN-4230 | RULES SIGN | 2026-07-30 → 2026-08-13 (+14d) | 2026-08-11 → 2026-08-25 (+14d) | -202.69d → -214.69d |
| CP09-TR6-SN-4210 | UNIT ID SIGN (FRONT YARD) | 2026-08-11 → 2026-08-25 (+14d) | 2026-08-23 → 2026-09-06 (+14d) | -202.69d → -214.69d |
| CP09-TR6-SN-4220 | UNIT ID SIGN (BACK YARD) | 2026-08-11 → 2026-08-25 (+14d) | 2026-08-23 → 2026-09-06 (+14d) | -202.69d → -214.69d |
| CP09-TR6-SN-4240 | IDENTIFICATION SIGN | 2026-08-11 → 2026-08-25 (+14d) | 2026-08-23 → 2026-09-06 (+14d) | -202.69d → -214.69d |
| 7 | **Landscape Furntiure** | 2026-07-28 → 2026-08-11 (+14d) | 2026-08-03 → 2026-08-17 (+14d) |  |
| CP09-TR6-FN-4030 | Install & Fix Pitch Pine Picnic Table | 2026-07-28 → 2026-08-11 (+14d) | 2026-08-03 → 2026-08-17 (+14d) | -185.25d → -197.25d |
| CP09-TR6-FN-4040 | Install & Fix Crcular Cast-iron tree grate | 2026-07-28 → 2026-08-11 (+14d) | 2026-08-03 → 2026-08-17 (+14d) | -185.25d → -197.25d |
| CP09-TR6-FN-4050 | Install & Fix Aluminium Cabana for Pool Shading | 2026-07-28 → 2026-08-11 (+14d) | 2026-08-03 → 2026-08-17 (+14d) | -192.25d → -204.25d |
| CP09-TR6-FN-4060 | Install & Fix Pitch Pine Benchs | 2026-07-28 → 2026-08-11 (+14d) | 2026-08-03 → 2026-08-17 (+14d) | -185.25d → -197.25d |
| CP09-TR6-FN-4070 | Install & Fix Polyester Hammocks | 2026-07-28 → 2026-08-11 (+14d) | 2026-08-03 → 2026-08-17 (+14d) | -185.25d → -197.25d |
| CP09-TR6-FN-4080 | Install & Fix Adult Play Swing | 2026-07-28 → 2026-08-11 (+14d) | 2026-08-03 → 2026-08-17 (+14d) | -185.25d → -197.25d |
| CP09-TR6-FN-4090 | Install & Fix Aluminum Trash Bin | 2026-07-28 → 2026-08-11 (+14d) | 2026-08-03 → 2026-08-17 (+14d) | -185.25d → -197.25d |
| CP09-TR6-FN-4100 | Install & Fix tensile Teflon Tent | 2026-07-28 → 2026-08-11 (+14d) | 2026-08-03 → 2026-08-17 (+14d) | -185.25d → -197.25d |
| CP09-TR6-FN-4110 | Lanscape Edging ( Rubber) | 2026-07-28 → 2026-08-11 (+14d) | 2026-08-03 → 2026-08-17 (+14d) | -185.25d → -197.25d |
| 10 | **Play Field Equipment** |  | 2026-06-09 → 2026-06-23 (+14d) |  |
| CP09-TR6-PE-4130 | Kids playground equipment |  | 2026-06-03 → 2026-06-17 (+14d) | -134d → -146d |
| CP09-TR6-PE-4120 | Fitness areas equipment | 2026-05-30 → 2026-06-13 (+14d) | 2026-06-09 → 2026-06-23 (+14d) | -139d → -151d |
| 5 | **Lighting for Softscape** | 2026-06-10 → 2026-06-24 (+14d) | 2026-08-11 → 2026-08-25 (+14d) |  |
| 1 | **Exterior Lighting** | 2026-06-10 → 2026-06-24 (+14d) | 2026-08-11 → 2026-08-25 (+14d) |  |
| CP09-TR6-SF-1570 | Install Landscape Lighting Pole | 2026-06-10 → 2026-06-24 (+14d) | 2026-06-25 → 2026-07-09 (+14d) | -168d → -180d |
| CP09-TR6-SF-1580 | Install Bollard for Walkways | 2026-07-02 → 2026-07-16 (+14d) | 2026-07-14 → 2026-07-28 (+14d) | -173.56d → -185.56d |
| CP09-TR6-SF-1600 | Install Inground Uplight For Palms | 2026-07-06 → 2026-07-20 (+14d) | 2026-07-13 → 2026-07-27 (+14d) | -168d → -180d |
| CP09-TR6-SF-1610 | Install Projectors for Trees | 2026-07-06 → 2026-07-20 (+14d) | 2026-07-13 → 2026-07-27 (+14d) | -168d → -180d |
| CP09-TR6-SF-1590 | Install Diffused Wall Recessed Step | 2026-07-06 → 2026-07-20 (+14d) | 2026-07-18 → 2026-08-01 (+14d) | -171.56d → -183.56d |
| CP09-TR6-SF-1620 | Install Surface Mountaed Down Light for Pool Cabans | 2026-08-03 → 2026-08-17 (+14d) | 2026-08-11 → 2026-08-25 (+14d) | -192.25d → -204.25d |
| 2 | **Outlet Lighting Fixtures** | 2026-07-14 → 2026-07-28 (+14d) | 2026-07-20 → 2026-08-03 (+14d) |  |
| CP09-TR6-SF-1630 | Install outlet lighting fixtures | 2026-07-14 → 2026-07-28 (+14d) | 2026-07-20 → 2026-08-03 (+14d) | -173.56d → -185.56d |
| 2 | **Softscape** |  | 2026-07-05 → 2026-07-19 (+14d) |  |
| 1 | **Planting** |  | 2026-07-05 → 2026-07-19 (+14d) |  |
| CP09-TR6-SF-1480 | Sweet sand for all plants |  | 2026-06-03 → 2026-06-17 (+14d) | -167d → -179d |
| CP09-TR6-SF-1490 | Organic Manure |  | 2026-06-03 → 2026-06-17 (+14d) | -157d → -169d |
| CP09-TR6-SF-1500 | Large Trees | 2026-06-23 → 2026-07-07 (+14d) | 2026-07-01 → 2026-07-15 (+14d) | -168d → -180d |

| ID | Task | Start | Finish | Total float |
| --- | --- | --- | --- | --- |
| CP09-TR6-SF-1510 | Shrubs | 2026-06-28 → 2026-07-12 (+14d) | 2026-07-05 → 2026-07-19 (+14d) | -168d → -180d |
| CP09-TR6-SF-1520 | Ground Covers | 2026-06-28 → 2026-07-12 (+14d) | 2026-07-05 → 2026-07-19 (+14d) | -168d → -180d |
| CP09-TR6-SF-1530 | Succulents | 2026-06-29 → 2026-07-13 (+14d) | 2026-07-05 → 2026-07-19 (+14d) | -168d → -180d |
| CP09-TR6-SF-1540 | Vines & Climbers | 2026-06-29 → 2026-07-13 (+14d) | 2026-07-05 → 2026-07-19 (+14d) | -168d → -180d |
| CP09-TR6-SF-1550 | Ornamental grass | 2026-06-29 → 2026-07-13 (+14d) | 2026-07-05 → 2026-07-19 (+14d) | -168d → -180d |
| CP09-TR6-SF-1560 | Lawn | 2026-06-29 → 2026-07-13 (+14d) | 2026-07-05 → 2026-07-19 (+14d) | -168d → -180d |
| 11 | **Terrace # 07** |  | 2026-09-29 → 2026-10-13 (+14d) |  |
| 8 | **Swimming Pool-SP05 & Mechnical Room-MR-05** |  | 2026-08-29 → 2026-09-12 (+14d) |  |
| 1 | **Structure Works for Swimming Pool** |  | 2026-06-10 → 2026-06-24 (+14d) |  |
| CP09-TR7-SW-2510 | External Waterproofing for Walls | 2026-05-24 → 2026-06-07 (+14d) | 2026-05-28 → 2026-06-11 (+14d) | -160.19d → -172.19d |
| CP09-TR7-SW-2520 | Protection Block Works | 2026-05-30 → 2026-06-13 (+14d) | 2026-06-03 → 2026-06-17 (+14d) | -160.19d → -172.19d |
| CP09-TR7-SW-2530 | Backfilling | 2026-06-04 → 2026-06-18 (+14d) | 2026-06-10 → 2026-06-24 (+14d) | -160.19d → -172.19d |
| 3 | **Finishing Works for Swimming Pool** | 2026-06-10 → 2026-06-24 (+14d) | 2026-07-12 → 2026-07-26 (+14d) |  |
| CP09-TR7-SW-2540 | Mosaics Tiles | 2026-06-10 → 2026-06-24 (+14d) | 2026-06-23 → 2026-07-07 (+14d) | -160.19d → -172.19d |
| CP09-TR7-SW-2550 | Granite for Pool Edg | 2026-06-23 → 2026-07-07 (+14d) | 2026-06-28 → 2026-07-12 (+14d) | -160.19d → -172.19d |
| CP09-TR7-SW-2560 | Garnite for Drinage Grate | 2026-06-23 → 2026-07-07 (+14d) | 2026-06-28 → 2026-07-12 (+14d) | -156.44d → -168.44d |
| CP09-TR7-SW-2570 | Granite for Pool Coping | 2026-06-28 → 2026-07-12 (+14d) | 2026-07-02 → 2026-07-16 (+14d) | -160.19d → -172.19d |
| CP09-TR7-SW-2580 | Stanless Steel Ladders | 2026-07-02 → 2026-07-16 (+14d) | 2026-07-06 → 2026-07-20 (+14d) | -160.19d → -172.19d |
| CP09-TR7-SW-2590 | Stanless Steel Handrial | 2026-07-06 → 2026-07-20 (+14d) | 2026-07-12 → 2026-07-26 (+14d) | -160.19d → -172.19d |
| 4 | **Machine Room_MR05** |  | 2026-08-29 → 2026-09-12 (+14d) |  |
| CP09-TR7-SW-2670 | External Waterproofing with Protection |  | 2026-05-28 → 2026-06-11 (+14d) | -154.56d → -166.56d |
| CP09-TR7-SW-2800 | Metal Works | 2026-05-24 → 2026-06-07 (+14d) | 2026-05-28 → 2026-06-11 (+14d) | -126d → -138d |
| CP09-TR7-SW-2680 | Backfilling | 2026-05-30 → 2026-06-13 (+14d) | 2026-06-03 → 2026-06-17 (+14d) | -154.56d → -166.56d |
| CP09-TR7-SW-2690 | Drainage Gravel including Geotextile & Geocomposit | 2026-06-10 → 2026-06-24 (+14d) | 2026-06-14 → 2026-06-28 (+14d) | -139.75d → -151.75d |
| CP09-TR7-SW-2790 | Epoxy for flooring | 2026-08-25 → 2026-09-08 (+14d) | 2026-08-29 → 2026-09-12 (+14d) | -201.06d → -213.06d |
| 2 | **MEP Works for Swimmimg Pool & Machine Room** |  | 2026-08-25 → 2026-09-08 (+14d) |  |
| 1 | **Mechnical Works** |  | 2026-07-14 → 2026-07-28 (+14d) |  |
| CP09-TR7-SW-2700 | UPVC pipes, fitting, valves, |  | 2026-06-09 → 2026-06-23 (+14d) | -166d → -178d |
| CP09-TR7-SW-2710 | Mechnical Equipment (Valves, Pumps, Filtters, Controllers ,Dosinng,& Ventilation exahust fan) | 2026-06-10 → 2026-06-24 (+14d) | 2026-07-14 → 2026-07-28 (+14d) | -166d → -178d |
| 2 | **Electrical Works-SW** | 2026-06-10 → 2026-06-24 (+14d) | 2026-08-25 → 2026-09-08 (+14d) |  |
| CP09-TR7-SW-2720 | Conduits, Cable tray | 2026-06-10 → 2026-06-24 (+14d) | 2026-06-22 → 2026-07-06 (+14d) | -201.06d → -213.06d |
| CP09-TR7-SW-2730 | Panel boards | 2026-06-22 → 2026-07-06 (+14d) | 2026-07-04 → 2026-07-18 (+14d) | -201.06d → -213.06d |
| CP09-TR7-SW-2740 | Power Cables & Wires | 2026-07-04 → 2026-07-18 (+14d) | 2026-07-21 → 2026-08-04 (+14d) | -201.06d → -213.06d |
| CP09-TR7-SW-2760 | Earthing System | 2026-07-04 → 2026-07-18 (+14d) | 2026-07-21 → 2026-08-04 (+14d) | -171.06d → -183.06d |
| CP09-TR7-SW-2750 | (Lighting Outlets , Switches, Fixture ) | 2026-07-21 → 2026-08-04 (+14d) | 2026-08-25 → 2026-09-08 (+14d) | -201.06d → -213.06d |
| 5 | **Swimming Pool-SP06 & Mechnical Room-MR-06** |  | 2026-09-05 → 2026-09-19 (+14d) |  |
| 1 | **Structure Works for Swimming Pool** |  | 2026-06-10 → 2026-06-24 (+14d) |  |
| CP09-TR7-SW-2870 | External Waterproofing for Walls | 2026-05-24 → 2026-06-07 (+14d) | 2026-05-28 → 2026-06-11 (+14d) | -160.19d → -172.19d |
| CP09-TR7-SW-2880 | Protection Block Works | 2026-05-30 → 2026-06-13 (+14d) | 2026-06-03 → 2026-06-17 (+14d) | -160.19d → -172.19d |
| CP09-TR7-SW-2890 | Backfilling | 2026-06-04 → 2026-06-18 (+14d) | 2026-06-10 → 2026-06-24 (+14d) | -160.19d → -172.19d |
| 3 | **Finishing Works for Swimming Pool** | 2026-06-10 → 2026-06-24 (+14d) | 2026-07-12 → 2026-07-26 (+14d) |  |
| CP09-TR7-SW-2900 | Mosaics Tiles | 2026-06-10 → 2026-06-24 (+14d) | 2026-06-23 → 2026-07-07 (+14d) | -160.19d → -172.19d |
| CP09-TR7-SW-2910 | Granite for Pool Edg | 2026-06-23 → 2026-07-07 (+14d) | 2026-06-28 → 2026-07-12 (+14d) | -160.19d → -172.19d |
| CP09-TR7-SW-2920 | Garnite for Drinage Grate | 2026-06-23 → 2026-07-07 (+14d) | 2026-06-28 → 2026-07-12 (+14d) | -156.44d → -168.44d |
| CP09-TR7-SW-2930 | Granite for Pool Coping | 2026-06-28 → 2026-07-12 (+14d) | 2026-07-02 → 2026-07-16 (+14d) | -160.19d → -172.19d |
| CP09-TR7-SW-2940 | Stanless Steel Ladders | 2026-07-02 → 2026-07-16 (+14d) | 2026-07-06 → 2026-07-20 (+14d) | -160.19d → -172.19d |
| CP09-TR7-SW-2950 | Stanless Steel Handrial | 2026-07-06 → 2026-07-20 (+14d) | 2026-07-12 → 2026-07-26 (+14d) | -160.19d → -172.19d |
| 4 | **Machine Room_MR06** |  | 2026-09-05 → 2026-09-19 (+14d) |  |
| CP09-TR7-SW-3030 | External Waterproofing with Protection |  | 2026-05-28 → 2026-06-11 (+14d) | -154.56d → -166.56d |
| CP09-TR7-SW-3130 | Plaster for Internal Walls |  | 2026-05-30 → 2026-06-13 (+14d) | -198d → -210d |
| CP09-TR7-SW-3040 | Backfilling | 2026-05-30 → 2026-06-13 (+14d) | 2026-06-03 → 2026-06-17 (+14d) | -154.56d → -166.56d |
| CP09-TR7-SW-3140 | Emulsion Paint for Internal Wall | 2026-06-22 → 2026-07-06 (+14d) | 2026-06-29 → 2026-07-13 (+14d) | -207.06d → -219.06d |
| CP09-TR7-SW-3050 | Drainage Gravel including Geotextile & Geocomposit | 2026-06-29 → 2026-07-13 (+14d) | 2026-07-02 → 2026-07-16 (+14d) | -155.81d → -167.81d |
| CP09-TR7-SW-3160 | Metal Works | 2026-06-29 → 2026-07-13 (+14d) | 2026-07-05 → 2026-07-19 (+14d) | -157.06d → -169.06d |
| CP09-TR7-SW-3150 | Epoxy for flooring | 2026-09-01 → 2026-09-15 (+14d) | 2026-09-05 → 2026-09-19 (+14d) | -207.06d → -219.06d |
| 2 | **MEP Works for Swimmimg Pool & Machine Room** |  | 2026-09-01 → 2026-09-15 (+14d) |  |
| 1 | **Mechnical Works** |  | 2026-08-03 → 2026-08-17 (+14d) |  |
| CP09-TR7-SW-3060 | UPVC pipes, fitting, valves, |  | 2026-06-09 → 2026-06-23 (+14d) | -166d → -178d |
| CP09-TR7-SW-3070 | Mechnical Equipment (Valves, Pumps, Filtters, Controllers ,Dosinng,& Ventilation exahust fan) | 2026-06-29 → 2026-07-13 (+14d) | 2026-08-03 → 2026-08-17 (+14d) | -182.06d → -194.06d |
| 2 | **Electrical Works-SW** | 2026-06-10 → 2026-06-24 (+14d) | 2026-09-01 → 2026-09-15 (+14d) |  |
| CP09-TR7-SW-3080 | Conduits, Cable tray | 2026-06-10 → 2026-06-24 (+14d) | 2026-06-22 → 2026-07-06 (+14d) | -207.06d → -219.06d |
| CP09-TR7-SW-3090 | Panel boards | 2026-06-29 → 2026-07-13 (+14d) | 2026-07-11 → 2026-07-25 (+14d) | -207.06d → -219.06d |
| CP09-TR7-SW-3100 | Power Cables & Wires | 2026-07-11 → 2026-07-25 (+14d) | 2026-07-28 → 2026-08-11 (+14d) | -207.06d → -219.06d |
| CP09-TR7-SW-3120 | Earthing System | 2026-07-11 → 2026-07-25 (+14d) | 2026-07-28 → 2026-08-11 (+14d) | -177.06d → -189.06d |
| CP09-TR7-SW-3110 | (Lighting Outlets , Switches, Fixture ) | 2026-07-28 → 2026-08-11 (+14d) | 2026-09-01 → 2026-09-15 (+14d) | -207.06d → -219.06d |
| 9 | **Retaining & Cheek Walls** |  | 2026-07-14 → 2026-07-28 (+14d) |  |
| 1 | **Soild Block Work Cheek Walls** |  | 2026-07-14 → 2026-07-28 (+14d) |  |
| CP09-TR7-RW-1890 | Plaing Concrete with HPDE |  | 2026-05-31 → 2026-06-14 (+14d) | -237.44d → -249.44d |
| CP09-TR7-RW-1900 | Reinforced Concrete for Footing |  | 2026-06-03 → 2026-06-17 (+14d) | -237.44d → -249.44d |
| CP09-TR7-RW-1910 | Reinforced Concrete for Tie beam |  | 2026-06-07 → 2026-06-21 (+14d) | -237.44d → -249.44d |

| ID | Task | Start | Finish | Total float |
| --- | --- | --- | --- | --- |
| CP09-TR7-RW-1920 | Reinforced Concrete for Column |  | 2026-06-09 → 2026-06-23 (+14d) | -237.44d → -249.44d |
| CP09-TR7-RW-1930 | Soild Block Work |  | 2026-06-16 → 2026-06-30 (+14d) | -237.44d → -249.44d |
| CP09-TR7-RW-1940 | Excavation |  | 2026-05-27 → 2026-06-10 (+14d) | -237.44d → -249.44d |
| CP09-TR7-RW-1950 | Reinforced Concrete for Beam |  | 2026-06-21 → 2026-07-05 (+14d) | -237.44d → -249.44d |
| CP09-TR7-RW-1960 | Waterproofing & Protection |  | 2026-06-29 → 2026-07-13 (+14d) | -237.44d → -249.44d |
| CP09-TR7-RW-1970 | Backfilling |  | 2026-07-02 → 2026-07-16 (+14d) | -237.44d → -249.44d |
| CP09-TR7-RW-1980 | Marble Cladding | 2026-07-01 → 2026-07-15 (+14d) | 2026-07-09 → 2026-07-23 (+14d) | -224d → -236d |
| CP09-TR7-RW-1990 | Marble Copping | 2026-07-07 → 2026-07-21 (+14d) | 2026-07-14 → 2026-07-28 (+14d) | -224d → -236d |
| 2 | **Solid Block Retaining Walls** |  | 2026-07-14 → 2026-07-28 (+14d) |  |
| CP09-TR7-RW-2000 | Plaing Concrete with HPDE |  | 2026-05-31 → 2026-06-14 (+14d) | -237.44d → -249.44d |
| CP09-TR7-RW-2010 | Reinforced Concrete for Footing |  | 2026-06-03 → 2026-06-17 (+14d) | -237.44d → -249.44d |
| CP09-TR7-RW-2020 | Reinforced Concrete for Tie beam |  | 2026-06-07 → 2026-06-21 (+14d) | -237.44d → -249.44d |
| CP09-TR7-RW-2030 | Reinforced Concrete for Column |  | 2026-06-09 → 2026-06-23 (+14d) | -237.44d → -249.44d |
| CP09-TR7-RW-2040 | Soild Block Work |  | 2026-06-16 → 2026-06-30 (+14d) | -237.44d → -249.44d |
| CP09-TR7-RW-2050 | Excavation |  | 2026-05-27 → 2026-06-10 (+14d) | -237.44d → -249.44d |
| CP09-TR7-RW-2060 | Reinforced Concrete for Beam |  | 2026-06-21 → 2026-07-05 (+14d) | -237.44d → -249.44d |
| CP09-TR7-RW-2070 | Waterproofing & Protection |  | 2026-06-29 → 2026-07-13 (+14d) | -237.44d → -249.44d |
| CP09-TR7-RW-2080 | Backfilling |  | 2026-07-02 → 2026-07-16 (+14d) | -237.44d → -249.44d |
| CP09-TR7-RW-2090 | Marble Cladding | 2026-06-30 → 2026-07-14 (+14d) | 2026-07-08 → 2026-07-22 (+14d) | -223.06d → -235.06d |
| CP09-TR7-RW-2100 | Marble Copping | 2026-07-06 → 2026-07-20 (+14d) | 2026-07-14 → 2026-07-28 (+14d) | -223.06d → -235.06d |
| 1 | **Irrigation Works** |  | 2026-06-20 → 2026-07-04 (+14d) |  |
| 1 | **Sub-Main & Lateral** |  | 2026-06-03 → 2026-06-17 (+14d) |  |
| CP09-TR7-IR-1440 | Excavation for Sub-main & Lateral Pieps |  | 2026-05-27 → 2026-06-10 (+14d) | -215.19d → -227.19d |
| CP09-TR7-IR-1450 | Sub-main & Lateral Pieps laying out and installation |  | 2026-05-30 → 2026-06-13 (+14d) | -215.19d → -227.19d |
| CP09-TR7-IR-1460 | Sub-main & Lateral Pieps Testing |  | 2026-06-01 → 2026-06-15 (+14d) | -215.19d → -227.19d |
| CP09-TR7-IR-1470 | Backfilling forSub-main & Lateral Pieps |  | 2026-06-03 → 2026-06-17 (+14d) | -215.19d → -227.19d |
| 2 | **Fittings & Accessories** | 2026-06-04 → 2026-06-18 (+14d) | 2026-06-20 → 2026-07-04 (+14d) |  |
| CP09-TR7-IR-1480 | Installation of Dripline | 2026-06-04 → 2026-06-18 (+14d) | 2026-06-17 → 2026-07-01 (+14d) | -174.38d → -186.38d |
| CP09-TR7-IR-1490 | Installation of Sprinklers | 2026-06-04 → 2026-06-18 (+14d) | 2026-06-17 → 2026-07-01 (+14d) | -174.38d → -186.38d |
| CP09-TR7-IR-1500 | Installation Valves & Rings | 2026-06-04 → 2026-06-18 (+14d) | 2026-06-11 → 2026-06-25 (+14d) | -174.38d → -186.38d |
| CP09-TR7-IR-1510 | Installation of Electrical solenoid valve | 2026-06-04 → 2026-06-18 (+14d) | 2026-06-11 → 2026-06-25 (+14d) | -167.38d → -179.38d |
| CP09-TR7-IR-1520 | Installation of Controller (decoder system plastic pedestal) | 2026-06-13 → 2026-06-27 (+14d) | 2026-06-20 → 2026-07-04 (+14d) | -174.38d → -186.38d |
| CP09-TR7-IR-1530 | Installation of Controller decoder cables | 2026-06-13 → 2026-06-27 (+14d) | 2026-06-20 → 2026-07-04 (+14d) | -174.38d → -186.38d |
| CP09-TR7-IR-1540 | Installation of Decoder one station | 2026-06-13 → 2026-06-27 (+14d) | 2026-06-17 → 2026-07-01 (+14d) | -172.38d → -184.38d |
| 4 | **Electrical Works** |  | 2026-07-14 → 2026-07-28 (+14d) |  |
| 1 | **Power Cable & Pillars** |  | 2026-07-14 → 2026-07-28 (+14d) |  |
| CP09-TR7-EL-1160 | Excavation |  | 2026-05-28 → 2026-06-11 (+14d) | -214.19d → -226.19d |
| CP09-TR7-EL-1170 | Installation of Power Cables |  | 2026-05-31 → 2026-06-14 (+14d) | -214.19d → -226.19d |
| CP09-TR7-EL-1180 | Backfilling for Power Cables |  | 2026-06-02 → 2026-06-16 (+14d) | -214.19d → -226.19d |
| CP09-TR7-EL-1190 | Installation of Connecting Pillars | 2026-06-28 → 2026-07-12 (+14d) | 2026-07-14 → 2026-07-28 (+14d) | -169d → -181d |
| 3 | **Hardscape** |  | 2026-09-01 → 2026-09-15 (+14d) |  |
| 6 | **Concrete Curb** |  | 2026-06-15 → 2026-06-29 (+14d) |  |
| CP09-TR7-HD-4510 | Excavation |  | 2026-05-28 → 2026-06-11 (+14d) | -101d → -113d |
| CP09-TR7-HD-4520 | Plains Concrete with HDPE waterproofing |  | 2026-05-28 → 2026-06-11 (+14d) | -194.44d → -206.44d |
| CP09-TR7-HD-4790 | Under Paving Reinforced Concrete Curb |  | 2026-06-03 → 2026-06-17 (+14d) | -197.56d → -209.56d |
| CP09-TR7-HD-4810 | Instal Flush Curb | 2026-06-08 → 2026-06-22 (+14d) | 2026-06-15 → 2026-06-29 (+14d) | -197.56d → -209.56d |
| 1 | **Side wake & Plazes** |  | 2026-07-13 → 2026-07-27 (+14d) |  |
| 8 | **Interlocking Paving** | 2026-06-04 → 2026-06-18 (+14d) | 2026-06-24 → 2026-07-08 (+14d) |  |
| CP09-TR7-HD-4530 | Crush Stone for Interlock Types IL-(01,02,06,07) | 2026-06-04 → 2026-06-18 (+14d) | 2026-06-11 → 2026-06-25 (+14d) | -215.19d → -227.19d |
| CP09-TR7-HD-4540 | Sand Layer for Interlock Types IL-(01,02,06,07) | 2026-06-10 → 2026-06-24 (+14d) | 2026-06-21 → 2026-07-05 (+14d) | -215.19d → -227.19d |
| CP09-TR7-HD-4550 | Motar Bed Interlock Types IL-(03,04,08,09,10) | 2026-06-10 → 2026-06-24 (+14d) | 2026-06-21 → 2026-07-05 (+14d) | -215.19d → -227.19d |
| CP09-TR7-HD-4560 | Interlocking Paving | 2026-06-13 → 2026-06-27 (+14d) | 2026-06-24 → 2026-07-08 (+14d) | -215.19d → -227.19d |
| 2 | **Concrete in Situ** |  | 2026-06-09 → 2026-06-23 (+14d) |  |
| 1 | **Slab on Garde** |  | 2026-06-03 → 2026-06-17 (+14d) |  |
| CP09-TR7-HD-4300 | Plain Concrete with HDPE |  | 2026-05-31 → 2026-06-14 (+14d) | -103d → -115d |
| CP09-TR7-HD-4310 | Reinfored Concrete slab on grade |  | 2026-06-03 → 2026-06-17 (+14d) | -106d → -118d |
| CP09-TR7-HD-4320 | Waterproofing & Screed |  | 2026-05-30 → 2026-06-13 (+14d) | -102d → -114d |
| 2 | **Concrete In-situ w./Exposed Aggregate Finish** |  | 2026-06-09 → 2026-06-23 (+14d) |  |
| CP09-TR7-HD-4330 | Concrete casting (including Joints & Wire Mish) |  | 2026-06-09 → 2026-06-23 (+14d) | -111d → -123d |
| CP09-TR7-HD-4340 | Finishing Concrete Surface |  | 2026-05-30 → 2026-06-13 (+14d) | -148.38d → -160.38d |
| 1 | **Marble Paving** |  | 2026-06-03 → 2026-06-17 (+14d) |  |
| 1 | **Slab on Garde** |  | 2026-06-03 → 2026-06-17 (+14d) |  |
| CP09-TR7-HD-4250 | Plain Concrete with HDPE |  | 2026-05-28 → 2026-06-11 (+14d) | -101d → -113d |
| CP09-TR7-HD-4260 | Reinfored Concrete slab on grade |  | 2026-06-03 → 2026-06-17 (+14d) | -184.38d → -196.38d |
| CP09-TR7-HD-4270 | Waterproofing & Screed |  | 2026-05-31 → 2026-06-14 (+14d) | -103d → -115d |
| 2 | **Marble Tiles** |  | 2026-06-03 → 2026-06-17 (+14d) |  |
| CP09-TR7-HD-4280 | Marble Fixiation |  | 2026-06-03 → 2026-06-17 (+14d) | -106d → -118d |
| CP09-TR7-HD-4290 | Marble Surfcae Finishing |  | 2026-05-31 → 2026-06-14 (+14d) | -156.38d → -168.38d |
| 3 | **Wooden Floor Boards** | 2026-06-04 → 2026-06-18 (+14d) | 2026-07-09 → 2026-07-23 (+14d) |  |
| 1 | **Slab on Garde** | 2026-06-04 → 2026-06-18 (+14d) | 2026-06-20 → 2026-07-04 (+14d) |  |

| ID | Task | Start | Finish | Total float |
| --- | --- | --- | --- | --- |
| CP09-TR7-HD-4350 | Plain Concrete with HDPE | 2026-06-04 → 2026-06-18 (+14d) | 2026-06-07 → 2026-06-21 (+14d) | -184.38d → -196.38d |
| CP09-TR7-HD-4360 | Reinfored Concrete slab on grade | 2026-06-08 → 2026-06-22 (+14d) | 2026-06-14 → 2026-06-28 (+14d) | -184.38d → -196.38d |
| CP09-TR7-HD-4370 | Waterproofing & Screed | 2026-06-15 → 2026-06-29 (+14d) | 2026-06-20 → 2026-07-04 (+14d) | -183.38d → -195.38d |
| 2 | **Wood- Plastic Composit** | 2026-06-21 → 2026-07-05 (+14d) | 2026-07-09 → 2026-07-23 (+14d) |  |
| CP09-TR7-HD-4380 | WPC Installation | 2026-06-21 → 2026-07-05 (+14d) | 2026-07-01 → 2026-07-15 (+14d) | -183.38d → -195.38d |
| CP09-TR7-HD-4390 | WPC surface finishing & Accessories | 2026-07-02 → 2026-07-16 (+14d) | 2026-07-09 → 2026-07-23 (+14d) | -183.38d → -195.38d |
| 4 | **Gravel layer** | 2026-06-15 → 2026-06-29 (+14d) | 2026-07-04 → 2026-07-18 (+14d) |  |
| 1 | **Slab on Garde** | 2026-06-15 → 2026-06-29 (+14d) | 2026-06-28 → 2026-07-12 (+14d) |  |
| CP09-TR7-HD-4400 | Plain Concrete with HDPE | 2026-06-15 → 2026-06-29 (+14d) | 2026-06-21 → 2026-07-05 (+14d) | -184.38d → -196.38d |
| CP09-TR7-HD-4420 | Mortar bed | 2026-06-22 → 2026-07-06 (+14d) | 2026-06-28 → 2026-07-12 (+14d) | -184.38d → -196.38d |
| 2 | **Gravel Layer, w./Earth Colors** | 2026-06-29 → 2026-07-13 (+14d) | 2026-07-04 → 2026-07-18 (+14d) |  |
| CP09-TR7-HD-4430 | Furnish & install Garvel Layer | 2026-06-29 → 2026-07-13 (+14d) | 2026-07-04 → 2026-07-18 (+14d) | -184.38d → -196.38d |
| 5 | **Crushed Stone** | 2026-06-22 → 2026-07-06 (+14d) | 2026-07-11 → 2026-07-25 (+14d) |  |
| 1 | **Slab on Garde** | 2026-06-22 → 2026-07-06 (+14d) | 2026-07-04 → 2026-07-18 (+14d) |  |
| CP09-TR7-HD-4440 | Geotextile membrane | 2026-06-22 → 2026-07-06 (+14d) | 2026-06-25 → 2026-07-09 (+14d) | -178.38d → -190.38d |
| CP09-TR7-HD-4460 | Gravel fix sheets | 2026-06-27 → 2026-07-11 (+14d) | 2026-07-04 → 2026-07-18 (+14d) | -178.38d → -190.38d |
| 2 | **Crushed Dolomite Stone** | 2026-07-05 → 2026-07-19 (+14d) | 2026-07-11 → 2026-07-25 (+14d) |  |
| CP09-TR7-HD-4470 | Furnish & Install Crushed Dolomite stone , w./ mixed colors | 2026-07-05 → 2026-07-19 (+14d) | 2026-07-11 → 2026-07-25 (+14d) | -184.38d → -196.38d |
| 6 | **Loose Gravel** | 2026-06-22 → 2026-07-06 (+14d) | 2026-07-05 → 2026-07-19 (+14d) |  |
| 2 | **Loose Gravel 50mm** | 2026-06-22 → 2026-07-06 (+14d) | 2026-07-05 → 2026-07-19 (+14d) |  |
| CP09-TR7-HD-4480 | Furnish & Install loose gravel w./earth colors. | 2026-06-22 → 2026-07-06 (+14d) | 2026-07-05 → 2026-07-19 (+14d) | -181.38d → -193.38d |
| 7 | **Clean Sand Layer** | 2026-07-05 → 2026-07-19 (+14d) | 2026-07-13 → 2026-07-27 (+14d) |  |
| 1 | **Kids & Fitness Area** | 2026-07-05 → 2026-07-19 (+14d) | 2026-07-13 → 2026-07-27 (+14d) |  |
| CP09-TR7-HD-4490 | Geotextile Sheets | 2026-07-05 → 2026-07-19 (+14d) | 2026-07-07 → 2026-07-21 (+14d) | -183.38d → -195.38d |
| CP09-TR7-HD-4500 | Install Clean sand layer | 2026-07-08 → 2026-07-22 (+14d) | 2026-07-13 → 2026-07-27 (+14d) | -183.38d → -195.38d |
| 2 | **Site Improvments** |  | 2026-09-01 → 2026-09-15 (+14d) |  |
| 6 | **Pools Shower -05** | 2026-06-24 → 2026-07-08 (+14d) | 2026-08-22 → 2026-09-05 (+14d) |  |
| CP09-TR7-HD-5060 | Plain Concrete Basin | 2026-06-24 → 2026-07-08 (+14d) | 2026-06-27 → 2026-07-11 (+14d) | -205.38d → -217.38d |
| CP09-TR7-HD-5070 | R.Concrete Basin | 2026-06-27 → 2026-07-11 (+14d) | 2026-07-02 → 2026-07-16 (+14d) | -205.38d → -217.38d |
| CP09-TR7-HD-5080 | Solid Block Work | 2026-07-02 → 2026-07-16 (+14d) | 2026-07-08 → 2026-07-22 (+14d) | -198.44d → -210.44d |
| CP09-TR7-HD-5090 | Water Proofing | 2026-07-08 → 2026-07-22 (+14d) | 2026-07-12 → 2026-07-26 (+14d) | -198.44d → -210.44d |
| CP09-TR7-HD-5100 | Backfilling | 2026-07-12 → 2026-07-26 (+14d) | 2026-07-18 → 2026-08-01 (+14d) | -198.44d → -210.44d |
| CP09-TR7-HD-5110 | Mica Stone Cladding | 2026-07-18 → 2026-08-01 (+14d) | 2026-07-25 → 2026-08-08 (+14d) | -198.44d → -210.44d |
| CP09-TR7-HD-5120 | Mica Stone Capping | 2026-07-25 → 2026-08-08 (+14d) | 2026-07-29 → 2026-08-12 (+14d) | -198.44d → -210.44d |
| CP09-TR7-HD-5130 | Drainage Cover with Geotextile | 2026-07-29 → 2026-08-12 (+14d) | 2026-08-02 → 2026-08-16 (+14d) | -198.44d → -210.44d |
| CP09-TR7-HD-5140 | Blast stone blocks for Flooring | 2026-08-02 → 2026-08-16 (+14d) | 2026-08-08 → 2026-08-22 (+14d) | -198.44d → -210.44d |
| CP09-TR7-HD-5150 | Blast Stone Blocks Capping | 2026-08-08 → 2026-08-22 (+14d) | 2026-08-12 → 2026-08-26 (+14d) | -198.44d → -210.44d |
| CP09-TR7-HD-5160 | Loose Rounded Pebbles | 2026-08-12 → 2026-08-26 (+14d) | 2026-08-18 → 2026-09-01 (+14d) | -198.44d → -210.44d |
| CP09-TR7-HD-5170 | Shower Head Fixation | 2026-08-18 → 2026-09-01 (+14d) | 2026-08-22 → 2026-09-05 (+14d) | -195.25d → -207.25d |
| 3 | **Pools Shower -06** | 2026-07-02 → 2026-07-16 (+14d) | 2026-09-01 → 2026-09-15 (+14d) |  |
| CP09-TR7-HD-2240 | Plain Concrete Basin | 2026-07-02 → 2026-07-16 (+14d) | 2026-07-05 → 2026-07-19 (+14d) | -205.38d → -217.38d |
| CP09-TR7-HD-2250 | R.Concrete Basin | 2026-07-05 → 2026-07-19 (+14d) | 2026-07-13 → 2026-07-27 (+14d) | -205.38d → -217.38d |
| CP09-TR7-HD-2260 | Solid Block Work | 2026-07-13 → 2026-07-27 (+14d) | 2026-07-19 → 2026-08-02 (+14d) | -205.38d → -217.38d |
| CP09-TR7-HD-2270 | Water Proofing | 2026-07-19 → 2026-08-02 (+14d) | 2026-07-22 → 2026-08-05 (+14d) | -205.38d → -217.38d |
| CP09-TR7-HD-2280 | Backfilling | 2026-07-22 → 2026-08-05 (+14d) | 2026-07-29 → 2026-08-12 (+14d) | -205.38d → -217.38d |
| CP09-TR7-HD-2290 | Mica Stone Cladding | 2026-07-29 → 2026-08-12 (+14d) | 2026-08-03 → 2026-08-17 (+14d) | -205.38d → -217.38d |
| CP09-TR7-HD-2300 | Mica Stone Capping | 2026-08-03 → 2026-08-17 (+14d) | 2026-08-06 → 2026-08-20 (+14d) | -205.38d → -217.38d |
| CP09-TR7-HD-2310 | Drainage Cover with Geotextile | 2026-08-06 → 2026-08-20 (+14d) | 2026-08-12 → 2026-08-26 (+14d) | -205.38d → -217.38d |
| CP09-TR7-HD-2320 | Blast stone blocks for Flooring | 2026-08-12 → 2026-08-26 (+14d) | 2026-08-18 → 2026-09-01 (+14d) | -205.38d → -217.38d |
| CP09-TR7-HD-2330 | Blast Stone Blocks Capping | 2026-08-18 → 2026-09-01 (+14d) | 2026-08-22 → 2026-09-05 (+14d) | -205.38d → -217.38d |
| CP09-TR7-HD-2340 | Loose Rounded Pebbles | 2026-08-22 → 2026-09-05 (+14d) | 2026-08-26 → 2026-09-09 (+14d) | -205.38d → -217.38d |
| CP09-TR7-HD-2350 | Shower Head Fixation | 2026-08-26 → 2026-09-09 (+14d) | 2026-09-01 → 2026-09-15 (+14d) | -204.38d → -216.38d |
| 1 | **Marble Steps** |  | 2026-07-20 → 2026-08-03 (+14d) |  |
| CP09-TR7-HD-4570 | Reinforecd Concrete Step. |  | 2026-06-03 → 2026-06-17 (+14d) | -159.81d → -171.81d |
| CP09-TR7-HD-4580 | Install Marble Blocks | 2026-05-31 → 2026-06-14 (+14d) | 2026-06-07 → 2026-06-21 (+14d) | -159.81d → -171.81d |
| CP09-TR7-HD-4590 | Finishing Marble Surface | 2026-07-15 → 2026-07-29 (+14d) | 2026-07-20 → 2026-08-03 (+14d) | -174d → -186d |
| 4 | **Handrails** | 2026-08-06 → 2026-08-20 (+14d) | 2026-08-12 → 2026-08-26 (+14d) |  |
| CP09-TR7-HD-4820 | Install & Fix Stainless Handrail (500 mm height) | 2026-08-06 → 2026-08-20 (+14d) | 2026-08-12 → 2026-08-26 (+14d) | -211.06d → -223.06d |
| CP09-TR7-HD-4830 | Install & Fix Glass Handrail (900mm height) | 2026-08-06 → 2026-08-20 (+14d) | 2026-08-12 → 2026-08-26 (+14d) | -211.06d → -223.06d |
| 2 | **Curvelinear Block Seat** | 2026-07-02 → 2026-07-16 (+14d) | 2026-08-06 → 2026-08-20 (+14d) |  |
| CP09-TR7-HD-4600 | Excavation | 2026-07-02 → 2026-07-16 (+14d) | 2026-07-06 → 2026-07-20 (+14d) | -237.44d → -249.44d |
| CP09-TR7-HD-4610 | Plaing Concrete with HPDE | 2026-07-06 → 2026-07-20 (+14d) | 2026-07-11 → 2026-07-25 (+14d) | -237.44d → -249.44d |
| CP09-TR7-HD-4620 | Reinforced Concrete for Footing | 2026-07-11 → 2026-07-25 (+14d) | 2026-07-16 → 2026-07-30 (+14d) | -237.44d → -249.44d |
| CP09-TR7-HD-4630 | Reinforced Concrete for beam | 2026-07-16 → 2026-07-30 (+14d) | 2026-07-22 → 2026-08-05 (+14d) | -237.44d → -249.44d |
| CP09-TR7-HD-4640 | Waterproofing & Protection | 2026-07-22 → 2026-08-05 (+14d) | 2026-07-27 → 2026-08-10 (+14d) | -237.44d → -249.44d |
| CP09-TR7-HD-4650 | Backfilling | 2026-07-27 → 2026-08-10 (+14d) | 2026-07-30 → 2026-08-13 (+14d) | -237.44d → -249.44d |
| CP09-TR7-HD-4660 | Marble Capping | 2026-07-30 → 2026-08-13 (+14d) | 2026-08-06 → 2026-08-20 (+14d) | -237.44d → -249.44d |
| 11 | **Sinage** | 2026-08-06 → 2026-08-20 (+14d) | 2026-09-29 → 2026-10-13 (+14d) |  |
| CP09-TR7-SN-4950 | Excavation | 2026-08-06 → 2026-08-20 (+14d) | 2026-08-15 → 2026-08-29 (+14d) | -237.44d → -249.44d |
| CP09-TR7-SN-4960 | Plain Concrete with HDPE | 2026-08-11 → 2026-08-25 (+14d) | 2026-08-17 → 2026-08-31 (+14d) | -237.44d → -249.44d |

| ID | Task | Start | Finish | Total float |
| --- | --- | --- | --- | --- |
| CP09-TR7-SN-4970 | Reinforced Concrete | 2026-08-13 → 2026-08-27 (+14d) | 2026-08-25 → 2026-09-08 (+14d) | -237.44d → -249.44d |
| CP09-TR7-SN-4980 | Waterproofing | 2026-08-23 → 2026-09-06 (+14d) | 2026-08-29 → 2026-09-12 (+14d) | -237.44d → -249.44d |
| CP09-TR7-SN-4990 | Grouting | 2026-08-25 → 2026-09-08 (+14d) | 2026-09-06 → 2026-09-20 (+14d) | -237.44d → -249.44d |
| CP09-TR7-SN-5000 | STREET DIRECTIONAL SIGN | 2026-08-25 → 2026-09-08 (+14d) | 2026-09-06 → 2026-09-20 (+14d) | -232.44d → -244.44d |
| CP09-TR7-SN-5010 | DIRECTIONAL SIGN FOR VEHICULAR | 2026-08-25 → 2026-09-08 (+14d) | 2026-09-06 → 2026-09-20 (+14d) | -232.44d → -244.44d |
| CP09-TR7-SN-5040 | RULES SIGN | 2026-08-31 → 2026-09-14 (+14d) | 2026-09-12 → 2026-09-26 (+14d) | -237.44d → -249.44d |
| CP09-TR7-SN-5020 | UNIT ID SIGN (FRONT YARD) | 2026-09-12 → 2026-09-26 (+14d) | 2026-09-29 → 2026-10-13 (+14d) | -237.44d → -249.44d |
| CP09-TR7-SN-5030 | UNIT ID SIGN (BACK YARD) | 2026-09-12 → 2026-09-26 (+14d) | 2026-09-29 → 2026-10-13 (+14d) | -237.44d → -249.44d |
| CP09-TR7-SN-5050 | IDENTIFICATION SIGN | 2026-09-12 → 2026-09-26 (+14d) | 2026-09-23 → 2026-10-07 (+14d) | -232.44d → -244.44d |
| 12 | **Landscape Furntiure** | 2026-09-06 → 2026-09-20 (+14d) | 2026-09-22 → 2026-10-06 (+14d) |  |
| CP09-TR7-FN-4840 | Install & Fix Pitch Pine Picnic Table | 2026-09-06 → 2026-09-20 (+14d) | 2026-09-22 → 2026-10-06 (+14d) | -231.44d → -243.44d |
| CP09-TR7-FN-4850 | Install & Fix Crcular Cast-iron tree grate | 2026-09-06 → 2026-09-20 (+14d) | 2026-09-22 → 2026-10-06 (+14d) | -231.44d → -243.44d |
| CP09-TR7-FN-4860 | Install & Fix Aluminium Cabana for Pool Shading | 2026-09-06 → 2026-09-20 (+14d) | 2026-09-22 → 2026-10-06 (+14d) | -231.44d → -243.44d |
| CP09-TR7-FN-4870 | Install & Fix Pitch Pine Benchs | 2026-09-06 → 2026-09-20 (+14d) | 2026-09-22 → 2026-10-06 (+14d) | -231.44d → -243.44d |
| CP09-TR7-FN-4880 | Install & Fix Polyester Hammocks | 2026-09-06 → 2026-09-20 (+14d) | 2026-09-22 → 2026-10-06 (+14d) | -231.44d → -243.44d |
| CP09-TR7-FN-4890 | Install & Fix Adult Play Swing | 2026-09-06 → 2026-09-20 (+14d) | 2026-09-22 → 2026-10-06 (+14d) | -231.44d → -243.44d |
| CP09-TR7-FN-4900 | Install & Fix Aluminum Trash Bin | 2026-09-06 → 2026-09-20 (+14d) | 2026-09-22 → 2026-10-06 (+14d) | -231.44d → -243.44d |
| CP09-TR7-FN-4910 | Install & Fix tensile Teflon Tent | 2026-09-06 → 2026-09-20 (+14d) | 2026-09-22 → 2026-10-06 (+14d) | -231.44d → -243.44d |
| CP09-TR7-FN-4920 | Lanscape Edging ( Rubber) | 2026-09-06 → 2026-09-20 (+14d) | 2026-09-22 → 2026-10-06 (+14d) | -231.44d → -243.44d |
| 10 | **Play Field Equipment** | 2026-09-06 → 2026-09-20 (+14d) | 2026-09-20 → 2026-10-04 (+14d) |  |
| CP09-TR7-PE-4930 | Fitness areas equipment | 2026-09-06 → 2026-09-20 (+14d) | 2026-09-20 → 2026-10-04 (+14d) | -229.44d → -241.44d |
| CP09-TR7-PE-4940 | Kids playground equipment | 2026-09-06 → 2026-09-20 (+14d) | 2026-09-20 → 2026-10-04 (+14d) | -229.44d → -241.44d |
| 7 | **Lighting for Softscape** | 2026-06-24 → 2026-07-08 (+14d) | 2026-09-22 → 2026-10-06 (+14d) |  |
| 1 | **Exterior Lighting** | 2026-06-24 → 2026-07-08 (+14d) | 2026-09-22 → 2026-10-06 (+14d) |  |
| CP09-TR7-SF-1730 | Install Landscape Lighting Pole | 2026-06-24 → 2026-07-08 (+14d) | 2026-08-04 → 2026-08-18 (+14d) | -215.19d → -227.19d |
| CP09-TR7-SF-1770 | Install Projectors for Trees | 2026-07-06 → 2026-07-20 (+14d) | 2026-07-16 → 2026-07-30 (+14d) | -174.38d → -186.38d |
| CP09-TR7-SF-1740 | Install Bollard for Walkways | 2026-08-04 → 2026-08-18 (+14d) | 2026-08-16 → 2026-08-30 (+14d) | -205.19d → -217.19d |
| CP09-TR7-SF-1760 | Install Inground Uplight For Palms | 2026-08-04 → 2026-08-18 (+14d) | 2026-08-16 → 2026-08-30 (+14d) | -200.19d → -212.19d |
| CP09-TR7-SF-1750 | Install Diffused Wall Recessed Step | 2026-08-08 → 2026-08-22 (+14d) | 2026-08-19 → 2026-09-02 (+14d) | -203.19d → -215.19d |
| CP09-TR7-SF-1780 | Install Surface Mountaed Down Light for Pool Cabans | 2026-09-10 → 2026-09-24 (+14d) | 2026-09-22 → 2026-10-06 (+14d) | -231.44d → -243.44d |
| 2 | **Outlet Lighting Fixtures** | 2026-08-16 → 2026-08-30 (+14d) | 2026-08-22 → 2026-09-05 (+14d) |  |
| CP09-TR7-SF-1790 | Install outlet lighting fixtures | 2026-08-16 → 2026-08-30 (+14d) | 2026-08-22 → 2026-09-05 (+14d) | -205.19d → -217.19d |
| 2 | **Softscape** |  | 2026-07-05 → 2026-07-19 (+14d) |  |
| 1 | **Planting** |  | 2026-07-05 → 2026-07-19 (+14d) |  |
| CP09-TR7-SF-1640 | Sweet sand for all plants |  | 2026-06-03 → 2026-06-17 (+14d) | -174.38d → -186.38d |
| CP09-TR7-SF-1650 | Organic Manure |  | 2026-06-03 → 2026-06-17 (+14d) | -164.38d → -176.38d |
| CP09-TR7-SF-1660 | Large Trees | 2026-06-21 → 2026-07-05 (+14d) | 2026-07-01 → 2026-07-15 (+14d) | -174.38d → -186.38d |
| CP09-TR7-SF-1670 | Shrubs | 2026-06-24 → 2026-07-08 (+14d) | 2026-07-05 → 2026-07-19 (+14d) | -174.38d → -186.38d |
| CP09-TR7-SF-1680 | Ground Covers | 2026-06-24 → 2026-07-08 (+14d) | 2026-07-05 → 2026-07-19 (+14d) | -174.38d → -186.38d |
| CP09-TR7-SF-1690 | Succulents | 2026-06-24 → 2026-07-08 (+14d) | 2026-07-05 → 2026-07-19 (+14d) | -174.38d → -186.38d |
| CP09-TR7-SF-1700 | Vines & Climbers | 2026-06-24 → 2026-07-08 (+14d) | 2026-07-05 → 2026-07-19 (+14d) | -174.38d → -186.38d |
| CP09-TR7-SF-1710 | Ornamental grass | 2026-06-24 → 2026-07-08 (+14d) | 2026-07-05 → 2026-07-19 (+14d) | -174.38d → -186.38d |
| CP09-TR7-SF-1720 | Lawn | 2026-06-24 → 2026-07-08 (+14d) | 2026-07-05 → 2026-07-19 (+14d) | -174.38d → -186.38d |
| 13 | **Terrace # 08** |  | 2026-09-20 → 2026-10-04 (+14d) |  |
| 8 | **Swimming Pool-SP07 & Mechnical Room-MR-07** |  | 2026-09-05 → 2026-09-19 (+14d) |  |
| 1 | **Structure Works for Swimming Pool** |  | 2026-06-10 → 2026-06-24 (+14d) |  |
| CP09-TR8-SW-2510 | External Waterproofing for Walls | 2026-05-24 → 2026-06-07 (+14d) | 2026-05-28 → 2026-06-11 (+14d) | -160.19d → -172.19d |
| CP09-TR8-SW-2520 | Protection Block Works | 2026-05-30 → 2026-06-13 (+14d) | 2026-06-03 → 2026-06-17 (+14d) | -160.19d → -172.19d |
| CP09-TR8-SW-2530 | Backfilling | 2026-06-04 → 2026-06-18 (+14d) | 2026-06-10 → 2026-06-24 (+14d) | -160.19d → -172.19d |
| 3 | **Finishing Works for Swimming Pool** | 2026-06-10 → 2026-06-24 (+14d) | 2026-07-12 → 2026-07-26 (+14d) |  |
| CP09-TR8-SW-2540 | Mosaics Tiles | 2026-06-10 → 2026-06-24 (+14d) | 2026-06-23 → 2026-07-07 (+14d) | -160.19d → -172.19d |
| CP09-TR8-SW-2550 | Granite for Pool Edg | 2026-06-23 → 2026-07-07 (+14d) | 2026-06-28 → 2026-07-12 (+14d) | -160.19d → -172.19d |
| CP09-TR8-SW-2560 | Garnite for Drinage Grate | 2026-06-23 → 2026-07-07 (+14d) | 2026-06-28 → 2026-07-12 (+14d) | -156.44d → -168.44d |
| CP09-TR8-SW-2570 | Granite for Pool Coping | 2026-06-28 → 2026-07-12 (+14d) | 2026-07-02 → 2026-07-16 (+14d) | -160.19d → -172.19d |
| CP09-TR8-SW-2580 | Stanless Steel Ladders | 2026-07-02 → 2026-07-16 (+14d) | 2026-07-06 → 2026-07-20 (+14d) | -160.19d → -172.19d |
| CP09-TR8-SW-2590 | Stanless Steel Handrial | 2026-07-06 → 2026-07-20 (+14d) | 2026-07-12 → 2026-07-26 (+14d) | -160.19d → -172.19d |
| 4 | **Machine Room_MR07** |  | 2026-09-05 → 2026-09-19 (+14d) |  |
| CP09-TR8-SW-2670 | External Waterproofing with Protection | 2026-05-24 → 2026-06-07 (+14d) | 2026-05-28 → 2026-06-11 (+14d) | -203d → -215d |
| CP09-TR8-SW-2680 | Backfilling | 2026-05-30 → 2026-06-13 (+14d) | 2026-06-03 → 2026-06-17 (+14d) | -154.56d → -166.56d |
| CP09-TR8-SW-2770 | Plaster for Internal Walls | 2026-05-30 → 2026-06-13 (+14d) | 2026-06-04 → 2026-06-18 (+14d) | -203d → -215d |
| CP09-TR8-SW-2780 | Emulsion Paint for Internal Wall | 2026-06-22 → 2026-07-06 (+14d) | 2026-06-29 → 2026-07-13 (+14d) | -207.06d → -219.06d |
| CP09-TR8-SW-2690 | Drainage Gravel including Geotextile & Geocomposit | 2026-06-29 → 2026-07-13 (+14d) | 2026-07-06 → 2026-07-20 (+14d) | -168.06d → -180.06d |
| CP09-TR8-SW-2800 | Metal Works | 2026-07-06 → 2026-07-20 (+14d) | 2026-07-18 → 2026-08-01 (+14d) | -168.06d → -180.06d |
| CP09-TR8-SW-2790 | Epoxy for flooring | 2026-09-01 → 2026-09-15 (+14d) | 2026-09-05 → 2026-09-19 (+14d) | -207.06d → -219.06d |
| 2 | **MEP Works for Swimmimg Pool & Machine Room** |  | 2026-09-01 → 2026-09-15 (+14d) |  |
| 1 | **Mechnical Works** |  | 2026-08-03 → 2026-08-17 (+14d) |  |
| CP09-TR8-SW-2700 | UPVC pipes, fitting, valves, |  | 2026-06-09 → 2026-06-23 (+14d) | -166d → -178d |
| CP09-TR8-SW-2710 | Mechnical Equipment (Valves, Pumps, Filtters, Controllers ,Dosinng) | 2026-06-29 → 2026-07-13 (+14d) | 2026-08-03 → 2026-08-17 (+14d) | -182.06d → -194.06d |
| 2 | **Electrical Works-SW** | 2026-06-10 → 2026-06-24 (+14d) | 2026-09-01 → 2026-09-15 (+14d) |  |
| CP09-TR8-SW-2720 | Conduits, Cable tray | 2026-06-10 → 2026-06-24 (+14d) | 2026-06-22 → 2026-07-06 (+14d) | -207.06d → -219.06d |

| ID | Task | Start | Finish | Total float |
| --- | --- | --- | --- | --- |
| CP09-TR8-SW-2730 | Panel boards | 2026-06-29 → 2026-07-13 (+14d) | 2026-07-11 → 2026-07-25 (+14d) | -207.06d → -219.06d |
| CP09-TR8-SW-2740 | Power Cables & Wires | 2026-07-11 → 2026-07-25 (+14d) | 2026-07-28 → 2026-08-11 (+14d) | -207.06d → -219.06d |
| CP09-TR8-SW-2760 | Earthing System | 2026-07-11 → 2026-07-25 (+14d) | 2026-07-28 → 2026-08-11 (+14d) | -177.06d → -189.06d |
| CP09-TR8-SW-2750 | (Lighting Outlets , Switches, Fixture ) | 2026-07-28 → 2026-08-11 (+14d) | 2026-09-01 → 2026-09-15 (+14d) | -207.06d → -219.06d |
| 5 | **Swimming Pool-SP08 & Mechnical Room-MR-08** |  | 2026-09-06 → 2026-09-20 (+14d) |  |
| 1 | **Structure Works for Swimming Pool** |  | 2026-06-09 → 2026-06-23 (+14d) |  |
| CP09-TR8-SW-2870 | External Waterproofing for Walls | 2026-05-24 → 2026-06-07 (+14d) | 2026-05-28 → 2026-06-11 (+14d) | -163d → -175d |
| CP09-TR8-SW-2880 | Protection Block Works | 2026-05-30 → 2026-06-13 (+14d) | 2026-06-03 → 2026-06-17 (+14d) | -163d → -175d |
| CP09-TR8-SW-2890 | Backfilling | 2026-06-04 → 2026-06-18 (+14d) | 2026-06-09 → 2026-06-23 (+14d) | -163d → -175d |
| 3 | **Finishing Works for Swimming Pool** | 2026-06-10 → 2026-06-24 (+14d) | 2026-07-08 → 2026-07-22 (+14d) |  |
| CP09-TR8-SW-2900 | Mosaics Tiles | 2026-06-10 → 2026-06-24 (+14d) | 2026-06-15 → 2026-06-29 (+14d) | -163d → -175d |
| CP09-TR8-SW-2910 | Granite for Pool Edg | 2026-06-16 → 2026-06-30 (+14d) | 2026-06-21 → 2026-07-05 (+14d) | -163d → -175d |
| CP09-TR8-SW-2920 | Garnite for Drinage Grate | 2026-06-16 → 2026-06-30 (+14d) | 2026-06-21 → 2026-07-05 (+14d) | -158d → -170d |
| CP09-TR8-SW-2930 | Granite for Pool Coping | 2026-06-22 → 2026-07-06 (+14d) | 2026-06-27 → 2026-07-11 (+14d) | -163d → -175d |
| CP09-TR8-SW-2940 | Stanless Steel Ladders | 2026-06-28 → 2026-07-12 (+14d) | 2026-07-02 → 2026-07-16 (+14d) | -163d → -175d |
| CP09-TR8-SW-2950 | Stanless Steel Handrial | 2026-07-04 → 2026-07-18 (+14d) | 2026-07-08 → 2026-07-22 (+14d) | -163d → -175d |
| 4 | **Machine Room_MR08** |  | 2026-09-06 → 2026-09-20 (+14d) |  |
| CP09-TR8-SW-3030 | External Waterproofing with Protection | 2026-05-24 → 2026-06-07 (+14d) | 2026-05-28 → 2026-06-11 (+14d) | -203d → -215d |
| CP09-TR8-SW-3040 | Backfilling | 2026-05-30 → 2026-06-13 (+14d) | 2026-06-03 → 2026-06-17 (+14d) | -158d → -170d |
| CP09-TR8-SW-3130 | Plaster for Internal Walls | 2026-05-30 → 2026-06-13 (+14d) | 2026-06-03 → 2026-06-17 (+14d) | -203d → -215d |
| CP09-TR8-SW-3140 | Emulsion Paint for Internal Wall | 2026-06-22 → 2026-07-06 (+14d) | 2026-06-28 → 2026-07-12 (+14d) | -208.06d → -220.06d |
| CP09-TR8-SW-3050 | Drainage Gravel including Geotextile & Geocomposit | 2026-06-28 → 2026-07-12 (+14d) | 2026-07-04 → 2026-07-18 (+14d) | -158.06d → -170.06d |
| CP09-TR8-SW-3160 | Metal Works | 2026-06-28 → 2026-07-12 (+14d) | 2026-07-04 → 2026-07-18 (+14d) | -158.06d → -170.06d |
| CP09-TR8-SW-3150 | Epoxy for flooring | 2026-08-31 → 2026-09-14 (+14d) | 2026-09-06 → 2026-09-20 (+14d) | -208.06d → -220.06d |
| 2 | **MEP Works for Swimmimg Pool & Machine Room** |  | 2026-08-31 → 2026-09-14 (+14d) |  |
| 1 | **Mechnical Works** |  | 2026-08-02 → 2026-08-16 (+14d) |  |
| CP09-TR8-SW-3060 | UPVC pipes, fitting, valves, |  | 2026-06-09 → 2026-06-23 (+14d) | -168d → -180d |
| CP09-TR8-SW-3070 | Mechnical Equipment (Valves, Pumps, Filtters, Controllers ,Dosinng,& Ventilation exahust fan) | 2026-06-28 → 2026-07-12 (+14d) | 2026-08-02 → 2026-08-16 (+14d) | -183.06d → -195.06d |
| 2 | **Electrical Works-SW** | 2026-06-10 → 2026-06-24 (+14d) | 2026-08-31 → 2026-09-14 (+14d) |  |
| CP09-TR8-SW-3080 | Conduits, Cable tray | 2026-06-10 → 2026-06-24 (+14d) | 2026-06-22 → 2026-07-06 (+14d) | -208.06d → -220.06d |
| CP09-TR8-SW-3090 | Panel boards | 2026-06-28 → 2026-07-12 (+14d) | 2026-07-09 → 2026-07-23 (+14d) | -208.06d → -220.06d |
| CP09-TR8-SW-3100 | Power Cables & Wires | 2026-07-09 → 2026-07-23 (+14d) | 2026-07-27 → 2026-08-10 (+14d) | -208.06d → -220.06d |
| CP09-TR8-SW-3120 | Earthing System | 2026-07-09 → 2026-07-23 (+14d) | 2026-07-27 → 2026-08-10 (+14d) | -178.06d → -190.06d |
| CP09-TR8-SW-3110 | (Lighting Outlets , Switches, Fixture ) | 2026-07-27 → 2026-08-10 (+14d) | 2026-08-31 → 2026-09-14 (+14d) | -208.06d → -220.06d |
| 6 | **Earth Work** | 2026-05-24 → 2026-06-07 (+14d) | 2026-06-15 → 2026-06-29 (+14d) |  |
| 1 | **Grading works** | 2026-05-24 → 2026-06-07 (+14d) | 2026-06-15 → 2026-06-29 (+14d) |  |
| CP09-TR8-EW-1120 | Excavation work to Reduce Level | 2026-05-24 → 2026-06-07 (+14d) | 2026-06-09 → 2026-06-23 (+14d) | -224.12d → -236.12d |
| CP09-TR8-EW-1130 | Filling works to make up levels with Compacting | 2026-05-28 → 2026-06-11 (+14d) | 2026-06-15 → 2026-06-29 (+14d) | -224.12d → -236.12d |
| 2 | **Planting** | 2026-05-28 → 2026-06-11 (+14d) | 2026-06-15 → 2026-06-29 (+14d) |  |
| CP09-TR8-EW-1140 | Excavation works for Planting Beds | 2026-05-28 → 2026-06-11 (+14d) | 2026-06-15 → 2026-06-29 (+14d) | -224.12d → -236.12d |
| 9 | **Retaining & Cheek Walls** |  | 2026-07-14 → 2026-07-28 (+14d) |  |
| 1 | **Soild Block Work Cheek Walls** |  | 2026-07-14 → 2026-07-28 (+14d) |  |
| CP09-TR8-RW-1890 | Plaing Concrete with HPDE |  | 2026-05-31 → 2026-06-14 (+14d) | -206d → -218d |
| CP09-TR8-RW-1900 | Reinforced Concrete for Footing |  | 2026-06-03 → 2026-06-17 (+14d) | -206d → -218d |
| CP09-TR8-RW-1910 | Reinforced Concrete for Tie beam |  | 2026-06-07 → 2026-06-21 (+14d) | -206d → -218d |
| CP09-TR8-RW-1920 | Reinforced Concrete for Column |  | 2026-06-09 → 2026-06-23 (+14d) | -206d → -218d |
| CP09-TR8-RW-1930 | Soild Block Work |  | 2026-06-16 → 2026-06-30 (+14d) | -206d → -218d |
| CP09-TR8-RW-1940 | Excavation |  | 2026-05-27 → 2026-06-10 (+14d) | -206d → -218d |
| CP09-TR8-RW-1950 | Reinforced Concrete for Beam |  | 2026-06-21 → 2026-07-05 (+14d) | -206d → -218d |
| CP09-TR8-RW-1960 | Waterproofing & Protection |  | 2026-06-29 → 2026-07-13 (+14d) | -206d → -218d |
| CP09-TR8-RW-1970 | Backfilling |  | 2026-07-02 → 2026-07-16 (+14d) | -206d → -218d |
| CP09-TR8-RW-1980 | Marble Cladding | 2026-07-01 → 2026-07-15 (+14d) | 2026-07-09 → 2026-07-23 (+14d) | -206d → -218d |
| CP09-TR8-RW-1990 | Marble Copping | 2026-07-07 → 2026-07-21 (+14d) | 2026-07-14 → 2026-07-28 (+14d) | -206d → -218d |
| 2 | **Solid Block Retaining Walls** |  | 2026-07-14 → 2026-07-28 (+14d) |  |
| CP09-TR8-RW-2000 | Plaing Concrete with HPDE |  | 2026-05-31 → 2026-06-14 (+14d) | -205.06d → -217.06d |
| CP09-TR8-RW-2010 | Reinforced Concrete for Footing |  | 2026-06-03 → 2026-06-17 (+14d) | -205.06d → -217.06d |
| CP09-TR8-RW-2020 | Reinforced Concrete for Tie beam |  | 2026-06-07 → 2026-06-21 (+14d) | -205.06d → -217.06d |
| CP09-TR8-RW-2030 | Reinforced Concrete for Column |  | 2026-06-09 → 2026-06-23 (+14d) | -205.06d → -217.06d |
| CP09-TR8-RW-2040 | Soild Block Work |  | 2026-06-16 → 2026-06-30 (+14d) | -205.06d → -217.06d |
| CP09-TR8-RW-2050 | Excavation |  | 2026-05-27 → 2026-06-10 (+14d) | -205.06d → -217.06d |
| CP09-TR8-RW-2060 | Reinforced Concrete for Beam |  | 2026-06-21 → 2026-07-05 (+14d) | -205.06d → -217.06d |
| CP09-TR8-RW-2070 | Waterproofing & Protection |  | 2026-06-29 → 2026-07-13 (+14d) | -205.06d → -217.06d |
| CP09-TR8-RW-2080 | Backfilling |  | 2026-07-02 → 2026-07-16 (+14d) | -205.06d → -217.06d |
| CP09-TR8-RW-2090 | Marble Cladding | 2026-06-30 → 2026-07-14 (+14d) | 2026-07-08 → 2026-07-22 (+14d) | -205.06d → -217.06d |
| CP09-TR8-RW-2100 | Marble Copping | 2026-07-06 → 2026-07-20 (+14d) | 2026-07-14 → 2026-07-28 (+14d) | -205.06d → -217.06d |
| 1 | **Irrigation Works** |  | 2026-07-01 → 2026-07-15 (+14d) |  |
| 1 | **Sub-Main & Lateral** |  | 2026-06-07 → 2026-06-21 (+14d) |  |
| CP09-TR8-IR-1440 | Excavation for Sub-main & Lateral Pieps |  | 2026-05-27 → 2026-06-10 (+14d) | -214.44d → -226.44d |
| CP09-TR8-IR-1450 | Sub-main & Lateral Pieps laying out and installation |  | 2026-06-02 → 2026-06-16 (+14d) | -214.44d → -226.44d |
| CP09-TR8-IR-1460 | Sub-main & Lateral Pieps Testing |  | 2026-06-04 → 2026-06-18 (+14d) | -214.44d → -226.44d |

| ID | Task | Start | Finish | Total float |
| --- | --- | --- | --- | --- |
| CP09-TR8-IR-1470 | Backfilling forSub-main & Lateral Pieps |  | 2026-06-07 → 2026-06-21 (+14d) | -214.44d → -226.44d |
| 2 | **Fittings & Accessories** | 2026-06-16 → 2026-06-30 (+14d) | 2026-07-01 → 2026-07-15 (+14d) |  |
| CP09-TR8-IR-1480 | Installation of Dripline | 2026-06-16 → 2026-06-30 (+14d) | 2026-06-29 → 2026-07-13 (+14d) | -177.38d → -189.38d |
| CP09-TR8-IR-1490 | Installation of Sprinklers | 2026-06-16 → 2026-06-30 (+14d) | 2026-06-29 → 2026-07-13 (+14d) | -177.38d → -189.38d |
| CP09-TR8-IR-1500 | Installation Valves & Rings | 2026-06-16 → 2026-06-30 (+14d) | 2026-06-23 → 2026-07-07 (+14d) | -177.38d → -189.38d |
| CP09-TR8-IR-1510 | Installation of Electrical solenoid valve | 2026-06-16 → 2026-06-30 (+14d) | 2026-06-23 → 2026-07-07 (+14d) | -170.38d → -182.38d |
| CP09-TR8-IR-1520 | Installation of Controller (decoder system plastic pedestal) | 2026-06-24 → 2026-07-08 (+14d) | 2026-07-01 → 2026-07-15 (+14d) | -177.38d → -189.38d |
| CP09-TR8-IR-1530 | Installation of Controller decoder cables | 2026-06-24 → 2026-07-08 (+14d) | 2026-07-01 → 2026-07-15 (+14d) | -177.38d → -189.38d |
| CP09-TR8-IR-1540 | Installation of Decoder one station | 2026-06-24 → 2026-07-08 (+14d) | 2026-06-29 → 2026-07-13 (+14d) | -175.38d → -187.38d |
| 4 | **Electrical Works** | 2026-06-15 → 2026-06-29 (+14d) | 2026-08-09 → 2026-08-23 (+14d) |  |
| 1 | **Power Cable & Pillars** | 2026-06-15 → 2026-06-29 (+14d) | 2026-08-09 → 2026-08-23 (+14d) |  |
| CP09-TR8-EL-1160 | Excavation | 2026-06-15 → 2026-06-29 (+14d) | 2026-06-21 → 2026-07-05 (+14d) | -221.12d → -233.12d |
| CP09-TR8-EL-1170 | Installation of Power Cables | 2026-06-18 → 2026-07-02 (+14d) | 2026-06-23 → 2026-07-07 (+14d) | -221.12d → -233.12d |
| CP09-TR8-EL-1180 | Backfilling for Power Cables | 2026-06-21 → 2026-07-05 (+14d) | 2026-06-25 → 2026-07-09 (+14d) | -221.12d → -233.12d |
| CP09-TR8-EL-1190 | Installation of Connecting Pillars | 2026-07-22 → 2026-08-05 (+14d) | 2026-08-09 → 2026-08-23 (+14d) | -190.5d → -202.5d |
| 3 | **Hardscape** |  | 2026-09-20 → 2026-10-04 (+14d) |  |
| 6 | **Concrete Curb** | 2026-06-15 → 2026-06-29 (+14d) | 2026-07-16 → 2026-07-30 (+14d) |  |
| CP09-TR8-HD-4510 | Excavation | 2026-06-15 → 2026-06-29 (+14d) | 2026-06-21 → 2026-07-05 (+14d) | -224.12d → -236.12d |
| CP09-TR8-HD-4520 | Plains Concrete with HDPE waterproofing | 2026-06-21 → 2026-07-05 (+14d) | 2026-06-27 → 2026-07-11 (+14d) | -224.12d → -236.12d |
| CP09-TR8-HD-4790 | Under Paving Reinforced Concrete Curb | 2026-06-23 → 2026-07-07 (+14d) | 2026-07-05 → 2026-07-19 (+14d) | -224.12d → -236.12d |
| CP09-TR8-HD-4810 | Instal Flush Curb | 2026-07-08 → 2026-07-22 (+14d) | 2026-07-16 → 2026-07-30 (+14d) | -224.12d → -236.12d |
| 1 | **Side wake & Plazes** |  | 2026-08-24 → 2026-09-07 (+14d) |  |
| 8 | **Interlocking Paving** | 2026-06-25 → 2026-07-09 (+14d) | 2026-07-22 → 2026-08-05 (+14d) |  |
| CP09-TR8-HD-4530 | Crush Stone for Interlock Types IL-(01,02,06,07) | 2026-06-25 → 2026-07-09 (+14d) | 2026-07-04 → 2026-07-18 (+14d) | -221.12d → -233.12d |
| CP09-TR8-HD-4540 | Sand Layer for Interlock Types IL-(01,02,06,07) | 2026-07-01 → 2026-07-15 (+14d) | 2026-07-13 → 2026-07-27 (+14d) | -221.12d → -233.12d |
| CP09-TR8-HD-4550 | Motar Bed Interlock Types IL-(03,04,08,09,10) | 2026-07-01 → 2026-07-15 (+14d) | 2026-07-13 → 2026-07-27 (+14d) | -221.12d → -233.12d |
| CP09-TR8-HD-4560 | Interlocking Paving | 2026-07-05 → 2026-07-19 (+14d) | 2026-07-22 → 2026-08-05 (+14d) | -221.12d → -233.12d |
| 2 | **Concrete in Situ** |  | 2026-06-09 → 2026-06-23 (+14d) |  |
| 1 | **Slab on Garde** |  | 2026-06-03 → 2026-06-17 (+14d) |  |
| CP09-TR8-HD-4300 | Plain Concrete with HDPE |  | 2026-05-31 → 2026-06-14 (+14d) | -103d → -115d |
| CP09-TR8-HD-4310 | Reinfored Concrete slab on grade |  | 2026-06-03 → 2026-06-17 (+14d) | -106d → -118d |
| CP09-TR8-HD-4320 | Waterproofing & Screed |  | 2026-05-30 → 2026-06-13 (+14d) | -102d → -114d |
| 2 | **Concrete In-situ w./Exposed Aggregate Finish** |  | 2026-06-09 → 2026-06-23 (+14d) |  |
| CP09-TR8-HD-4330 | Concrete casting (including Joints & Wire Mish) |  | 2026-06-09 → 2026-06-23 (+14d) | -111d → -123d |
| CP09-TR8-HD-4340 | Finishing Concrete Surface |  | 2026-05-30 → 2026-06-13 (+14d) | -139.38d → -151.38d |
| 1 | **Marble Paving** |  | 2026-06-08 → 2026-06-22 (+14d) |  |
| 1 | **Slab on Garde** |  | 2026-06-03 → 2026-06-17 (+14d) |  |
| CP09-TR8-HD-4250 | Plain Concrete with HDPE |  | 2026-05-28 → 2026-06-11 (+14d) | -101d → -113d |
| CP09-TR8-HD-4260 | Reinfored Concrete slab on grade |  | 2026-06-03 → 2026-06-17 (+14d) | -106d → -118d |
| CP09-TR8-HD-4270 | Waterproofing & Screed |  | 2026-05-31 → 2026-06-14 (+14d) | -103d → -115d |
| 2 | **Marble Tiles** |  | 2026-06-08 → 2026-06-22 (+14d) |  |
| CP09-TR8-HD-4280 | Marble Fixiation |  | 2026-06-08 → 2026-06-22 (+14d) | -110d → -122d |
| CP09-TR8-HD-4290 | Marble Surfcae Finishing |  | 2026-05-31 → 2026-06-14 (+14d) | -134.38d → -146.38d |
| 3 | **Wooden Floor Boards** | 2026-06-25 → 2026-07-09 (+14d) | 2026-08-01 → 2026-08-15 (+14d) |  |
| 1 | **Slab on Garde** | 2026-06-25 → 2026-07-09 (+14d) | 2026-07-15 → 2026-07-29 (+14d) |  |
| CP09-TR8-HD-4350 | Plain Concrete with HDPE | 2026-06-25 → 2026-07-09 (+14d) | 2026-07-01 → 2026-07-15 (+14d) | -186.06d → -198.06d |
| CP09-TR8-HD-4360 | Reinfored Concrete slab on grade | 2026-07-01 → 2026-07-15 (+14d) | 2026-07-09 → 2026-07-23 (+14d) | -186.06d → -198.06d |
| CP09-TR8-HD-4370 | Waterproofing & Screed | 2026-07-09 → 2026-07-23 (+14d) | 2026-07-15 → 2026-07-29 (+14d) | -186.06d → -198.06d |
| 2 | **Wood- Plastic Composit** | 2026-07-16 → 2026-07-30 (+14d) | 2026-08-01 → 2026-08-15 (+14d) |  |
| CP09-TR8-HD-4380 | WPC Installation | 2026-07-16 → 2026-07-30 (+14d) | 2026-07-25 → 2026-08-08 (+14d) | -186.94d → -198.94d |
| CP09-TR8-HD-4390 | WPC surface finishing & Accessories | 2026-07-25 → 2026-08-08 (+14d) | 2026-08-01 → 2026-08-15 (+14d) | -186.94d → -198.94d |
| 4 | **Gravel layer** | 2026-06-25 → 2026-07-09 (+14d) | 2026-08-03 → 2026-08-17 (+14d) |  |
| 1 | **Slab on Garde** | 2026-06-25 → 2026-07-09 (+14d) | 2026-07-05 → 2026-07-19 (+14d) |  |
| CP09-TR8-HD-4400 | Plain Concrete with HDPE | 2026-06-25 → 2026-07-09 (+14d) | 2026-06-29 → 2026-07-13 (+14d) | -206.06d → -218.06d |
| CP09-TR8-HD-4420 | Mortar bed | 2026-06-29 → 2026-07-13 (+14d) | 2026-07-05 → 2026-07-19 (+14d) | -206.06d → -218.06d |
| 2 | **Gravel Layer, w./Earth Colors** | 2026-07-16 → 2026-07-30 (+14d) | 2026-08-03 → 2026-08-17 (+14d) |  |
| CP09-TR8-HD-4430 | Furnish & install Garvel Layer | 2026-07-16 → 2026-07-30 (+14d) | 2026-08-03 → 2026-08-17 (+14d) | -215.94d → -227.94d |
| 5 | **Crushed Stone** | 2026-06-29 → 2026-07-13 (+14d) | 2026-08-17 → 2026-08-31 (+14d) |  |
| 1 | **Slab on Garde** | 2026-06-29 → 2026-07-13 (+14d) | 2026-07-27 → 2026-08-10 (+14d) |  |
| CP09-TR8-HD-4440 | Geotextile membrane | 2026-06-29 → 2026-07-13 (+14d) | 2026-07-13 → 2026-07-27 (+14d) | -198.06d → -210.06d |
| CP09-TR8-HD-4460 | Gravel fix sheets | 2026-07-13 → 2026-07-27 (+14d) | 2026-07-27 → 2026-08-10 (+14d) | -198.06d → -210.06d |
| 2 | **Crushed Dolomite Stone** | 2026-08-03 → 2026-08-17 (+14d) | 2026-08-17 → 2026-08-31 (+14d) |  |
| CP09-TR8-HD-4470 | Furnish & Install Crushed Dolomite stone , w./ mixed colors | 2026-08-03 → 2026-08-17 (+14d) | 2026-08-17 → 2026-08-31 (+14d) | -215.94d → -227.94d |
| 6 | **Loose Gravel** | 2026-07-16 → 2026-07-30 (+14d) | 2026-07-30 → 2026-08-13 (+14d) |  |
| 2 | **Loose Gravel 50mm** | 2026-07-16 → 2026-07-30 (+14d) | 2026-07-30 → 2026-08-13 (+14d) |  |
| CP09-TR8-HD-4480 | Furnish & Install loose gravel w./earth colors. | 2026-07-16 → 2026-07-30 (+14d) | 2026-07-30 → 2026-08-13 (+14d) | -214.94d → -226.94d |
| 7 | **Clean Sand Layer** | 2026-07-30 → 2026-08-13 (+14d) | 2026-08-24 → 2026-09-07 (+14d) |  |
| 1 | **Kids & Fitness Area** | 2026-07-30 → 2026-08-13 (+14d) | 2026-08-24 → 2026-09-07 (+14d) |  |
| CP09-TR8-HD-4490 | Geotextile Sheets | 2026-07-30 → 2026-08-13 (+14d) | 2026-08-06 → 2026-08-20 (+14d) | -214.94d → -226.94d |
| CP09-TR8-HD-4500 | Install Clean sand layer | 2026-08-06 → 2026-08-20 (+14d) | 2026-08-24 → 2026-09-07 (+14d) | -214.94d → -226.94d |

| ID | Task | Start | Finish | Total float |
| --- | --- | --- | --- | --- |
| 2 | **Site Improvments** |  | 2026-09-20 → 2026-10-04 (+14d) |  |
| 6 | **Pools Shower -05** | 2026-07-19 → 2026-08-02 (+14d) | 2026-09-16 → 2026-09-30 (+14d) |  |
| CP09-TR8-HD-5060 | Plain Concrete Basin | 2026-07-19 → 2026-08-02 (+14d) | 2026-07-22 → 2026-08-05 (+14d) | -221.12d → -233.12d |
| CP09-TR8-HD-5070 | R.Concrete Basin | 2026-07-22 → 2026-08-05 (+14d) | 2026-07-28 → 2026-08-11 (+14d) | -221.12d → -233.12d |
| CP09-TR8-HD-5080 | Solid Block Work | 2026-07-28 → 2026-08-11 (+14d) | 2026-08-03 → 2026-08-17 (+14d) | -221.12d → -233.12d |
| CP09-TR8-HD-5090 | Water Proofing | 2026-08-03 → 2026-08-17 (+14d) | 2026-08-06 → 2026-08-20 (+14d) | -221.12d → -233.12d |
| CP09-TR8-HD-5100 | Backfilling | 2026-08-06 → 2026-08-20 (+14d) | 2026-08-12 → 2026-08-26 (+14d) | -221.12d → -233.12d |
| CP09-TR8-HD-5110 | Mica Stone Cladding | 2026-08-12 → 2026-08-26 (+14d) | 2026-08-20 → 2026-09-03 (+14d) | -221.12d → -233.12d |
| CP09-TR8-HD-5120 | Mica Stone Capping | 2026-08-20 → 2026-09-03 (+14d) | 2026-08-26 → 2026-09-09 (+14d) | -221.12d → -233.12d |
| CP09-TR8-HD-5130 | Drainage Cover with Geotextile | 2026-08-26 → 2026-09-09 (+14d) | 2026-08-30 → 2026-09-13 (+14d) | -221.12d → -233.12d |
| CP09-TR8-HD-5140 | Blast stone blocks for Flooring | 2026-08-30 → 2026-09-13 (+14d) | 2026-09-02 → 2026-09-16 (+14d) | -221.12d → -233.12d |
| CP09-TR8-HD-5150 | Blast Stone Blocks Capping | 2026-09-02 → 2026-09-16 (+14d) | 2026-09-08 → 2026-09-22 (+14d) | -221.12d → -233.12d |
| CP09-TR8-HD-5160 | Loose Rounded Pebbles | 2026-09-08 → 2026-09-22 (+14d) | 2026-09-14 → 2026-09-28 (+14d) | -221.12d → -233.12d |
| CP09-TR8-HD-5170 | Shower Head Fixation | 2026-09-14 → 2026-09-28 (+14d) | 2026-09-16 → 2026-09-30 (+14d) | -217.94d → -229.94d |
| 3 | **Pools Shower -06** | 2026-07-16 → 2026-07-30 (+14d) | 2026-09-20 → 2026-10-04 (+14d) |  |
| CP09-TR8-HD-2240 | Plain Concrete Basin | 2026-07-16 → 2026-07-30 (+14d) | 2026-07-20 → 2026-08-03 (+14d) | -224.12d → -236.12d |
| CP09-TR8-HD-2250 | R.Concrete Basin | 2026-07-20 → 2026-08-03 (+14d) | 2026-07-26 → 2026-08-09 (+14d) | -224.12d → -236.12d |
| CP09-TR8-HD-2260 | Solid Block Work | 2026-07-26 → 2026-08-09 (+14d) | 2026-08-01 → 2026-08-15 (+14d) | -224.12d → -236.12d |
| CP09-TR8-HD-2270 | Water Proofing | 2026-08-01 → 2026-08-15 (+14d) | 2026-08-04 → 2026-08-18 (+14d) | -224.12d → -236.12d |
| CP09-TR8-HD-2280 | Backfilling | 2026-08-04 → 2026-08-18 (+14d) | 2026-08-10 → 2026-08-24 (+14d) | -224.12d → -236.12d |
| CP09-TR8-HD-2290 | Mica Stone Cladding | 2026-08-10 → 2026-08-24 (+14d) | 2026-08-18 → 2026-09-01 (+14d) | -224.12d → -236.12d |
| CP09-TR8-HD-2300 | Mica Stone Capping | 2026-08-18 → 2026-09-01 (+14d) | 2026-08-24 → 2026-09-07 (+14d) | -224.12d → -236.12d |
| CP09-TR8-HD-2310 | Drainage Cover with Geotextile | 2026-08-24 → 2026-09-07 (+14d) | 2026-08-30 → 2026-09-13 (+14d) | -224.12d → -236.12d |
| CP09-TR8-HD-2320 | Blast stone blocks for Flooring | 2026-08-30 → 2026-09-13 (+14d) | 2026-09-07 → 2026-09-21 (+14d) | -224.12d → -236.12d |
| CP09-TR8-HD-2330 | Blast Stone Blocks Capping | 2026-09-07 → 2026-09-21 (+14d) | 2026-09-13 → 2026-09-27 (+14d) | -224.12d → -236.12d |
| CP09-TR8-HD-2340 | Loose Rounded Pebbles | 2026-09-13 → 2026-09-27 (+14d) | 2026-09-17 → 2026-10-01 (+14d) | -224.12d → -236.12d |
| CP09-TR8-HD-2350 | Shower Head Fixation | 2026-09-17 → 2026-10-01 (+14d) | 2026-09-20 → 2026-10-04 (+14d) | -220.94d → -232.94d |
| 1 | **Marble Steps** | 2026-07-14 → 2026-07-28 (+14d) | 2026-08-03 → 2026-08-17 (+14d) |  |
| CP09-TR8-HD-4570 | Reinforecd Concrete Step. | 2026-07-14 → 2026-07-28 (+14d) | 2026-07-26 → 2026-08-09 (+14d) | -186.5d → -198.5d |
| CP09-TR8-HD-4580 | Install Marble Blocks | 2026-07-21 → 2026-08-04 (+14d) | 2026-07-28 → 2026-08-11 (+14d) | -186.5d → -198.5d |
| CP09-TR8-HD-4590 | Finishing Marble Surface | 2026-07-28 → 2026-08-11 (+14d) | 2026-08-03 → 2026-08-17 (+14d) | -185.88d → -197.88d |
| 4 | **Handrails** | 2026-07-28 → 2026-08-11 (+14d) | 2026-08-04 → 2026-08-18 (+14d) |  |
| CP09-TR8-HD-4820 | Install & Fix Stainless Handrail (500 mm height) | 2026-07-28 → 2026-08-11 (+14d) | 2026-08-04 → 2026-08-18 (+14d) | -186.5d → -198.5d |
| CP09-TR8-HD-4830 | Install & Fix Glass Handrail (900mm height) | 2026-07-28 → 2026-08-11 (+14d) | 2026-08-04 → 2026-08-18 (+14d) | -186.5d → -198.5d |
| 2 | **Curvelinear Block Seat** |  | 2026-07-21 → 2026-08-04 (+14d) |  |
| CP09-TR8-HD-4600 | Excavation |  | 2026-05-26 → 2026-06-09 (+14d) | -98.81d → -110.81d |
| CP09-TR8-HD-4610 | Plaing Concrete with HPDE |  | 2026-05-27 → 2026-06-10 (+14d) | -99.75d → -111.75d |
| CP09-TR8-HD-4620 | Reinforced Concrete for Footing |  | 2026-05-30 → 2026-06-13 (+14d) | -101.62d → -113.62d |
| CP09-TR8-HD-4630 | Reinforced Concrete for beam |  | 2026-05-28 → 2026-06-11 (+14d) | -101d → -113d |
| CP09-TR8-HD-4640 | Waterproofing & Protection |  | 2026-05-27 → 2026-06-10 (+14d) | -99.75d → -111.75d |
| CP09-TR8-HD-4650 | Backfilling |  | 2026-05-26 → 2026-06-09 (+14d) | -163.81d → -175.81d |
| CP09-TR8-HD-4660 | Marble Capping | 2026-07-15 → 2026-07-29 (+14d) | 2026-07-21 → 2026-08-04 (+14d) | -206d → -218d |
| 11 | **Sinage** | 2026-07-22 → 2026-08-05 (+14d) | 2026-09-03 → 2026-09-17 (+14d) |  |
| CP09-TR8-SN-4950 | Excavation | 2026-07-22 → 2026-08-05 (+14d) | 2026-07-29 → 2026-08-12 (+14d) | -206.88d → -218.88d |
| CP09-TR8-SN-4960 | Plain Concrete with HDPE | 2026-07-25 → 2026-08-08 (+14d) | 2026-08-01 → 2026-08-15 (+14d) | -206.88d → -218.88d |
| CP09-TR8-SN-4970 | Reinforced Concrete | 2026-07-27 → 2026-08-10 (+14d) | 2026-08-03 → 2026-08-17 (+14d) | -206.88d → -218.88d |
| CP09-TR8-SN-4980 | Waterproofing | 2026-07-30 → 2026-08-13 (+14d) | 2026-08-06 → 2026-08-20 (+14d) | -206.88d → -218.88d |
| CP09-TR8-SN-4990 | Grouting | 2026-08-02 → 2026-08-16 (+14d) | 2026-08-09 → 2026-08-23 (+14d) | -206.88d → -218.88d |
| CP09-TR8-SN-5000 | STREET DIRECTIONAL SIGN | 2026-08-20 → 2026-09-03 (+14d) | 2026-08-27 → 2026-09-10 (+14d) | -217.88d → -229.88d |
| CP09-TR8-SN-5010 | DIRECTIONAL SIGN FOR VEHICULAR | 2026-08-20 → 2026-09-03 (+14d) | 2026-08-27 → 2026-09-10 (+14d) | -217.88d → -229.88d |
| CP09-TR8-SN-5040 | RULES SIGN | 2026-08-20 → 2026-09-03 (+14d) | 2026-08-27 → 2026-09-10 (+14d) | -215.88d → -227.88d |
| CP09-TR8-SN-5020 | UNIT ID SIGN (FRONT YARD) | 2026-08-27 → 2026-09-10 (+14d) | 2026-09-03 → 2026-09-17 (+14d) | -215.88d → -227.88d |
| CP09-TR8-SN-5030 | UNIT ID SIGN (BACK YARD) | 2026-08-27 → 2026-09-10 (+14d) | 2026-09-03 → 2026-09-17 (+14d) | -215.88d → -227.88d |
| CP09-TR8-SN-5050 | IDENTIFICATION SIGN | 2026-08-27 → 2026-09-10 (+14d) | 2026-09-03 → 2026-09-17 (+14d) | -215.88d → -227.88d |
| 12 | **Landscape Furntiure** | 2026-08-17 → 2026-08-31 (+14d) | 2026-09-03 → 2026-09-17 (+14d) |  |
| CP09-TR8-FN-4840 | Install & Fix Pitch Pine Picnic Table | 2026-08-17 → 2026-08-31 (+14d) | 2026-09-03 → 2026-09-17 (+14d) | -215.94d → -227.94d |
| CP09-TR8-FN-4850 | Install & Fix Crcular Cast-iron tree grate | 2026-08-17 → 2026-08-31 (+14d) | 2026-09-03 → 2026-09-17 (+14d) | -215.94d → -227.94d |
| CP09-TR8-FN-4860 | Install & Fix Aluminium Cabana for Pool Shading | 2026-08-17 → 2026-08-31 (+14d) | 2026-08-25 → 2026-09-08 (+14d) | -207.94d → -219.94d |
| CP09-TR8-FN-4870 | Install & Fix Pitch Pine Benchs | 2026-08-17 → 2026-08-31 (+14d) | 2026-09-03 → 2026-09-17 (+14d) | -215.94d → -227.94d |
| CP09-TR8-FN-4880 | Install & Fix Polyester Hammocks | 2026-08-17 → 2026-08-31 (+14d) | 2026-09-03 → 2026-09-17 (+14d) | -215.94d → -227.94d |
| CP09-TR8-FN-4890 | Install & Fix Adult Play Swing | 2026-08-17 → 2026-08-31 (+14d) | 2026-09-03 → 2026-09-17 (+14d) | -215.94d → -227.94d |
| CP09-TR8-FN-4900 | Install & Fix Aluminum Trash Bin | 2026-08-17 → 2026-08-31 (+14d) | 2026-09-03 → 2026-09-17 (+14d) | -215.94d → -227.94d |
| CP09-TR8-FN-4910 | Install & Fix tensile Teflon Tent | 2026-08-17 → 2026-08-31 (+14d) | 2026-09-03 → 2026-09-17 (+14d) | -215.94d → -227.94d |
| CP09-TR8-FN-4920 | Lanscape Edging ( Rubber) | 2026-08-17 → 2026-08-31 (+14d) | 2026-09-03 → 2026-09-17 (+14d) | -215.94d → -227.94d |
| 10 | **Play Field Equipment** |  | 2026-09-06 → 2026-09-20 (+14d) |  |
| CP09-TR8-PE-4940 | Kids playground equipment |  | 2026-06-01 → 2026-06-15 (+14d) | -135.38d → -147.38d |
| CP09-TR8-PE-4930 | Fitness areas equipment | 2026-08-27 → 2026-09-10 (+14d) | 2026-09-06 → 2026-09-20 (+14d) | -217.88d → -229.88d |
| 7 | **Lighting for Softscape** | 2026-06-28 → 2026-07-12 (+14d) | 2026-08-31 → 2026-09-14 (+14d) |  |
| 1 | **Exterior Lighting** | 2026-06-28 → 2026-07-12 (+14d) | 2026-08-31 → 2026-09-14 (+14d) |  |
| CP09-TR8-SF-1750 | Install Diffused Wall Recessed Step | 2026-06-28 → 2026-07-12 (+14d) | 2026-07-08 → 2026-07-22 (+14d) | -167.38d → -179.38d |

| ID | Task | Start | Finish | Total float |
| --- | --- | --- | --- | --- |
| CP09-TR8-SF-1760 | Install Inground Uplight For Palms | 2026-07-13 → 2026-07-27 (+14d) | 2026-07-20 → 2026-08-03 (+14d) | -177.38d → -189.38d |
| CP09-TR8-SF-1770 | Install Projectors for Trees | 2026-07-18 → 2026-08-01 (+14d) | 2026-07-20 → 2026-08-03 (+14d) | -177.38d → -189.38d |
| CP09-TR8-SF-1730 | Install Landscape Lighting Pole | 2026-07-22 → 2026-08-05 (+14d) | 2026-08-20 → 2026-09-03 (+14d) | -217.88d → -229.88d |
| CP09-TR8-SF-1780 | Install Surface Mountaed Down Light for Pool Cabans | 2026-08-17 → 2026-08-31 (+14d) | 2026-08-25 → 2026-09-08 (+14d) | -207.94d → -219.94d |
| CP09-TR8-SF-1740 | Install Bollard for Walkways | 2026-08-24 → 2026-09-07 (+14d) | 2026-08-31 → 2026-09-14 (+14d) | -212.94d → -224.94d |
| 2 | **Outlet Lighting Fixtures** | 2026-08-25 → 2026-09-08 (+14d) | 2026-08-31 → 2026-09-14 (+14d) |  |
| CP09-TR8-SF-1790 | Install outlet lighting fixtures | 2026-08-25 → 2026-09-08 (+14d) | 2026-08-31 → 2026-09-14 (+14d) | -212.94d → -224.94d |
| 2 | **Softscape** |  | 2026-07-16 → 2026-07-30 (+14d) |  |
| 1 | **Planting** |  | 2026-07-16 → 2026-07-30 (+14d) |  |
| CP09-TR8-SF-1640 | Sweet sand for all plants |  | 2026-06-15 → 2026-06-29 (+14d) | -177.38d → -189.38d |
| CP09-TR8-SF-1650 | Organic Manure |  | 2026-06-15 → 2026-06-29 (+14d) | -163.38d → -175.38d |
| CP09-TR8-SF-1660 | Large Trees | 2026-07-02 → 2026-07-16 (+14d) | 2026-07-13 → 2026-07-27 (+14d) | -177.38d → -189.38d |
| CP09-TR8-SF-1670 | Shrubs | 2026-07-06 → 2026-07-20 (+14d) | 2026-07-16 → 2026-07-30 (+14d) | -177.38d → -189.38d |
| CP09-TR8-SF-1680 | Ground Covers | 2026-07-06 → 2026-07-20 (+14d) | 2026-07-16 → 2026-07-30 (+14d) | -177.38d → -189.38d |
| CP09-TR8-SF-1690 | Succulents | 2026-07-06 → 2026-07-20 (+14d) | 2026-07-16 → 2026-07-30 (+14d) | -177.38d → -189.38d |
| CP09-TR8-SF-1700 | Vines & Climbers | 2026-07-06 → 2026-07-20 (+14d) | 2026-07-16 → 2026-07-30 (+14d) | -177.38d → -189.38d |
| CP09-TR8-SF-1710 | Ornamental grass | 2026-07-06 → 2026-07-20 (+14d) | 2026-07-16 → 2026-07-30 (+14d) | -177.38d → -189.38d |
| CP09-TR8-SF-1720 | Lawn | 2026-07-06 → 2026-07-20 (+14d) | 2026-07-16 → 2026-07-30 (+14d) | -177.38d → -189.38d |
| 5 | **Testing & Commissioning** | 2026-07-01 → 2026-07-15 (+14d) | 2026-10-22 → 2026-11-05 (+14d) |  |
| 4 | **Milestone # 01** | 2026-07-01 → 2026-07-15 (+14d) | 2026-07-14 → 2026-07-28 (+14d) |  |
| 2 | **Hardscape** | 2026-07-01 → 2026-07-15 (+14d) | 2026-07-14 → 2026-07-28 (+14d) |  |
| CP09-TC-MS1-HD-1040 | Pre-Commissioning of Hardscape Works | 2026-07-01 → 2026-07-15 (+14d) | 2026-07-06 → 2026-07-20 (+14d) | -147d → -159d |
| CP09-TC-MS1-HD-1050 | Final Testing & Commissioning of Hardscape Works | 2026-07-07 → 2026-07-21 (+14d) | 2026-07-14 → 2026-07-28 (+14d) | -146d → -158d |
| 5 | **Section # 01** | 2026-07-05 → 2026-07-19 (+14d) | 2026-07-20 → 2026-08-03 (+14d) |  |
| 3 | **Softscape** | 2026-07-05 → 2026-07-19 (+14d) | 2026-07-20 → 2026-08-03 (+14d) |  |
| CP09-TC-SE1-SF-1060 | Pre-Commissioning of Softscape Works | 2026-07-05 → 2026-07-19 (+14d) | 2026-07-12 → 2026-07-26 (+14d) | -156d → -168d |
| CP09-TC-SE1-SF-1070 | Final Testing & Commissioning of Softscape Works | 2026-07-13 → 2026-07-27 (+14d) | 2026-07-20 → 2026-08-03 (+14d) | -154d → -166d |
| 1 | **Milestone # 02** | 2026-07-06 → 2026-07-20 (+14d) | 2026-07-23 → 2026-08-06 (+14d) |  |
| 1 | **Swimmimg Pool** | 2026-07-06 → 2026-07-20 (+14d) | 2026-07-22 → 2026-08-05 (+14d) |  |
| CP09-TC-MS2-SW-1000 | Pre-Commissioning of Swimmimg Pool & MR | 2026-07-06 → 2026-07-20 (+14d) | 2026-07-14 → 2026-07-28 (+14d) | -156.06d → -168.06d |
| CP09-TC-MS2-SW-1010 | Final Testing & Commissioning of Swimmimg Pool & MR | 2026-07-14 → 2026-07-28 (+14d) | 2026-07-22 → 2026-08-05 (+14d) | -154.06d → -166.06d |
| 2 | **Hardscape** | 2026-07-07 → 2026-07-21 (+14d) | 2026-07-23 → 2026-08-06 (+14d) |  |
| CP09-TC-MS2-HD-1020 | Pre-Commissioning of Hardscape Works | 2026-07-07 → 2026-07-21 (+14d) | 2026-07-15 → 2026-07-29 (+14d) | -157.44d → -169.44d |
| CP09-TC-MS2-HD-1030 | Final Testing & Commissioning of Hardscape Works | 2026-07-15 → 2026-07-29 (+14d) | 2026-07-23 → 2026-08-06 (+14d) | -155.44d → -167.44d |
| 6 | **Section # 02** | 2026-08-17 → 2026-08-31 (+14d) | 2026-09-02 → 2026-09-16 (+14d) |  |
| 3 | **Softscape** | 2026-08-17 → 2026-08-31 (+14d) | 2026-09-02 → 2026-09-16 (+14d) |  |
| CP09-TC-SE2-SF-1040 | Pre-Commissioning of Softscape Works | 2026-08-17 → 2026-08-31 (+14d) | 2026-08-25 → 2026-09-08 (+14d) | -192.94d → -204.94d |
| CP09-TC-SE2-SF-1050 | Final Testing & Commissioning of Softscape Works | 2026-08-25 → 2026-09-08 (+14d) | 2026-09-02 → 2026-09-16 (+14d) | -190.94d → -202.94d |
| 2 | **Milestone # 03** | 2026-07-27 → 2026-08-10 (+14d) | 2026-09-02 → 2026-09-16 (+14d) |  |
| 1 | **Swimmimg Pool** | 2026-07-27 → 2026-08-10 (+14d) | 2026-08-12 → 2026-08-26 (+14d) |  |
| CP09-TC-MS3-SW-1020 | Pre-Commissioning of Swimmimg Pool & MR | 2026-07-27 → 2026-08-10 (+14d) | 2026-08-04 → 2026-08-18 (+14d) | -189.06d → -201.06d |
| CP09-TC-MS3-SW-1030 | Final Testing & Commissioning of Swimmimg Pool & MR | 2026-08-04 → 2026-08-18 (+14d) | 2026-08-12 → 2026-08-26 (+14d) | -173.06d → -185.06d |
| 2 | **Hardscape** | 2026-08-17 → 2026-08-31 (+14d) | 2026-09-02 → 2026-09-16 (+14d) |  |
| CP09-TC-MS3-HD-1040 | Pre-Commissioning of Hardscape Works | 2026-08-17 → 2026-08-31 (+14d) | 2026-08-25 → 2026-09-08 (+14d) | -193.81d → -205.81d |
| CP09-TC-MS3-HD-1050 | Final Testing & Commissioning of Hardscape Works | 2026-08-25 → 2026-09-08 (+14d) | 2026-09-02 → 2026-09-16 (+14d) | -191.81d → -203.81d |
| 7 | **Section # 03** | 2026-08-23 → 2026-09-06 (+14d) | 2026-09-15 → 2026-09-29 (+14d) |  |
| 3 | **Softscape** | 2026-08-23 → 2026-09-06 (+14d) | 2026-09-15 → 2026-09-29 (+14d) |  |
| CP09-TC-SE3-SF-1060 | Pre-Commissioning of Softscape Works | 2026-08-23 → 2026-09-06 (+14d) | 2026-09-03 → 2026-09-17 (+14d) | -202.69d → -214.69d |
| CP09-TC-SE3-SF-1070 | Final Testing & Commissioning of Softscape Works | 2026-09-03 → 2026-09-17 (+14d) | 2026-09-15 → 2026-09-29 (+14d) | -202.69d → -214.69d |
| 3 | **Milestone # 04** | 2026-09-17 → 2026-10-01 (+14d) | 2026-10-06 → 2026-10-20 (+14d) |  |
| 1 | **Swimmimg Pool** | 2026-09-20 → 2026-10-04 (+14d) | 2026-10-06 → 2026-10-20 (+14d) |  |
| CP09-TC-MS4-SW-1040 | Pre-Commissioning of Swimmimg Pool & MR | 2026-09-20 → 2026-10-04 (+14d) | 2026-09-28 → 2026-10-12 (+14d) | -220.94d → -232.94d |
| CP09-TC-MS4-SW-1050 | Final Testing & Commissioning of Swimmimg Pool & MR | 2026-09-28 → 2026-10-12 (+14d) | 2026-10-06 → 2026-10-20 (+14d) | -220.94d → -232.94d |
| 2 | **Hardscape** | 2026-09-17 → 2026-10-01 (+14d) | 2026-10-04 → 2026-10-18 (+14d) |  |
| CP09-TC-MS4-HD-1060 | Pre-Commissioning of Hardscape Works | 2026-09-17 → 2026-10-01 (+14d) | 2026-09-26 → 2026-10-10 (+14d) | -224.12d → -236.12d |
| CP09-TC-MS4-HD-1070 | Final Testing & Commissioning of Hardscape Works | 2026-09-26 → 2026-10-10 (+14d) | 2026-10-04 → 2026-10-18 (+14d) | -218.12d → -230.12d |
| 8 | **Section # 04** | 2026-09-29 → 2026-10-13 (+14d) | 2026-10-22 → 2026-11-05 (+14d) |  |
| 3 | **Softscape** | 2026-09-29 → 2026-10-13 (+14d) | 2026-10-22 → 2026-11-05 (+14d) |  |
| CP09-TC-SE4-SF-1080 | Pre-Commissioning of Softscape Works | 2026-09-29 → 2026-10-13 (+14d) | 2026-10-11 → 2026-10-25 (+14d) | -237.44d → -249.44d |
| CP09-TC-SE4-SF-1090 | Final Testing & Commissioning of Softscape Works | 2026-10-11 → 2026-10-25 (+14d) | 2026-10-22 → 2026-11-05 (+14d) | -233.44d → -245.44d |
| 6 | **Handing over & As Built Drwaings** | 2026-07-05 → 2026-07-19 (+14d) | 2026-11-04 → 2026-11-18 (+14d) |  |
| 4 | **Milestone # 01** | 2026-07-05 → 2026-07-19 (+14d) | 2026-07-21 → 2026-08-04 (+14d) |  |
| 2 | **Hardscape** | 2026-07-05 → 2026-07-19 (+14d) | 2026-07-21 → 2026-08-04 (+14d) |  |
| CP09-HO-MS1-HD-1080 | Close Snagging for Hardscape Works | 2026-07-05 → 2026-07-19 (+14d) | 2026-07-09 → 2026-07-23 (+14d) | -147d → -159d |
| CP09-HO-MS1-HD-1090 | Submit As-Built Drawings | 2026-07-09 → 2026-07-23 (+14d) | 2026-07-13 → 2026-07-27 (+14d) | -147d → -159d |
| CP09-HO-MS1-HD-1100 | Approve As-Built Drawings | 2026-07-13 → 2026-07-27 (+14d) | 2026-07-21 → 2026-08-04 (+14d) | -147d → -159d |
| CP09-HO-MS1-HD-1110 | Handingover | 2026-07-16 → 2026-07-30 (+14d) | 2026-07-21 → 2026-08-04 (+14d) | -147d → -159d |
| 5 | **Section # 01** | 2026-07-08 → 2026-07-22 (+14d) | 2026-07-30 → 2026-08-13 (+14d) |  |
| 3 | **Softscape** | 2026-07-08 → 2026-07-22 (+14d) | 2026-07-30 → 2026-08-13 (+14d) |  |
| CP09-HO-SE1-SF-1120 | Close Snagging for Softscape Works | 2026-07-08 → 2026-07-22 (+14d) | 2026-07-15 → 2026-07-29 (+14d) | -156d → -168d |

| ID | Task | Start | Finish | Total float |
| --- | --- | --- | --- | --- |
| CP09-HO-SE1-SF-1130 | Submit As-Built Drawings | 2026-07-12 → 2026-07-26 (+14d) | 2026-07-19 → 2026-08-02 (+14d) | -156d → -168d |
| CP09-HO-SE1-SF-1140 | Approve As-Built Drawings | 2026-07-15 → 2026-07-29 (+14d) | 2026-07-30 → 2026-08-13 (+14d) | -156d → -168d |
| CP09-HO-SE1-SF-1150 | Handingover | 2026-07-23 → 2026-08-06 (+14d) | 2026-07-30 → 2026-08-13 (+14d) | -156d → -168d |
| 1 | **Milestone # 02** | 2026-07-09 → 2026-07-23 (+14d) | 2026-08-03 → 2026-08-17 (+14d) |  |
| 1 | **Swimmimg Pool** | 2026-07-09 → 2026-07-23 (+14d) | 2026-08-02 → 2026-08-16 (+14d) |  |
| CP09-HO-MS2-SW-1000 | Close Snagging for Swimming Pool & MR | 2026-07-09 → 2026-07-23 (+14d) | 2026-07-18 → 2026-08-01 (+14d) | -156.06d → -168.06d |
| CP09-HO-MS2-SW-1010 | Submit As-Built Drawings | 2026-07-13 → 2026-07-27 (+14d) | 2026-07-21 → 2026-08-04 (+14d) | -156.06d → -168.06d |
| CP09-HO-MS2-SW-1020 | Approve As-Built Drawings | 2026-07-16 → 2026-07-30 (+14d) | 2026-08-02 → 2026-08-16 (+14d) | -156.06d → -168.06d |
| CP09-HO-MS2-SW-1030 | Handingover | 2026-07-25 → 2026-08-08 (+14d) | 2026-08-02 → 2026-08-16 (+14d) | -156.06d → -168.06d |
| 2 | **Hardscape** | 2026-07-11 → 2026-07-25 (+14d) | 2026-08-03 → 2026-08-17 (+14d) |  |
| CP09-HO-MS2-HD-1040 | Close Snagging for Hardscape Works | 2026-07-11 → 2026-07-25 (+14d) | 2026-07-19 → 2026-08-02 (+14d) | -157.44d → -169.44d |
| CP09-HO-MS2-HD-1050 | Submit As-Built Drawings | 2026-07-14 → 2026-07-28 (+14d) | 2026-07-22 → 2026-08-05 (+14d) | -157.44d → -169.44d |
| CP09-HO-MS2-HD-1060 | Approve As-Built Drawings | 2026-07-18 → 2026-08-01 (+14d) | 2026-08-03 → 2026-08-17 (+14d) | -157.44d → -169.44d |
| CP09-HO-MS2-HD-1070 | Handingover | 2026-07-26 → 2026-08-09 (+14d) | 2026-08-03 → 2026-08-17 (+14d) | -157.44d → -169.44d |
| 6 | **Section # 02** | 2026-08-20 → 2026-09-03 (+14d) | 2026-09-13 → 2026-09-27 (+14d) |  |
| 3 | **Softscape** | 2026-08-20 → 2026-09-03 (+14d) | 2026-09-13 → 2026-09-27 (+14d) |  |
| CP09-HO-SE2-SF-1080 | Close Snagging for Softscape Works | 2026-08-20 → 2026-09-03 (+14d) | 2026-08-29 → 2026-09-12 (+14d) | -192.94d → -204.94d |
| CP09-HO-SE2-SF-1090 | Submit As-Built Drawings | 2026-08-24 → 2026-09-07 (+14d) | 2026-09-01 → 2026-09-15 (+14d) | -192.94d → -204.94d |
| CP09-HO-SE2-SF-1100 | Approve As-Built Drawings | 2026-08-27 → 2026-09-10 (+14d) | 2026-09-13 → 2026-09-27 (+14d) | -192.94d → -204.94d |
| CP09-HO-SE2-SF-1110 | Handingover | 2026-09-05 → 2026-09-19 (+14d) | 2026-09-13 → 2026-09-27 (+14d) | -192.94d → -204.94d |
| 2 | **Milestone # 03** | 2026-07-30 → 2026-08-13 (+14d) | 2026-09-13 → 2026-09-27 (+14d) |  |
| 1 | **Swimmimg Pool** | 2026-07-30 → 2026-08-13 (+14d) | 2026-08-23 → 2026-09-06 (+14d) |  |
| CP09-HO-MS3-SW-1040 | Close Snagging for Swimming Pool & MR | 2026-07-30 → 2026-08-13 (+14d) | 2026-08-08 → 2026-08-22 (+14d) | -189.06d → -201.06d |
| CP09-HO-MS3-SW-1050 | Submit As-Built Drawings | 2026-08-03 → 2026-08-17 (+14d) | 2026-08-11 → 2026-08-25 (+14d) | -175.06d → -187.06d |
| CP09-HO-MS3-SW-1060 | Approve As-Built Drawings | 2026-08-06 → 2026-08-20 (+14d) | 2026-08-23 → 2026-09-06 (+14d) | -175.06d → -187.06d |
| CP09-HO-MS3-SW-1070 | Handingover | 2026-08-15 → 2026-08-29 (+14d) | 2026-08-23 → 2026-09-06 (+14d) | -175.06d → -187.06d |
| 2 | **Hardscape** | 2026-08-20 → 2026-09-03 (+14d) | 2026-09-13 → 2026-09-27 (+14d) |  |
| CP09-HO-MS3-HD-1080 | Close Snagging for Hardscape Works | 2026-08-20 → 2026-09-03 (+14d) | 2026-08-29 → 2026-09-12 (+14d) | -193.81d → -205.81d |
| CP09-HO-MS3-HD-1090 | Submit As-Built Drawings | 2026-08-24 → 2026-09-07 (+14d) | 2026-09-01 → 2026-09-15 (+14d) | -193.81d → -205.81d |
| CP09-HO-MS3-HD-1100 | Approve As-Built Drawings | 2026-08-27 → 2026-09-10 (+14d) | 2026-09-13 → 2026-09-27 (+14d) | -193.81d → -205.81d |
| CP09-HO-MS3-HD-1110 | Handingover | 2026-09-05 → 2026-09-19 (+14d) | 2026-09-13 → 2026-09-27 (+14d) | -193.81d → -205.81d |
| 7 | **Section # 03** | 2026-08-31 → 2026-09-14 (+14d) | 2026-09-23 → 2026-10-07 (+14d) |  |
| 3 | **Softscape** | 2026-08-31 → 2026-09-14 (+14d) | 2026-09-23 → 2026-10-07 (+14d) |  |
| CP09-HO-SE3-SF-1120 | Close Snagging for Softscape Works | 2026-08-31 → 2026-09-14 (+14d) | 2026-09-08 → 2026-09-22 (+14d) | -202.69d → -214.69d |
| CP09-HO-SE3-SF-1130 | Submit As-Built Drawings | 2026-09-03 → 2026-09-17 (+14d) | 2026-09-12 → 2026-09-26 (+14d) | -202.69d → -214.69d |
| CP09-HO-SE3-SF-1140 | Approve As-Built Drawings | 2026-09-07 → 2026-09-21 (+14d) | 2026-09-23 → 2026-10-07 (+14d) | -202.69d → -214.69d |
| CP09-HO-SE3-SF-1150 | Handingover | 2026-09-15 → 2026-09-29 (+14d) | 2026-09-23 → 2026-10-07 (+14d) | -202.69d → -214.69d |
| 3 | **Milestone # 04** | 2026-08-08 → 2026-08-22 (+14d) | 2026-10-19 → 2026-11-02 (+14d) |  |
| 1 | **Swimmimg Pool** | 2026-08-08 → 2026-08-22 (+14d) | 2026-10-14 → 2026-10-28 (+14d) |  |
| CP09-HO-MS4-SW-1080 | Close Snagging for Swimming Pool & MR | 2026-08-08 → 2026-08-22 (+14d) | 2026-08-16 → 2026-08-30 (+14d) | -189.06d → -201.06d |
| CP09-HO-MS4-SW-1090 | Submit As-Built Drawings | 2026-08-11 → 2026-08-25 (+14d) | 2026-08-19 → 2026-09-02 (+14d) | -189.06d → -201.06d |
| CP09-HO-MS4-SW-1100 | Approve As-Built Drawings | 2026-08-15 → 2026-08-29 (+14d) | 2026-08-31 → 2026-09-14 (+14d) | -189.06d → -201.06d |
| CP09-HO-MS4-SW-1110 | Handingover | 2026-10-06 → 2026-10-20 (+14d) | 2026-10-14 → 2026-10-28 (+14d) | -220.94d → -232.94d |
| 2 | **Hardscape** | 2026-09-26 → 2026-10-10 (+14d) | 2026-10-19 → 2026-11-02 (+14d) |  |
| CP09-HO-MS4-HD-1120 | Close Snagging for Hardscape Works | 2026-09-26 → 2026-10-10 (+14d) | 2026-10-04 → 2026-10-18 (+14d) | -224.12d → -236.12d |
| CP09-HO-MS4-HD-1130 | Submit As-Built Drawings | 2026-09-29 → 2026-10-13 (+14d) | 2026-10-07 → 2026-10-21 (+14d) | -224.12d → -236.12d |
| CP09-HO-MS4-HD-1140 | Approve As-Built Drawings | 2026-10-03 → 2026-10-17 (+14d) | 2026-10-19 → 2026-11-02 (+14d) | -224.12d → -236.12d |
| CP09-HO-MS4-HD-1150 | Handingover | 2026-10-11 → 2026-10-25 (+14d) | 2026-10-19 → 2026-11-02 (+14d) | -224.12d → -236.12d |
| 8 | **Section # 04** | 2026-10-11 → 2026-10-25 (+14d) | 2026-11-04 → 2026-11-18 (+14d) |  |
| 3 | **Softscape** | 2026-10-11 → 2026-10-25 (+14d) | 2026-11-04 → 2026-11-18 (+14d) |  |
| CP09-HO-SE4-SF-1160 | Close Snagging for Softscape Works | 2026-10-11 → 2026-10-25 (+14d) | 2026-10-19 → 2026-11-02 (+14d) | -237.44d → -249.44d |
| CP09-HO-SE4-SF-1170 | Submit As-Built Drawings | 2026-10-14 → 2026-10-28 (+14d) | 2026-10-22 → 2026-11-05 (+14d) | -237.44d → -249.44d |
| CP09-HO-SE4-SF-1180 | Approve As-Built Drawings | 2026-10-19 → 2026-11-02 (+14d) | 2026-11-04 → 2026-11-18 (+14d) | -237.44d → -249.44d |
| CP09-HO-SE4-SF-1190 | Handingover | 2026-10-27 → 2026-11-10 (+14d) | 2026-11-04 → 2026-11-18 (+14d) | -237.44d → -249.44d |
